# Casos Uso

How a schedule from MS Project changed from version to version. A marks actual dates.

## Version 1 (saved 2010-08-29, file CasosUsov4.mpp)

Note of the change: Version FINAL del project. Subo un doc con las fechas de cada cosa!

| ID | WBS | Task | Duration | Start | Finish | Predecessors | Total float |
| --- | --- | --- | --- | --- | --- | --- | --- |
| 1 |  | Integracion con el Sistema STARS (Lectura Datos) | 5d | 2010-06-03 | 2010-06-09 | 199 | 0d |
| 2 |  | Modulo Seguridad que Oculta Info Llamado | 3d | 2010-06-10 | 2010-06-14 | 1 | 4d |
| 3 | 3 | **(GEN01) Identificacion y Autenticacion** | 1d | 2010-06-10 | 2010-06-10 | 1 | 3d |
| 4 |  | Autenticacion | 1d | 2010-06-10 | 2010-06-10 |  | 3d |
| 5 |  | Interfaz Inicio Sesion | 1d | 2010-06-10 | 2010-06-10 |  | 3d |
| 6 | 4 | **(GEN02) Gestion General de Registros** | 2d | 2010-06-10 | 2010-06-11 | 1 | 5d |
| 7 |  | ABM Registro | 1d | 2010-06-10 | 2010-06-10 |  | 6d |
| 8 |  | Buscar registro | 1d | 2010-06-10 | 2010-06-10 |  | 6d |
| 9 |  | Copiar registro | 1d | 2010-06-10 | 2010-06-10 |  | 6d |
| 10 |  | Interfaz ABM Registro | 2d | 2010-06-10 | 2010-06-11 |  | 5d |
| 11 | 5 | **(USR01) Determinacion del servicio de atencion** | 1d? | 2010-06-14 | 2010-06-14 | 74, 31 | 2d |
| 12 |  | Capturar la Comunicación???? | 1d? | 2010-06-14 | 2010-06-14 |  | 2d |
| 13 |  | Determinar el tipod e servicio | 1d? | 2010-06-14 | 2010-06-14 |  | 2d |
| 14 |  | Lista de Espera | 1d? | 2010-06-14 | 2010-06-14 |  | 2d |
| 15 |  | Determinar conjunto de operadores adecuados al tipo de solicitud | 1d? | 2010-06-14 | 2010-06-14 |  | 2d |
| 16 | 6 | **(USR02) Agenda** | 1d? | 2010-06-14 | 2010-06-14 | 3, 71 | 2d |
| 17 |  | Selección de una agenda | 1d? | 2010-06-14 | 2010-06-14 |  | 2d |
| 18 |  | ABM citas sobre la agenda | 1d? | 2010-06-14 | 2010-06-14 |  | 2d |
| 19 |  | Interfaz de la Agenda | 1d? | 2010-06-14 | 2010-06-14 |  | 2d |
| 20 |  | Integracion con Stars - Llamada desde Agenda | 1d? | 2010-06-14 | 2010-06-14 |  | 2d |
| 21 |  | Asignar pacientes a cita | 1d? | 2010-06-14 | 2010-06-14 |  | 2d |
| 22 |  | (USR03) Rellamada | 1d? | 2010-06-15 | 2010-06-15 | 31, 56 | 3d |
| 23 | 8 | **(USR04) Consulta** | 1d? | 2010-06-10 | 2010-06-10 | 1 | 0d |
| 24 | 8.1 | **Tratar Consulta** | 1d? | 2010-06-10 | 2010-06-10 |  | 0d |
| 25 |  | Ajornar Consulta | 1d? | 2010-06-10 | 2010-06-10 |  | 0d |
| 26 |  | Transferir consulta | 1d? | 2010-06-10 | 2010-06-10 |  | 0d |
| 27 |  | Modulo Envio de Correo | 1d? | 2010-06-10 | 2010-06-10 |  | 0d |
| 28 |  | Modulo Envio SMS | 1d? | 2010-06-10 | 2010-06-10 |  | 0d |
| 29 |  | Inclusion en Campaña de Seguimiento | 1d? | 2010-06-10 | 2010-06-10 |  | 0d |
| 30 |  | (USR05) Consejo Salud | 1d? | 2010-06-14 | 2010-06-14 | 61, 67 | 4d |
| 31 | 10 | **(USR06) Gestionar Consulta pendiente** | 1d? | 2010-06-11 | 2010-06-11 | 23 | 2d |
| 32 |  | Priorizacion de la Lista de Consultas | 1d? | 2010-06-11 | 2010-06-11 |  | 2d |
| 33 | 11 | **(USR07) Programacion de cita previa** | 1d? | 2010-06-14 | 2010-06-14 | 67, 74 | 4d |
| 34 |  | Realizar Citación (Interface con Sistema de citación AP) | 1d? | 2010-06-14 | 2010-06-14 |  | 4d |
| 35 | 12 | **(USR08) Gestiones sobre la TSI** | 1d? | 2010-06-14 | 2010-06-14 | 74, 67, 23, 1 | 3d |
| 36 |  | Verificacion Documentacion Necesaria | 1d? | 2010-06-14 | 2010-06-14 |  | 3d |
| 37 |  | Enviar Gestion (Interface con sistema RCA) | 1d? | 2010-06-14 | 2010-06-14 |  | 3d |
| 38 |  | Cierre automatico de la consulta por paso de tiempo | 1d? | 2010-06-14 | 2010-06-14 |  | 3d |
| 39 |  | Guardar LOG gestion TSI????? | 1d? | 2010-06-14 | 2010-06-14 |  | 3d |
| 40 | 13 | **(USR09) Servicio de traduccion** | 1d? | 2010-06-14 | 2010-06-14 | 67 | 4d |
| 41 |  | Contactar Servicio Externo de Traduccion | 1d? | 2010-06-14 | 2010-06-14 |  | 4d |
| 42 |  | Enlace Comunicacion Multiconferencia | 1d? | 2010-06-14 | 2010-06-14 |  | 4d |
| 43 |  | Modulo monitorización de servicio | 1d? | 2010-06-14 | 2010-06-14 |  | 4d |
| 44 | 14 | **(USR10) Informacion Sanitaria General** | 1d? | 2010-06-16 | 2010-06-16 | 67, 74, 170 | 2d |
| 45 |  | Guardar Informacion Ciudadano | 1d? | 2010-06-16 | 2010-06-16 |  | 2d |
| 46 | 15 | **(USR11) Seguimiento de Patologias** | 1d? | 2010-06-15 | 2010-06-15 | 16, 31 | 2d |
| 47 |  | Buscar Campañas Abiertas | 1d? | 2010-06-15 | 2010-06-15 |  | 2d |
| 48 | 15.2 | **Gestionar Seguimiento** | 1d? | 2010-06-15 | 2010-06-15 |  | 2d |
| 49 |  | Visualizar Historial Pacientes | 1d? | 2010-06-15 | 2010-06-15 |  | 2d |
| 50 |  | Llamada al Paciente | 1d? | 2010-06-15 | 2010-06-15 |  | 2d |
| 51 |  | Desligar paciente de campaña | 1d? | 2010-06-15 | 2010-06-15 |  | 2d |
| 52 | 16 | **(USR12) Encuestas** | 1d? | 2010-06-04 | 2010-06-04 | 130 | 9d |
| 53 |  | Interfaz de Encuestas | 1d? | 2010-06-04 | 2010-06-04 |  | 9d |
| 54 |  | Contacto con Encuestado | 1d? | 2010-06-04 | 2010-06-04 |  | 9d |
| 55 |  | ABM Formulario De Encuesta | 1d? | 2010-06-04 | 2010-06-04 |  | 9d |
| 56 | 17 | **(USR13) Buscar Consultas** | 1d? | 2010-06-14 | 2010-06-14 | 71 | 3d |
| 57 | 17.1 | **Operativo de Busqueda** | 1d? | 2010-06-14 | 2010-06-14 |  | 3d |
| 58 |  | Buscar según distintos criterios | 1d? | 2010-06-14 | 2010-06-14 |  | 3d |
| 59 |  | Filtrar resultados de la busqueda según permisos del usuario | 1d? | 2010-06-14 | 2010-06-14 |  | 3d |
| 60 |  | Acotar resultados si los mismos sobrepasan el parametro configurable "n" | 1d? | 2010-06-14 | 2010-06-14 |  | 3d |
| 61 | 18 | **(USR14) Hacer Uso de Documentos** | 1d? | 2010-06-11 | 2010-06-11 | 23 | 0d |
| 62 |  | Creación y uso de Guias Interrogatorio | 1d? | 2010-06-11 | 2010-06-11 |  | 0d |
| 63 |  | Creación y uso Fichas Tematicas | 1d? | 2010-06-11 | 2010-06-11 |  | 0d |
| 64 |  | Creación y uso de Recursos | 1d? | 2010-06-11 | 2010-06-11 |  | 0d |
| 65 |  | Búsqueda y selección de documentos | 1d? | 2010-06-11 | 2010-06-11 |  | 0d |
| 66 |  | Apertura documentos | 1d? | 2010-06-11 | 2010-06-11 |  | 0d |
| 67 | 19 | **(USR15) Cerrar consulta y dar respuesta al ciudadano** | 1d? | 2010-06-11 | 2010-06-11 | 23 | 3d |
| 68 |  | Clasificar Finalizacion de Consulta | 1d? | 2010-06-11 | 2010-06-11 |  | 3d |
| 69 |  | Adición de motivo de cierre a la consulta | 1d? | 2010-06-11 | 2010-06-11 |  | 3d |
| 70 |  | Creación de clasificaciones ad-hoc | 1d? | 2010-06-11 | 2010-06-11 |  | 3d |

| ID | WBS | Task | Duration | Start | Finish | Predecessors | Total float |
| --- | --- | --- | --- | --- | --- | --- | --- |
| 71 | 20 | **(USR16) Visualizar Consulta** | 1d? | 2010-06-11 | 2010-06-11 | 23 | 2d |
| 72 |  | Mostrar datos generales de la consulta | 1d? | 2010-06-11 | 2010-06-11 |  | 2d |
| 73 |  | Mostrar datos según el documento elegido | 1d? | 2010-06-11 | 2010-06-11 |  | 2d |
| 74 | 21 | **(USR17) Crear/Transferir Consulta** | 1d? | 2010-06-11 | 2010-06-11 | 23 | 2d |
| 75 |  | Crear Consulta | 1d? | 2010-06-11 | 2010-06-11 |  | 2d |
| 76 |  | Copiar consulta | 1d? | 2010-06-11 | 2010-06-11 |  | 2d |
| 77 | 21.3 | **Transferir Consulta** | 1d? | 2010-06-11 | 2010-06-11 |  | 2d |
| 78 |  | Localizar a otro operador del mismo perfil | 1d? | 2010-06-11 | 2010-06-11 |  | 2d |
| 79 | 22 | **(ADM01) Mantenimiento del Entorno, clasif y prioridades** | 1d? | 2010-06-03 | 2010-06-03 | 199 | 9d |
| 80 |  | Módulo de edición de parametros grales de la aplicación | 1d? | 2010-06-03 | 2010-06-03 |  | 9d |
| 81 |  | Módulo edición listas de clasificaciones (Códigos internos) | 1d? | 2010-06-03 | 2010-06-03 |  | 9d |
| 82 | 22.3 | **Módulo mantenimiento de la lista de espera** | 1d? | 2010-06-03 | 2010-06-03 |  | 9d |
| 83 |  | ABM de la lista de espera | 1d? | 2010-06-03 | 2010-06-03 |  | 9d |
| 84 |  | Módulo de gestión de prioridades sobre la lista de espera | 1d? | 2010-06-03 | 2010-06-03 |  | 9d |
| 85 | 22.4 | **Módulo mantenimiento de lineas de servicio** | 1d? | 2010-06-03 | 2010-06-03 |  | 9d |
| 86 |  | ABM lineas de servicio | 1d? | 2010-06-03 | 2010-06-03 |  | 9d |
| 87 |  | ABM servicios para una linea seleccionada | 1d? | 2010-06-03 | 2010-06-03 |  | 9d |
| 88 | 22.5 | **Módulo mantenimiento agendas** | 1d? | 2010-06-03 | 2010-06-03 |  | 9d |
| 89 |  | Asignar operadores a agenda | 1d? | 2010-06-03 | 2010-06-03 |  | 9d |
| 90 |  | ABM de usuarios de la agenda | 1d? | 2010-06-03 | 2010-06-03 |  | 9d |
| 91 |  | ABM citas de la agenda | 1d? | 2010-06-03 | 2010-06-03 |  | 9d |
| 92 | 22.6 | **Módulo mantenimiento BBDD** | 1d? | 2010-06-03 | 2010-06-03 |  | 9d |
| 93 |  | Módulo comprobación de formato de archivo | 1d? | 2010-06-03 | 2010-06-03 |  | 9d |
| 94 |  | Módulo actualización de BBDD | 1d? | 2010-06-03 | 2010-06-03 |  | 9d |
| 95 | 23 | **(ADM02) Extraccion de estadisticas y listados** | 1d? | 2010-06-04 | 2010-06-04 | 79 | 9d |
| 96 |  | Listados De Administración | 1d? | 2010-06-04 | 2010-06-04 |  | 9d |
| 97 | 23.2 | **Listados Comunes** | 1d? | 2010-06-04 | 2010-06-04 |  | 9d |
| 98 |  | Detalle de estado de finalización consulta/acción | 1d? | 2010-06-04 | 2010-06-04 |  | 9d |
| 99 |  | Listado de clasificaciones | 1d? | 2010-06-04 | 2010-06-04 |  | 9d |
| 100 |  | Listados de incidencias en las comunicaciones | 1d? | 2010-06-04 | 2010-06-04 |  | 9d |
| 101 |  | Ratios por usuario | 1d? | 2010-06-04 | 2010-06-04 |  | 9d |
| 102 |  | Finales de servicio | 1d? | 2010-06-04 | 2010-06-04 |  | 9d |
| 103 | 24 | **(ADM03) Mantenimiento de documentos** | 2d? | 2010-06-16 | 2010-06-17 | 111 | 0d |
| 104 |  | Creación y edición de documentos | 1d? | 2010-06-17 | 2010-06-17 | 108, 109, 110 | 0d |
| 105 |  | Borrado de documentos | 1d? | 2010-06-16 | 2010-06-16 |  | 1d |
| 106 |  | Clasificación de documentos | 1d? | 2010-06-16 | 2010-06-16 |  | 1d |
| 107 |  | Búsqueda de documentos | 1d? | 2010-06-16 | 2010-06-16 |  | 1d |
| 108 |  | (ADM04) Mantenimiento de Recursos | 1d? | 2010-06-14 | 2010-06-14 | 61 | 0d |
| 109 |  | (ADM05) Mantenimiento de guias de interrogatorio | 1d? | 2010-06-16 | 2010-06-16 | 111, 61 | 0d |
| 110 |  | (ADM06) Mantenimiento de Fichas tematicas | 1d? | 2010-06-16 | 2010-06-16 | 111, 61 | 0d |
| 111 | 28 | **(ADM07) Mantenimiento de relaciones sobre guias de interrogatorio y fichas tematicas** | 1d? | 2010-06-15 | 2010-06-15 | 108 | 0d |
| 112 |  | Adición de documentos a fichas temáticas | 1d? | 2010-06-15 | 2010-06-15 |  | 0d |
| 113 |  | Adición de documentos a guias de interrogatorio | 1d? | 2010-06-15 | 2010-06-15 |  | 0d |
| 114 | 29 | **(ADM08) Mantenimiento de encuestas** | 1d? | 2010-06-04 | 2010-06-04 | 130 | 10d |
| 115 | 29.1 | **Mantenimiento Indice de Encuestas** | 1d? | 2010-06-04 | 2010-06-04 |  | 10d |
| 116 |  | Mantener Ediciones | 1d? | 2010-06-04 | 2010-06-04 |  | 10d |
| 117 |  | Cierre de ediciones | 1d? | 2010-06-04 | 2010-06-04 |  | 10d |
| 118 |  | Asignación de formulario a encuesta | 1d? | 2010-06-04 | 2010-06-04 |  | 10d |
| 119 |  | Asignación de operadores a encuesta | 1d? | 2010-06-04 | 2010-06-04 |  | 10d |
| 120 | 29.4 | **Asignación lista de encuestados** | 1d? | 2010-06-04 | 2010-06-04 |  | 10d |
| 121 |  | Alta, baja de encuestados | 1d? | 2010-06-04 | 2010-06-04 |  | 10d |
| 122 |  | Asignación automática en base a un archivo de texto | 1d? | 2010-06-04 | 2010-06-04 |  | 10d |
| 123 |  | Publicar Encuestas | 1d? | 2010-06-04 | 2010-06-04 |  | 10d |
| 124 | 30 | **(ADM09) Mantenimiento de seguimiento de patologias** | 1d? | 2010-06-04 | 2010-06-04 | 79 | 9d |
| 125 |  | Mantenimiento Indice de campañas de seguimiento | 1d? | 2010-06-04 | 2010-06-04 |  | 9d |
| 126 |  | Asignación de formulario a campaña de seguimiento | 1d? | 2010-06-04 | 2010-06-04 |  | 9d |
| 127 |  | Asignación de operadores a campaña de seguimiento | 1d? | 2010-06-04 | 2010-06-04 |  | 9d |
| 128 |  | Asignación de listas de pacientes | 1d? | 2010-06-04 | 2010-06-04 |  | 9d |
| 129 |  | Activación/ Desactivación de campañas | 1d? | 2010-06-04 | 2010-06-04 |  | 9d |
| 130 | 31 | **(ADM10) Creacion de formularios de encuesta y seguimiento** | 1d? | 2010-06-03 | 2010-06-03 | 199 | 9d |
| 131 |  | Mantener Indice de Encuesta | 1d? | 2010-06-03 | 2010-06-03 |  | 9d |
| 132 |  | Crear y Editar Encuestas | 1d? | 2010-06-03 | 2010-06-03 |  | 9d |
| 133 | 32 | **(ADM11) Mantenimiento de usuarios, perfiles y permisos** | 1d? | 2010-06-10 | 2010-06-10 | 1 | 5d |
| 134 |  | Mantenimiento Opciones Funcionales | 1d? | 2010-06-10 | 2010-06-10 |  | 5d |
| 135 | 32.2 | **Mantener Perfiles Trabajo** | 1d? | 2010-06-10 | 2010-06-10 |  | 5d |
| 136 |  | Alta, modificación de perfiles | 1d? | 2010-06-10 | 2010-06-10 |  | 5d |
| 137 |  | ABM de opciones funcionales a perfil | 1d? | 2010-06-10 | 2010-06-10 |  | 5d |
| 138 |  | Adición de responsabilidades a opciones funcionales | 1d? | 2010-06-10 | 2010-06-10 |  | 5d |
| 139 | 32.3 | **Mantener Usuarios** | 1d? | 2010-06-10 | 2010-06-10 |  | 5d |
| 140 |  | Creación/gestion de usuarios | 1d? | 2010-06-10 | 2010-06-10 |  | 5d |

| ID | WBS | Task | Duration | Start | Finish | Predecessors | Total float |
| --- | --- | --- | --- | --- | --- | --- | --- |
| 141 |  | Asiganción de perfil a usuario | 1d? | 2010-06-10 | 2010-06-10 |  | 5d |
| 142 |  | Asignación de agendas a usuario | 1d? | 2010-06-10 | 2010-06-10 |  | 5d |
| 143 | 33 | **(ADM12) Listado de acciones proactivas** | 1d? | 2010-06-07 | 2010-06-07 | 95, 124 | 9d |
| 144 |  | Módulo de elaboraciónde informes de estado de campaña de seguimiento | 1d? | 2010-06-07 | 2010-06-07 |  | 9d |
| 145 |  | Módulo de elaboración de informes de estado de encuesta | 1d? | 2010-06-07 | 2010-06-07 |  | 9d |
| 146 |  | Módulo de elaboración de informes de ediciones de encuestas | 1d? | 2010-06-07 | 2010-06-07 |  | 9d |
| 147 |  | Módulo de elaboración de listados de campañas de seguimiento | 1d? | 2010-06-07 | 2010-06-07 |  | 9d |
| 148 |  | Módulo de elaboración de listados de información de encuestas | 1d? | 2010-06-07 | 2010-06-07 |  | 9d |
| 149 | 34 | **(ADM13) Listados de documentos** | 1d? | 2010-06-18 | 2010-06-18 | 95, 103 | 0d |
| 150 |  | Elaboración de listado de configuración | 1d? | 2010-06-18 | 2010-06-18 |  | 0d |
| 151 |  | Elaboración de listado de uso | 1d? | 2010-06-18 | 2010-06-18 |  | 0d |
| 152 |  | Elaboración de listado de asociaciones | 1d? | 2010-06-18 | 2010-06-18 |  | 0d |
| 153 | 35 | **(ADM14) Listado sobre consultas** | 1d? | 2010-06-11 | 2010-06-11 | 95, 23 | 5d |
| 154 |  | Módulo de obtención de listados de consulta por ciudadano | 1d? | 2010-06-11 | 2010-06-11 |  | 5d |
| 155 |  | Módulo de obtención de listados de consultas con cierre principal | 1d? | 2010-06-11 | 2010-06-11 |  | 5d |
| 156 |  | Módulo de obtención de listados de consulta con cierre secundario | 1d? | 2010-06-11 | 2010-06-11 |  | 5d |
| 157 |  | Módulo de obtención de listados de consulta por motivo de cierre | 1d? | 2010-06-11 | 2010-06-11 |  | 5d |
| 158 |  | Módulo de obtención de listado de resumen de consultas por servicio | 1d? | 2010-06-11 | 2010-06-11 |  | 5d |
| 159 |  | Módulo de obtención de listado de consultas por área geográfica | 1d? | 2010-06-11 | 2010-06-11 |  | 5d |
| 160 |  | Módulo de obtención de listado de consultas por usuario | 1d? | 2010-06-11 | 2010-06-11 |  | 5d |
| 161 |  | Módulo de obtención de listado de consultas pendientes | 1d? | 2010-06-11 | 2010-06-11 |  | 5d |
| 162 | 36 | **(ADM15) Mantener Asignaciones TSI** | 1d? | 2010-06-15 | 2010-06-15 | 79, 35 | 3d |
| 163 | 36.1 | **Módulo de envío de datos a CatSalut** | 1d? | 2010-06-15 | 2010-06-15 |  | 3d |
| 164 |  | Recolección de datos de operaciones TSI pendientes | 1d? | 2010-06-15 | 2010-06-15 |  | 3d |
| 165 |  | Migración de los datos a archivo TXT | 1d? | 2010-06-15 | 2010-06-15 |  | 3d |
| 166 |  | Interface de comunicación con CatSalut | 1d? | 2010-06-15 | 2010-06-15 |  | 3d |
| 167 | 37 | **(ADM16) Asignar documentos a acciones** | 1d? | 2010-06-18 | 2010-06-18 | 103 | 0d |
| 168 |  | Creación/eliminación de asociaciones | 1d? | 2010-06-18 | 2010-06-18 |  | 0d |
| 169 |  | Cadicidad de asociaciones | 1d? | 2010-06-18 | 2010-06-18 |  | 0d |
| 170 | 38 | **(INT01) Direcciones de farmacias, CAP y otra informacion breve** | 1d? | 2010-06-15 | 2010-06-15 | 11, 61, 79 | 2d |
| 171 |  | Trabajo con listas de resultados | 1d? | 2010-06-15 | 2010-06-15 |  | 2d |
| 172 | 39 | **(SIS01) Trazabilidad y registro de uso** | 5d? | 2010-06-10 | 2010-06-16 | 1 | 2d |
| 173 |  | Control Acceso a Consultas | 1d? | 2010-06-11 | 2010-06-11 | 23 | 5d |
| 174 |  | Control Acceso a Encuestas | 1d? | 2010-06-10 | 2010-06-10 | 52 | 6d |
| 175 |  | Control General Acceso al Sistema | 1d? | 2010-06-11 | 2010-06-11 | 133 | 5d |
| 176 |  | Control Acceso a Campañas de Seguimiento | 1d? | 2010-06-16 | 2010-06-16 | 46 | 2d |
| 177 |  | Control Acceso a Documentos | 1d? | 2010-06-14 | 2010-06-14 | 61 | 4d |
| 178 |  | Control Acceso a Recursos Internos | 1d? | 2010-06-10 | 2010-06-10 |  | 6d |
| 179 |  | Historial de Consultas | 1d? | 2010-06-10 | 2010-06-10 |  | 6d |
| 180 | 40 | **(ISC01) Transferir info, comunicacion a STARS** | 1d? | 2010-06-10 | 2010-06-10 | 1 | 6d |
| 181 |  | Recibir información del sistema de comunicaciones | 1d? | 2010-06-10 | 2010-06-10 |  | 6d |
| 182 | 41 | **(ISC02) Iniciar llamada desde STARS** | 1d? | 2010-06-10 | 2010-06-10 | 1 | 6d |
| 183 |  | Lanzamiento de petición de comunicación | 1d? | 2010-06-10 | 2010-06-10 |  | 6d |
| 184 | 42 | **(ISC03) Informacion encuesta** | 1d? | 2010-06-04 | 2010-06-04 | 130 | 10d |
| 185 |  | Activación actividad de encuesta | 1d? | 2010-06-04 | 2010-06-04 |  | 10d |
| 186 |  | ABM Consultas | 1d? | 2010-06-11 | 2010-06-11 | 23 | 5d |
| 187 |  | ABM Usuarios | 1d? | 2010-06-11 | 2010-06-11 | 3 | 4d |
| 188 |  | Proteccion de Acceso | 1d? | 2010-06-14 | 2010-06-14 | 187 | 4d |
| 189 |  | ABM Fichas / Guias / Recursos | 1d? | 2010-06-15 | 2010-06-15 | 108 | 3d |
| 190 |  | ABM Cuestionarios | 1d? | 2010-06-04 | 2010-06-04 | 130 | 10d |
| 191 |  | Interfaz General | 1d? | 2010-06-10 | 2010-06-10 | 1 | 6d |
| 192 |  | Interfaz Para Usuario Avanzado | 1d? | 2010-06-04 | 2010-06-04 | 79 | 10d |
| 193 |  | Interfaz de Listados para ADM02 | 1d? | 2010-06-07 | 2010-06-07 | 95 | 9d |
| 194 |  | Interfaz Mantenimiento Usuarios y Perfiles | 1d? | 2010-06-11 | 2010-06-11 | 133 | 5d |
| 195 |  | Interfaz Direcciones INT01 | 1d? | 2010-06-16 | 2010-06-16 | 170 | 2d |
| 196 |  | ABM Enfermedades / Centros Salud | 1d? | 2010-06-16 | 2010-06-16 | 170 | 2d |
| 197 |  | Listado de Usuarios y Perfiles | 1d? | 2010-06-11 | 2010-06-11 | 133 | 5d |
| 198 |  | Interface con sistema de comunicaciones (ISC01, ISC02, ISC03) | 1d? | 2010-06-10 | 2010-06-10 | 1 | 6d |
| 199 |  | Arquitectura General / Configuracion Ambientes | 15d | 2010-05-13 | 2010-06-02 | 200 | 0d |
| 200 | 57 | **Tareas IT Sobre Nuestra Empresa** | 5d | 2010-05-06 | 2010-05-12 |  | 0d |
| 201 |  | Compra Equipos Necesarios | 3d | 2010-05-06 | 2010-05-10 |  | 2d |
| 202 | 57.2 | **Infraestructura** | 5d | 2010-05-06 | 2010-05-12 |  | 0d |
| 203 |  | Preparacion de Ambientes en servidores | 1d | 2010-05-06 | 2010-05-06 |  | 4d |
| 204 |  | Instalacion y Configuracion de Servidor DEV | 3d | 2010-05-06 | 2010-05-10 |  | 2d |
| 205 |  | Instalacion y Configuracion de Servidores de Usos Multiples | 5d | 2010-05-06 | 2010-05-12 |  | 0d |
| 206 | 57.3 | **Redes** | 3d | 2010-05-06 | 2010-05-10 |  | 2d |
| 207 |  | Configuracion del FW | 3d | 2010-05-06 | 2010-05-10 |  | 2d |
| 208 |  | Instalacion de pcs nuevos usuarios | 5d | 2010-05-06 | 2010-05-12 |  | 0d |

## Version 2 (saved 2010-08-31, file Casos Uso Lole Con Recursos 2010 Version Previa.mpp)

Note of the change: Subo una version con asignacion de recursos en project 2010. dps la convierto cdo este lista

Last finish 2010-06-18 → 2010-08-03 (+46d).

Changed:

| ID | Task | Start | Finish | Duration | Total float | Other |
| --- | --- | --- | --- | --- | --- | --- |
| 1 | Integracion con el Sistema STARS (Lectura Datos) | 2010-06-03 → 2010-06-30 (+27d) | 2010-06-09 → 2010-07-06 (+27d) |  | 0d → 2d | resources none → Programador Sr 1 |
| 2 | Modulo Seguridad que Oculta Info Llamado | 2010-06-10 → 2010-07-07 (+27d) | 2010-06-14 → 2010-07-09 (+25d) |  | 4d → 17d | resources none → Programador Sr 2 |
| 3 | **(GEN01) Identificacion y Autenticacion** | 2010-06-10 → 2010-07-07 (+27d) | 2010-06-10 → 2010-07-09 (+29d) | 1d → 3d | 3d → 11d |  |
| 4 | Autenticacion | 2010-06-10 → 2010-07-07 (+27d) | 2010-06-10 → 2010-07-07 (+27d) |  | 3d → 13d |  |
| 5 | Interfaz Inicio Sesion | 2010-06-10 → 2010-07-07 (+27d) | 2010-06-10 → 2010-07-09 (+29d) | 1d → 3d | 3d → 11d |  |
| 6 | **(GEN02) Gestion General de Registros** | 2010-06-10 → 2010-07-07 (+27d) | 2010-06-11 → 2010-07-20 (+39d) | 2d → 10d | 5d → 10d | resources none → Programador Jr 1; Programador Jr 2 |
| 7 | ABM Registro | 2010-06-10 → 2010-07-19 (+39d) | 2010-06-10 → 2010-07-19 (+39d) |  | 6d → 11d | resources none → Programador Jr 1; Programador Jr 2 |
| 8 | Buscar registro | 2010-06-10 → 2010-07-19 (+39d) | 2010-06-10 → 2010-07-19 (+39d) |  | 6d → 11d | resources none → Programador Jr 1; Programador Jr 2 |
| 9 | Copiar registro | 2010-06-10 → 2010-07-20 (+40d) | 2010-06-10 → 2010-07-20 (+40d) |  | 6d → 10d | resources none → Programador Jr 1; Programador Jr 2 |
| 10 | Interfaz ABM Registro | 2010-06-10 → 2010-07-07 (+27d) | 2010-06-11 → 2010-07-09 (+28d) | 2d → 3d | 5d → 17d | resources none → Programador Jr 1; Programador Jr 2 |
| 11 | **(USR01) Determinacion del servicio de atencion** | 2010-06-14 → 2010-07-13 (+29d) | 2010-06-14 → 2010-07-14 (+30d) | 1d? → 2d | 2d → 7d |  |
| 12 | Capturar la Comunicación???? | 2010-06-14 → 2010-07-13 (+29d) | 2010-06-14 → 2010-07-14 (+30d) | 1d? → 2d | 2d → 7d |  |
| 13 | Determinar el tipo de servicio | 2010-06-14 → 2010-07-13 (+29d) | 2010-06-14 → 2010-07-13 (+29d) | 1d? → 1d | 2d → 8d | was named Determinar el tipod e servicio |
| 14 | Lista de Espera | 2010-06-14 → 2010-07-13 (+29d) | 2010-06-14 → 2010-07-13 (+29d) | 1d? → 1d | 2d → 8d |  |
| 15 | Determinar conjunto de operadores adecuados al tipo de solicitud | 2010-06-14 → 2010-07-13 (+29d) | 2010-06-14 → 2010-07-13 (+29d) | 1d? → 1d | 2d → 8d |  |
| 16 | **(USR02) Agenda** | 2010-06-14 → 2010-07-12 (+28d) | 2010-06-14 → 2010-07-15 (+31d) | 1d? → 4d | 2d → 10d | resources none → Programador Jr 1; Programador Jr 2 |
| 17 | Selección de una agenda | 2010-06-14 → 2010-07-15 (+31d) | 2010-06-14 → 2010-07-15 (+31d) | 1d? → 0.5d | 2d → 10d | resources none → Programador Jr 1; Programador Jr 2 |
| 18 | ABM citas sobre la agenda | 2010-06-14 → 2010-07-13 (+29d) | 2010-06-14 → 2010-07-13 (+29d) | 1d? → 1d | 2d → 12d | constraint none → start no earlier than 2010-06-16; resources none → Programador Jr 1; Programador Jr 2 |
| 19 | Interfaz de la Agenda | 2010-06-14 → 2010-07-12 (+28d) | 2010-06-14 → 2010-07-15 (+31d) | 1d? → 2d | 2d → 10.5d | resources none → Programador Jr 1; Programador Jr 2 |
| 20 | Integracion con Stars - Llamada desde Agenda | 2010-06-14 → 2010-07-13 (+29d) | 2010-06-14 → 2010-07-15 (+31d) | 1d? → 3d | 2d → 10d | resources none → Programador Sr 2; Programador Sr 1 |
| 21 | Asignar pacientes a cita | 2010-06-14 → 2010-07-12 (+28d) | 2010-06-14 → 2010-07-12 (+28d) | 1d? → 0.5d | 2d → 13.5d | resources none → Programador Jr 1; Programador Jr 2 |
| 22 | (USR03) Rellamada | 2010-06-15 → 2010-07-21 (+36d) | 2010-06-15 → 2010-07-21 (+36d) | 1d? → 1d | 3d → 9d | resources none → Programador Jr 1; Programador Jr 2 |
| 23 | **(USR04) Consulta** | 2010-06-10 → 2010-07-07 (+27d) | 2010-06-10 → 2010-07-08 (+28d) | 1d? → 2d | 0d → 7d |  |
| 24 | **Tratar Consulta** | 2010-06-10 → 2010-07-07 (+27d) | 2010-06-10 → 2010-07-07 (+27d) | 1d? → 0.5d | 0d → 8.5d |  |
| 25 | Ajornar Consulta | 2010-06-10 → 2010-07-07 (+27d) | 2010-06-10 → 2010-07-07 (+27d) | 1d? → 0.5d | 0d → 8.5d |  |
| 26 | Transferir consulta | 2010-06-10 → 2010-07-07 (+27d) | 2010-06-10 → 2010-07-07 (+27d) | 1d? → 0.5d | 0d → 8.5d |  |
| 27 | Modulo Envio de Correo | 2010-06-10 → 2010-07-07 (+27d) | 2010-06-10 → 2010-07-08 (+28d) | 1d? → 2d | 0d → 7d |  |
| 28 | Modulo Envio SMS | 2010-06-10 → 2010-07-07 (+27d) | 2010-06-10 → 2010-07-08 (+28d) | 1d? → 2d | 0d → 7d |  |
| 29 | Inclusion en Campaña de Seguimiento | 2010-06-10 → 2010-07-07 (+27d) | 2010-06-10 → 2010-07-07 (+27d) | 1d? → 1d | 0d → 8d |  |
| 30 | (USR05) Consejo Salud | 2010-06-14 → 2010-07-13 (+29d) | 2010-06-14 → 2010-07-13 (+29d) | 1d? → 1d | 4d → 15d |  |
| 31 | **(USR06) Gestionar Consulta pendiente** | 2010-06-11 → 2010-07-09 (+28d) | 2010-06-11 → 2010-07-09 (+28d) | 1d? → 1d | 2d → 8d |  |
| 32 | Priorizacion de la Lista de Consultas | 2010-06-11 → 2010-07-09 (+28d) | 2010-06-11 → 2010-07-09 (+28d) | 1d? → 1d | 2d → 8d |  |
| 33 | **(USR07) Programacion de cita previa** | 2010-06-14 → 2010-07-13 (+29d) | 2010-06-14 → 2010-07-13 (+29d) | 1d? → 1d | 4d → 15d |  |
| 34 | Realizar Citación (Interface con Sistema de citación AP) | 2010-06-14 → 2010-07-13 (+29d) | 2010-06-14 → 2010-07-13 (+29d) | 1d? → 1d | 4d → 15d |  |
| 35 | **(USR08) Gestiones sobre la TSI** | 2010-06-14 → 2010-07-13 (+29d) | 2010-06-14 → 2010-07-13 (+29d) | 1d? → 0.5d | 3d → 10.5d |  |
| 36 | Verificacion Documentacion Necesaria | 2010-06-14 → 2010-07-13 (+29d) | 2010-06-14 → 2010-07-13 (+29d) | 1d? → 0.5d | 3d → 10.5d |  |
| 37 | Enviar Gestion (Interface con sistema RCA) | 2010-06-14 → 2010-07-13 (+29d) | 2010-06-14 → 2010-07-13 (+29d) | 1d? → 0.5d | 3d → 10.5d |  |
| 38 | Cierre automatico de la consulta por paso de tiempo | 2010-06-14 → 2010-07-13 (+29d) | 2010-06-14 → 2010-07-13 (+29d) | 1d? → 0.5d | 3d → 10.5d |  |
| 39 | Guardar LOG gestion TSI????? | 2010-06-14 → 2010-07-13 (+29d) | 2010-06-14 → 2010-07-13 (+29d) | 1d? → 0.5d | 3d → 10.5d |  |
| 40 | **(USR09) Servicio de traduccion** | 2010-06-14 → 2010-07-12 (+28d) | 2010-06-14 → 2010-07-13 (+29d) | 1d? → 2d | 4d → 15d |  |
| 41 | Contactar Servicio Externo de Traduccion | 2010-06-14 → 2010-07-12 (+28d) | 2010-06-14 → 2010-07-12 (+28d) | 1d? → 1d | 4d → 16d |  |
| 42 | Enlace Comunicacion Multiconferencia | 2010-06-14 → 2010-07-12 (+28d) | 2010-06-14 → 2010-07-13 (+29d) | 1d? → 2d | 4d → 15d |  |
| 43 | Modulo monitorización de servicio | 2010-06-14 → 2010-07-12 (+28d) | 2010-06-14 → 2010-07-13 (+29d) | 1d? → 2d | 4d → 15d |  |
| 44 | **(USR10) Informacion Sanitaria General** | 2010-06-16 → 2010-07-28 (+42d) | 2010-06-16 → 2010-07-28 (+42d) | 1d? → 1d | 2d → 4d |  |
| 45 | Guardar Informacion Ciudadano | 2010-06-16 → 2010-07-28 (+42d) | 2010-06-16 → 2010-07-28 (+42d) | 1d? → 1d | 2d → 4d |  |
| 46 | **(USR11) Seguimiento de Patologias** | 2010-06-15 → 2010-07-16 (+31d) | 2010-06-15 → 2010-07-16 (+31d) | 1d? → 1d | 2d → 10d |  |
| 47 | Buscar Campañas Abiertas | 2010-06-15 → 2010-07-16 (+31d) | 2010-06-15 → 2010-07-16 (+31d) | 1d? → 0.5d | 2d → 10.5d |  |
| 48 | **Gestionar Seguimiento** | 2010-06-15 → 2010-07-16 (+31d) | 2010-06-15 → 2010-07-16 (+31d) | 1d? → 0.5d | 2d → 10.5d |  |
| 49 | Visualizar Historial Pacientes | 2010-06-15 → 2010-07-16 (+31d) | 2010-06-15 → 2010-07-16 (+31d) | 1d? → 0.5d | 2d → 10.5d |  |
| 50 | Llamada al Paciente | 2010-06-15 → 2010-07-16 (+31d) | 2010-06-15 → 2010-07-16 (+31d) | 1d? → 0.5d | 2d → 10.5d |  |
| 51 | Desligar paciente de campaña | 2010-06-15 → 2010-07-16 (+31d) | 2010-06-15 → 2010-07-16 (+31d) | 1d? → 1d | 2d → 10d |  |
| 52 | **(USR12) Encuestas** | 2010-06-04 → 2010-07-01 (+27d) | 2010-06-04 → 2010-07-05 (+31d) | 1d? → 3d | 9d → 19d |  |
| 53 | Interfaz de Encuestas | 2010-06-04 → 2010-07-01 (+27d) | 2010-06-04 → 2010-07-05 (+31d) | 1d? → 3d | 9d → 19d |  |
| 54 | Contacto con Encuestado | 2010-06-04 → 2010-07-01 (+27d) | 2010-06-04 → 2010-07-01 (+27d) | 1d? → 1d | 9d → 21d |  |
| 55 | ABM Formulario De Encuesta | 2010-06-04 → 2010-07-05 (+31d) | 2010-06-04 → 2010-07-05 (+31d) | 1d? → 1d | 9d → 19d | resources none → Programador Jr 1; Programador Jr 2 |
| 56 | **(USR13) Buscar Consultas** | 2010-06-14 → 2010-07-12 (+28d) | 2010-06-14 → 2010-07-12 (+28d) | 1d? → 1d | 3d → 9d |  |
| 57 | **Operativo de Busqueda** | 2010-06-14 → 2010-07-12 (+28d) | 2010-06-14 → 2010-07-12 (+28d) | 1d? → 1d | 3d → 9d |  |
| 58 | Buscar según distintos criterios | 2010-06-14 → 2010-07-12 (+28d) | 2010-06-14 → 2010-07-12 (+28d) | 1d? → 1d | 3d → 9d |  |
| 59 | Filtrar resultados de la busqueda según permisos del usuario | 2010-06-14 → 2010-07-12 (+28d) | 2010-06-14 → 2010-07-12 (+28d) | 1d? → 0.5d | 3d → 9.5d |  |
| 60 | Acotar resultados si los mismos sobrepasan el parametro configurable "n" | 2010-06-14 → 2010-07-12 (+28d) | 2010-06-14 → 2010-07-12 (+28d) | 1d? → 0.5d | 3d → 9.5d |  |
| 61 | **(USR14) Hacer Uso de Documentos** | 2010-06-11 → 2010-07-09 (+28d) | 2010-06-11 → 2010-07-12 (+31d) | 1d? → 2d | 0d → 8d |  |
| 62 | Creación y uso de Guias Interrogatorio | 2010-06-11 → 2010-07-09 (+28d) | 2010-06-11 → 2010-07-12 (+31d) | 1d? → 2d | 0d → 8d |  |
| 63 | Creación y uso Fichas Tematicas | 2010-06-11 → 2010-07-09 (+28d) | 2010-06-11 → 2010-07-12 (+31d) | 1d? → 2d | 0d → 8d |  |
| 64 | Creación y uso de Recursos | 2010-06-11 → 2010-07-09 (+28d) | 2010-06-11 → 2010-07-12 (+31d) | 1d? → 2d | 0d → 8d |  |
| 65 | Búsqueda y selección de documentos | 2010-06-11 → 2010-07-09 (+28d) | 2010-06-11 → 2010-07-12 (+31d) | 1d? → 2d | 0d → 8d |  |
| 66 | Apertura documentos | 2010-06-11 → 2010-07-09 (+28d) | 2010-06-11 → 2010-07-09 (+28d) | 1d? → 1d | 0d → 9d |  |
| 67 | **(USR15) Cerrar consulta y dar respuesta al ciudadano** | 2010-06-11 → 2010-07-09 (+28d) | 2010-06-11 → 2010-07-09 (+28d) | 1d? → 1d | 3d → 11.5d |  |
| 68 | Clasificar Finalizacion de Consulta | 2010-06-11 → 2010-07-09 (+28d) | 2010-06-11 → 2010-07-09 (+28d) | 1d? → 0.5d | 3d → 12d |  |
| 69 | Adición de motivo de cierre a la consulta | 2010-06-11 → 2010-07-09 (+28d) | 2010-06-11 → 2010-07-09 (+28d) | 1d? → 0.5d | 3d → 12d |  |
| 70 | Creación de clasificaciones ad-hoc | 2010-06-11 → 2010-07-09 (+28d) | 2010-06-11 → 2010-07-09 (+28d) | 1d? → 1d | 3d → 11.5d |  |

| ID | Task | Start | Finish | Duration | Total float | Other |
| --- | --- | --- | --- | --- | --- | --- |
| 71 | **(USR16) Visualizar Consulta** | 2010-06-11 → 2010-07-09 (+28d) | 2010-06-11 → 2010-07-09 (+28d) | 1d? → 1d | 2d → 9d |  |
| 72 | Mostrar datos generales de la consulta | 2010-06-11 → 2010-07-09 (+28d) | 2010-06-11 → 2010-07-09 (+28d) | 1d? → 1d | 2d → 9d |  |
| 73 | Mostrar datos según el documento elegido | 2010-06-11 → 2010-07-09 (+28d) | 2010-06-11 → 2010-07-09 (+28d) | 1d? → 1d | 2d → 9d |  |
| 74 | **(USR17) Crear/Transferir Consulta** | 2010-06-11 → 2010-07-09 (+28d) | 2010-06-11 → 2010-07-12 (+31d) | 1d? → 2d | 2d → 7d |  |
| 75 | Crear Consulta | 2010-06-11 → 2010-07-09 (+28d) | 2010-06-11 → 2010-07-12 (+31d) | 1d? → 2d | 2d → 7d |  |
| 76 | Copiar consulta | 2010-06-11 → 2010-07-09 (+28d) | 2010-06-11 → 2010-07-09 (+28d) | 1d? → 1d | 2d → 8d |  |
| 77 | **Transferir Consulta** | 2010-06-11 → 2010-07-09 (+28d) | 2010-06-11 → 2010-07-09 (+28d) | 1d? → 1d | 2d → 8d |  |
| 78 | Localizar a otro operador del mismo perfil | 2010-06-11 → 2010-07-09 (+28d) | 2010-06-11 → 2010-07-09 (+28d) | 1d? → 1d | 2d → 8d |  |
| 79 | **(ADM01) Mantenimiento del Entorno, clasif y prioridades** | 2010-06-03 → 2010-06-30 (+27d) | 2010-06-03 → 2010-07-23 (+50d) | 1d? → 18d | 9d → 0d |  |
| 80 | Módulo de edición de parametros grales de la aplicación | 2010-06-03 → 2010-06-30 (+27d) | 2010-06-03 → 2010-07-23 (+50d) | 1d? → 6d | 9d → 0d | resources none → Programador Sr 1; Programador Sr 2 |
| 81 | Módulo edición listas de clasificaciones (Códigos internos) | 2010-06-03 → 2010-06-30 (+27d) | 2010-06-03 → 2010-07-02 (+29d) | 1d? → 3d | 9d → 15d |  |
| 82 | **Módulo mantenimiento de la lista de espera** | 2010-06-03 → 2010-06-30 (+27d) | 2010-06-03 → 2010-07-05 (+32d) | 1d? → 4d | 9d → 14d |  |
| 83 | ABM de la lista de espera | 2010-06-03 → 2010-07-05 (+32d) | 2010-06-03 → 2010-07-05 (+32d) | 1d? → 1d | 9d → 14d | resources none → Programador Jr 1; Programador Jr 2 |
| 84 | Módulo de gestión de prioridades sobre la lista de espera | 2010-06-03 → 2010-06-30 (+27d) | 2010-06-03 → 2010-06-30 (+27d) | 1d? → 1d | 9d → 17d |  |
| 85 | **Módulo mantenimiento de lineas de servicio** | 2010-06-03 → 2010-06-30 (+27d) | 2010-06-03 → 2010-07-06 (+33d) | 1d? → 5d | 9d → 13d |  |
| 86 | ABM lineas de servicio | 2010-06-03 → 2010-07-06 (+33d) | 2010-06-03 → 2010-07-06 (+33d) | 1d? → 1d | 9d → 13d | resources none → Programador Jr 1; Programador Jr 2 |
| 87 | ABM servicios para una linea seleccionada | 2010-06-03 → 2010-06-30 (+27d) | 2010-06-03 → 2010-06-30 (+27d) | 1d? → 1d | 9d → 17d | resources none → Programador Jr 1; Programador Jr 2 |
| 88 | **Módulo mantenimiento agendas** | 2010-06-03 → 2010-06-30 (+27d) | 2010-06-03 → 2010-07-22 (+49d) | 1d? → 17d | 9d → 1d |  |
| 89 | Asignar operadores a agenda | 2010-06-03 → 2010-06-30 (+27d) | 2010-06-03 → 2010-06-30 (+27d) | 1d? → 1d | 9d → 17d |  |
| 90 | ABM de usuarios de la agenda | 2010-06-03 → 2010-07-22 (+49d) | 2010-06-03 → 2010-07-22 (+49d) | 1d? → 1d | 9d → 1d | resources none → Programador Jr 1; Programador Jr 2 |
| 91 | ABM citas de la agenda | 2010-06-03 → 2010-06-30 (+27d) | 2010-06-03 → 2010-06-30 (+27d) | 1d? → 1d | 9d → 17d | resources none → Programador Jr 1; Programador Jr 2 |
| 92 | **Módulo mantenimiento BBDD** | 2010-06-03 → 2010-06-30 (+27d) | 2010-06-03 → 2010-07-01 (+28d) | 1d? → 2d | 9d → 16d |  |
| 93 | Módulo comprobación de formato de archivo | 2010-06-03 → 2010-06-30 (+27d) | 2010-06-03 → 2010-06-30 (+27d) | 1d? → 1d | 9d → 17d |  |
| 94 | Módulo actualización de BBDD | 2010-06-03 → 2010-06-30 (+27d) | 2010-06-03 → 2010-07-01 (+28d) | 1d? → 2d | 9d → 16d |  |
| 95 | **(ADM02) Extraccion de estadisticas y listados** | 2010-06-04 → 2010-07-26 (+52d) | 2010-06-04 → 2010-07-27 (+53d) | 1d? → 2d | 9d → 0d | resources none → Programador Jr 1; Programador Jr 2 |
| 96 | Listados De Administración | 2010-06-04 → 2010-07-26 (+52d) | 2010-06-04 → 2010-07-27 (+53d) | 1d? → 2d | 9d → 0d | resources none → Programador Jr 1; Programador Jr 2 |
| 97 | **Listados Comunes** | 2010-06-04 → 2010-07-26 (+52d) | 2010-06-04 → 2010-07-26 (+52d) | 1d? → 1d | 9d → 1d |  |
| 98 | Detalle de estado de finalización consulta/acción | 2010-06-04 → 2010-07-26 (+52d) | 2010-06-04 → 2010-07-26 (+52d) | 1d? → 1d | 9d → 1d |  |
| 99 | Listado de clasificaciones | 2010-06-04 → 2010-07-26 (+52d) | 2010-06-04 → 2010-07-26 (+52d) | 1d? → 1d | 9d → 1d |  |
| 100 | Listados de incidencias en las comunicaciones | 2010-06-04 → 2010-07-26 (+52d) | 2010-06-04 → 2010-07-26 (+52d) | 1d? → 1d | 9d → 1d |  |
| 101 | Ratios por usuario | 2010-06-04 → 2010-07-26 (+52d) | 2010-06-04 → 2010-07-26 (+52d) | 1d? → 1d | 9d → 1d |  |
| 102 | Finales de servicio | 2010-06-04 → 2010-07-26 (+52d) | 2010-06-04 → 2010-07-26 (+52d) | 1d? → 1d | 9d → 1d |  |
| 103 | **(ADM03) Mantenimiento de documentos** | 2010-06-16 → 2010-07-16 (+30d) | 2010-06-17 → 2010-07-21 (+34d) | 2d? → 4d | 0d → 8d |  |
| 104 | Creación y edición de documentos | 2010-06-17 → 2010-07-20 (+33d) | 2010-06-17 → 2010-07-21 (+34d) | 1d? → 2d | 0d → 8d |  |
| 105 | Borrado de documentos | 2010-06-16 → 2010-07-16 (+30d) | 2010-06-16 → 2010-07-16 (+30d) | 1d? → 1d | 1d → 11d |  |
| 106 | Clasificación de documentos | 2010-06-16 → 2010-07-16 (+30d) | 2010-06-16 → 2010-07-16 (+30d) | 1d? → 1d | 1d → 11d |  |
| 107 | Búsqueda de documentos | 2010-06-16 → 2010-07-16 (+30d) | 2010-06-16 → 2010-07-19 (+33d) | 1d? → 2d | 1d → 10d |  |
| 108 | (ADM04) Mantenimiento de Recursos | 2010-06-14 → 2010-07-13 (+29d) | 2010-06-14 → 2010-07-14 (+30d) | 1d? → 2d | 0d → 8d |  |
| 109 | (ADM05) Mantenimiento de guias de interrogatorio | 2010-06-16 → 2010-07-16 (+30d) | 2010-06-16 → 2010-07-19 (+33d) | 1d? → 2d | 0d → 8d |  |
| 110 | (ADM06) Mantenimiento de Fichas tematicas | 2010-06-16 → 2010-07-16 (+30d) | 2010-06-16 → 2010-07-19 (+33d) | 1d? → 2d | 0d → 8d |  |
| 111 | **(ADM07) Mantenimiento de relaciones sobre guias de interrogatorio y fichas tematicas** | 2010-06-15 → 2010-07-15 (+30d) | 2010-06-15 → 2010-07-15 (+30d) | 1d? → 1d | 0d → 8d |  |
| 112 | Adición de documentos a fichas temáticas | 2010-06-15 → 2010-07-15 (+30d) | 2010-06-15 → 2010-07-15 (+30d) | 1d? → 1d | 0d → 8d |  |
| 113 | Adición de documentos a guias de interrogatorio | 2010-06-15 → 2010-07-15 (+30d) | 2010-06-15 → 2010-07-15 (+30d) | 1d? → 1d | 0d → 8d |  |
| 114 | **(ADM08) Mantenimiento de encuestas** | 2010-06-04 → 2010-07-01 (+27d) | 2010-06-04 → 2010-07-01 (+27d) | 1d? → 1d | 10d → 23d |  |
| 115 | **Mantenimiento Indice de Encuestas** | 2010-06-04 → 2010-07-01 (+27d) | 2010-06-04 → 2010-07-01 (+27d) | 1d? → 1d | 10d → 23d |  |
| 116 | Mantener Ediciones | 2010-06-04 → 2010-07-01 (+27d) | 2010-06-04 → 2010-07-01 (+27d) | 1d? → 1d | 10d → 23d |  |
| 117 | Cierre de ediciones | 2010-06-04 → 2010-07-01 (+27d) | 2010-06-04 → 2010-07-01 (+27d) | 1d? → 1d | 10d → 23d |  |
| 118 | Asignación de formulario a encuesta | 2010-06-04 → 2010-07-01 (+27d) | 2010-06-04 → 2010-07-01 (+27d) | 1d? → 1d | 10d → 23d |  |
| 119 | Asignación de operadores a encuesta | 2010-06-04 → 2010-07-01 (+27d) | 2010-06-04 → 2010-07-01 (+27d) | 1d? → 1d | 10d → 23d |  |
| 120 | **Asignación lista de encuestados** | 2010-06-04 → 2010-07-01 (+27d) | 2010-06-04 → 2010-07-01 (+27d) | 1d? → 1d | 10d → 23d |  |
| 121 | Alta, baja de encuestados | 2010-06-04 → 2010-07-01 (+27d) | 2010-06-04 → 2010-07-01 (+27d) | 1d? → 1d | 10d → 23d |  |
| 122 | Asignación automática en base a un archivo de texto | 2010-06-04 → 2010-07-01 (+27d) | 2010-06-04 → 2010-07-01 (+27d) | 1d? → 1d | 10d → 23d |  |
| 123 | Publicar Encuestas | 2010-06-04 → 2010-07-01 (+27d) | 2010-06-04 → 2010-07-01 (+27d) | 1d? → 1d | 10d → 23d |  |
| 124 | **(ADM09) Mantenimiento de seguimiento de patologias** | 2010-06-04 → 2010-07-26 (+52d) | 2010-06-04 → 2010-07-26 (+52d) | 1d? → 1d | 9d → 4d |  |
| 125 | Mantenimiento Indice de campañas de seguimiento | 2010-06-04 → 2010-07-26 (+52d) | 2010-06-04 → 2010-07-26 (+52d) | 1d? → 1d | 9d → 4d |  |
| 126 | Asignación de formulario a campaña de seguimiento | 2010-06-04 → 2010-07-26 (+52d) | 2010-06-04 → 2010-07-26 (+52d) | 1d? → 0.5d | 9d → 4.5d |  |
| 127 | Asignación de operadores a campaña de seguimiento | 2010-06-04 → 2010-07-26 (+52d) | 2010-06-04 → 2010-07-26 (+52d) | 1d? → 0.5d | 9d → 4.5d |  |
| 128 | Asignación de listas de pacientes | 2010-06-04 → 2010-07-26 (+52d) | 2010-06-04 → 2010-07-26 (+52d) | 1d? → 0.5d | 9d → 4.5d |  |
| 129 | Activación/ Desactivación de campañas | 2010-06-04 → 2010-07-26 (+52d) | 2010-06-04 → 2010-07-26 (+52d) | 1d? → 0.5d | 9d → 4.5d |  |
| 130 | **(ADM10) Creacion de formularios de encuesta y seguimiento** | 2010-06-03 → 2010-06-30 (+27d) | 2010-06-03 → 2010-06-30 (+27d) | 1d? → 1d | 9d → 19d |  |
| 131 | Mantener Indice de Encuesta | 2010-06-03 → 2010-06-30 (+27d) | 2010-06-03 → 2010-06-30 (+27d) | 1d? → 1d | 9d → 19d |  |
| 132 | Crear y Editar Encuestas | 2010-06-03 → 2010-06-30 (+27d) | 2010-06-03 → 2010-06-30 (+27d) | 1d? → 1d | 9d → 19d |  |
| 133 | **(ADM11) Mantenimiento de usuarios, perfiles y permisos** | 2010-06-10 → 2010-07-07 (+27d) | 2010-06-10 → 2010-07-07 (+27d) | 1d? → 1d | 5d → 2d |  |
| 134 | Mantenimiento Opciones Funcionales | 2010-06-10 → 2010-07-07 (+27d) | 2010-06-10 → 2010-07-07 (+27d) | 1d? → 1d | 5d → 2d |  |
| 135 | **Mantener Perfiles Trabajo** | 2010-06-10 → 2010-07-07 (+27d) | 2010-06-10 → 2010-07-07 (+27d) | 1d? → 1d | 5d → 2d |  |
| 136 | Alta, modificación de perfiles | 2010-06-10 → 2010-07-07 (+27d) | 2010-06-10 → 2010-07-07 (+27d) | 1d? → 1d | 5d → 2d |  |
| 137 | ABM de opciones funcionales a perfil | 2010-06-10 → 2010-07-07 (+27d) | 2010-06-10 → 2010-07-07 (+27d) | 1d? → 1d | 5d → 2d |  |
| 138 | Adición de responsabilidades a opciones funcionales | 2010-06-10 → 2010-07-07 (+27d) | 2010-06-10 → 2010-07-07 (+27d) | 1d? → 0.5d | 5d → 2.5d |  |
| 139 | **Mantener Usuarios** | 2010-06-10 → 2010-07-07 (+27d) | 2010-06-10 → 2010-07-07 (+27d) | 1d? → 1d | 5d → 2d |  |
| 140 | Creación/gestion de usuarios | 2010-06-10 → 2010-07-07 (+27d) | 2010-06-10 → 2010-07-07 (+27d) | 1d? → 1d | 5d → 2d |  |

| ID | Task | Start | Finish | Duration | Total float | Predecessors | Other |
| --- | --- | --- | --- | --- | --- | --- | --- |
| 141 | Asiganción de perfil a usuario | 2010-06-10 → 2010-07-07 (+27d) | 2010-06-10 → 2010-07-07 (+27d) | 1d? → 0.5d | 5d → 2.5d |  |  |
| 142 | Asignación de agendas a usuario | 2010-06-10 → 2010-07-07 (+27d) | 2010-06-10 → 2010-07-07 (+27d) | 1d? → 1d | 5d → 2d |  |  |
| 143 | **(ADM12) Listado de acciones proactivas** | 2010-06-07 → 2010-07-28 (+51d) | 2010-06-07 → 2010-07-29 (+52d) | 1d? → 2d | 9d → 3d |  |  |
| 144 | Módulo de elaboraciónde informes de estado de campaña de seguimiento | 2010-06-07 → 2010-07-28 (+51d) | 2010-06-07 → 2010-07-29 (+52d) | 1d? → 2d | 9d → 3d |  |  |
| 145 | Módulo de elaboración de informes de estado de encuesta | 2010-06-07 → 2010-07-28 (+51d) | 2010-06-07 → 2010-07-29 (+52d) | 1d? → 2d | 9d → 3d |  |  |
| 146 | Módulo de elaboración de informes de ediciones de encuestas | 2010-06-07 → 2010-07-28 (+51d) | 2010-06-07 → 2010-07-29 (+52d) | 1d? → 2d | 9d → 3d |  |  |
| 147 | Módulo de elaboración de listados de campañas de seguimiento | 2010-06-07 → 2010-07-28 (+51d) | 2010-06-07 → 2010-07-29 (+52d) | 1d? → 2d | 9d → 3d |  |  |
| 148 | Módulo de elaboración de listados de información de encuestas | 2010-06-07 → 2010-07-28 (+51d) | 2010-06-07 → 2010-07-29 (+52d) | 1d? → 2d | 9d → 3d |  |  |
| 149 | **(ADM13) Listados de documentos** | 2010-06-18 → 2010-07-28 (+40d) | 2010-06-18 → 2010-07-28 (+40d) | 1d? → 1d | 0d → 4d |  |  |
| 150 | Elaboración de listado de configuración | 2010-06-18 → 2010-07-28 (+40d) | 2010-06-18 → 2010-07-28 (+40d) | 1d? → 1d | 0d → 4d |  |  |
| 151 | Elaboración de listado de uso | 2010-06-18 → 2010-07-28 (+40d) | 2010-06-18 → 2010-07-28 (+40d) | 1d? → 1d | 0d → 4d |  |  |
| 152 | Elaboración de listado de asociaciones | 2010-06-18 → 2010-07-28 (+40d) | 2010-06-18 → 2010-07-28 (+40d) | 1d? → 1d | 0d → 4d |  |  |
| 153 | **(ADM14) Listado sobre consultas** | 2010-06-11 → 2010-07-28 (+47d) | 2010-06-11 → 2010-07-28 (+47d) | 1d? → 1d | 5d → 4d |  |  |
| 154 | Módulo de obtención de listados de consulta por ciudadano | 2010-06-11 → 2010-07-28 (+47d) | 2010-06-11 → 2010-07-28 (+47d) | 1d? → 1d | 5d → 4d |  |  |
| 155 | Módulo de obtención de listados de consultas con cierre principal | 2010-06-11 → 2010-07-28 (+47d) | 2010-06-11 → 2010-07-28 (+47d) | 1d? → 1d | 5d → 4d |  |  |
| 156 | Módulo de obtención de listados de consulta con cierre secundario | 2010-06-11 → 2010-07-28 (+47d) | 2010-06-11 → 2010-07-28 (+47d) | 1d? → 1d | 5d → 4d |  |  |
| 157 | Módulo de obtención de listados de consulta por motivo de cierre | 2010-06-11 → 2010-07-28 (+47d) | 2010-06-11 → 2010-07-28 (+47d) | 1d? → 1d | 5d → 4d |  |  |
| 158 | Módulo de obtención de listado de resumen de consultas por servicio | 2010-06-11 → 2010-07-28 (+47d) | 2010-06-11 → 2010-07-28 (+47d) | 1d? → 1d | 5d → 4d |  |  |
| 159 | Módulo de obtención de listado de consultas por área geográfica | 2010-06-11 → 2010-07-28 (+47d) | 2010-06-11 → 2010-07-28 (+47d) | 1d? → 1d | 5d → 4d |  |  |
| 160 | Módulo de obtención de listado de consultas por usuario | 2010-06-11 → 2010-07-28 (+47d) | 2010-06-11 → 2010-07-28 (+47d) | 1d? → 1d | 5d → 4d |  |  |
| 161 | Módulo de obtención de listado de consultas pendientes | 2010-06-11 → 2010-07-28 (+47d) | 2010-06-11 → 2010-07-28 (+47d) | 1d? → 1d | 5d → 4d |  |  |
| 162 | **(ADM15) Mantener Asignaciones TSI** | 2010-06-15 → 2010-07-26 (+41d) | 2010-06-15 → 2010-07-30 (+45d) | 1d? → 5d | 3d → 2d |  |  |
| 163 | **Módulo de envío de datos a CatSalut** | 2010-06-15 → 2010-07-26 (+41d) | 2010-06-15 → 2010-07-30 (+45d) | 1d? → 5d | 3d → 2d |  |  |
| 164 | Recolección de datos de operaciones TSI pendientes | 2010-06-15 → 2010-07-26 (+41d) | 2010-06-15 → 2010-07-26 (+41d) | 1d? → 1d | 3d → 6d |  |  |
| 165 | Migración de los datos a archivo TXT | 2010-06-15 → 2010-07-26 (+41d) | 2010-06-15 → 2010-07-27 (+42d) | 1d? → 2d | 3d → 5d |  |  |
| 166 | Interface de comunicación con CatSalut | 2010-06-15 → 2010-07-26 (+41d) | 2010-06-15 → 2010-07-30 (+45d) | 1d? → 5d | 3d → 2d |  |  |
| 167 | **(ADM16) Asignar documentos a acciones** | 2010-06-18 → 2010-07-22 (+34d) | 2010-06-18 → 2010-07-22 (+34d) | 1d? → 1d | 0d → 8d |  |  |
| 168 | Creación/eliminación de asociaciones | 2010-06-18 → 2010-07-22 (+34d) | 2010-06-18 → 2010-07-22 (+34d) | 1d? → 1d | 0d → 8d |  |  |
| 169 | Cadicidad de asociaciones | 2010-06-18 → 2010-07-22 (+34d) | 2010-06-18 → 2010-07-22 (+34d) | 1d? → 1d | 0d → 8d |  |  |
| 170 | **(INT01) Direcciones de farmacias, CAP y otra informacion breve** | 2010-06-15 → 2010-07-26 (+41d) | 2010-06-15 → 2010-07-27 (+42d) | 1d? → 2d | 2d → 0d |  |  |
| 171 | Trabajo con listas de resultados | 2010-06-15 → 2010-07-26 (+41d) | 2010-06-15 → 2010-07-27 (+42d) | 1d? → 2d | 2d → 0d |  |  |
| 172 | **(SIS01) Trazabilidad y registro de uso** | 2010-06-10 → 2010-07-07 (+27d) | 2010-06-16 → 2010-07-20 (+34d) | 5d? → 10d | 2d → 10d |  | resources none → Programador Sr 1; Programador Sr 2 |
| 173 | Control Acceso a Consultas | 2010-06-11 → 2010-07-12 (+31d) | 2010-06-11 → 2010-07-15 (+34d) | 1d? → 2d | 5d → 13d |  | resources none → Programador Sr 1; Programador Sr 2 |
| 174 | Control Acceso a Encuestas | 2010-06-10 → 2010-07-07 (+27d) | 2010-06-10 → 2010-07-08 (+28d) | 1d? → 2d | 6d → 18d |  | resources none → Programador Sr 1; Programador Sr 2 |
| 175 | Control General Acceso al Sistema | 2010-06-11 → 2010-07-08 (+27d) | 2010-06-11 → 2010-07-09 (+28d) | 1d? → 2d | 5d → 17d |  | resources none → Programador Sr 1; Programador Sr 2 |
| 176 | Control Acceso a Campañas de Seguimiento | 2010-06-16 → 2010-07-19 (+33d) | 2010-06-16 → 2010-07-20 (+34d) | 1d? → 2d | 2d → 10d |  | resources none → Programador Sr 1; Programador Sr 2 |
| 177 | Control Acceso a Documentos | 2010-06-14 → 2010-07-13 (+29d) | 2010-06-14 → 2010-07-14 (+30d) | 1d? → 2d | 4d → 14d |  | resources none → Programador Sr 1; Programador Sr 2 |
| 178 | Control Acceso a Recursos Internos | 2010-06-10 → 2010-07-07 (+27d) | 2010-06-10 → 2010-07-08 (+28d) | 1d? → 2d | 6d → 18d |  | resources none → Programador Sr 1; Programador Sr 2 |
| 179 | Historial de Consultas | 2010-06-10 → 2010-07-07 (+27d) | 2010-06-10 → 2010-07-07 (+27d) | 1d? → 1d | 6d → 19d |  | resources none → Programador Sr 1; Programador Sr 2 |
| 180 | **(ISC01) Transferir info, comunicacion a STARS** | 2010-06-10 → 2010-07-19 (+39d) | 2010-06-10 → 2010-07-23 (+43d) | 1d? → 5d | 6d → 7d |  | resources none → Programador Sr 1; Programador Sr 2 |
| 181 | Recibir información del sistema de comunicaciones | 2010-06-10 → 2010-07-19 (+39d) | 2010-06-10 → 2010-07-23 (+43d) | 1d? → 3d | 6d → 7d |  | resources none → Programador Sr 1; Programador Sr 2 |
| 182 | **(ISC02) Iniciar llamada desde STARS** | 2010-06-10 → 2010-07-26 (+46d) | 2010-06-10 → 2010-07-28 (+48d) | 1d? → 3d | 6d → 4d |  | resources none → Programador Sr 1; Programador Sr 2 |
| 183 | Lanzamiento de petición de comunicación | 2010-06-10 → 2010-07-26 (+46d) | 2010-06-10 → 2010-07-28 (+48d) | 1d? → 3d | 6d → 4d |  | resources none → Programador Sr 1; Programador Sr 2 |
| 184 | **(ISC03) Informacion encuesta** | 2010-06-04 → 2010-07-01 (+27d) | 2010-06-04 → 2010-07-01 (+27d) | 1d? → 1d | 10d → 23d |  |  |
| 185 | Activación actividad de encuesta | 2010-06-04 → 2010-07-01 (+27d) | 2010-06-04 → 2010-07-01 (+27d) | 1d? → 1d | 10d → 23d |  |  |
| 186 | ABM Consultas | 2010-06-11 → 2010-07-23 (+42d) | 2010-06-11 → 2010-07-23 (+42d) | 1d? → 1d | 5d → 7d |  | resources none → Programador Jr 1; Programador Jr 2 |
| 187 | ABM Usuarios | 2010-06-11 → 2010-07-12 (+31d) | 2010-06-11 → 2010-07-12 (+31d) | 1d? → 1d | 4d → 13d |  | resources none → Programador Jr 1; Programador Jr 2 |
| 188 | Proteccion de Acceso | 2010-06-14 → 2010-07-13 (+29d) | 2010-06-14 → 2010-07-15 (+31d) | 1d? → 3d | 4d → 13d |  | resources none → Programador Sr 1; Programador Sr 2 |
| 189 | ABM Fichas / Guias / Recursos | 2010-06-15 → 2010-07-15 (+30d) | 2010-06-15 → 2010-07-19 (+34d) | 1d? → 3d | 3d → 11d |  | resources none → Programador Jr 1; Programador Jr 2 |
| 190 | ABM Cuestionarios | 2010-06-04 → 2010-07-01 (+27d) | 2010-06-04 → 2010-07-01 (+27d) | 1d? → 1d | 10d → 23d |  | resources none → Programador Jr 1; Programador Jr 2 |
| 191 | Interfaz General | 2010-06-10 → 2010-07-07 (+27d) | 2010-06-10 → 2010-07-20 (+40d) | 1d? → 10d | 6d → 10d |  |  |
| 192 | Interfaz Para Usuario Avanzado | 2010-06-04 → 2010-07-26 (+52d) | 2010-06-04 → 2010-07-30 (+56d) | 1d? → 5d | 10d → 2d |  |  |
| 193 | Interfaz de Listados para ADM02 | 2010-06-07 → 2010-07-28 (+51d) | 2010-06-07 → 2010-08-03 (+57d) | 1d? → 5d | 9d → 0d |  |  |
| 194 | Interfaz Mantenimiento Usuarios y Perfiles | 2010-06-11 → 2010-07-08 (+27d) | 2010-06-11 → 2010-07-14 (+33d) | 1d? → 5d | 5d → 14d |  |  |
| 195 | Interfaz Direcciones INT01 | 2010-06-16 → 2010-07-28 (+42d) | 2010-06-16 → 2010-08-03 (+48d) | 1d? → 5d | 2d → 0d |  |  |
| 196 | ABM Enfermedades / Centros Salud | 2010-06-16 → 2010-07-28 (+42d) | 2010-06-16 → 2010-07-29 (+43d) | 1d? → 2d | 2d → 3d |  | resources none → Programador Jr 1; Programador Jr 2 |
| 197 | Listado de Usuarios y Perfiles | 2010-06-11 → 2010-08-02 (+52d) | 2010-06-11 → 2010-08-02 (+52d) | 1d? → 1d | 5d → 1d |  | resources none → Programador Jr 1; Programador Jr 2 |
| 198 | Interface con sistema de comunicaciones (ISC01, ISC02, ISC03) | 2010-06-10 → 2010-07-07 (+27d) | 2010-06-10 → 2010-07-13 (+33d) | 1d? → 5d | 6d → 15d |  | resources none → Programador Sr 1; Programador Sr 2 |
| 200 | Arquitectura General / Configuracion Ambientes | 2010-05-13 → 2010-06-09 (+27d) | 2010-06-02 → 2010-06-29 (+27d) |  |  |  | resources none → Arquitecto |
| 201 | **Tareas IT Sobre Nuestra Empresa** |  | 2010-05-12 → 2010-06-08 (+27d) | 5d → 24d | 0d → 2d |  | resources none → IT 1 |
| 202 | Compra Equipos Necesarios |  | 2010-05-10 → 2010-05-07 (-3d) | 3d → 1.5d | 2d → 25d |  | constraint none → start no earlier than 2010-05-06; resources none → Programador Jr 1; Programador Jr 2 |
| 203 | **Infraestructura** | 2010-05-06 → 2010-05-10 (+4d) | 2010-05-12 → 2010-05-17 (+5d) | 5d → 6d | 0d → none |  | resources none → IT 1 |
| 204 | Preparacion de Ambientes en servidores | 2010-05-06 → 2010-05-17 (+11d) | 2010-05-06 → 2010-05-17 (+11d) |  | 4d → 0d |  | resources none → IT 1 |
| 205 | Instalacion y Configuracion de Servidor DEV | 2010-05-06 → 2010-05-11 (+5d) | 2010-05-10 → 2010-05-14 (+4d) |  | 2d → 1d |  | resources none → IT 1 |
| 206 | Instalacion y Configuracion de Servidores de Usos Multiples | 2010-05-06 → 2010-05-13 (+7d) | 2010-05-12 → 2010-05-24 (+12d) |  | 0d → -5d |  | resources none → IT 1 |
| 207 | **Redes** | 2010-05-06 → 2010-05-25 (+19d) | 2010-05-10 → 2010-06-03 (+24d) | 3d → 8d | 2d → none | none → 203 | resources none → IT 1 |
| 208 | Configuracion del FW | 2010-05-06 → 2010-06-04 (+29d) | 2010-05-10 → 2010-06-08 (+29d) |  | 2d → 40d |  | constraint none → start no earlier than 2010-06-04; resources none → IT 1 |
| 209 | Instalacion de pcs nuevos usuarios | 2010-05-06 → 2010-05-07 (+1d) | 2010-05-12 → 2010-05-11 (-1d) | 5d → 2.5d | 0d → 20d | none → 202 | constraint none → start no earlier than 2010-05-07; resources none → Programador Jr 1; Programador Jr 2 |

## Version 3 (saved 2010-09-01, file Casos Uso Lole Con Recursos 2010 Version Previa.mpp)

Note of the change: version mas actual

Last finish 2010-08-03 → 2010-09-01 (+29d).

Changed:

| ID | Task | Start | Finish | Duration | Total float | Other |
| --- | --- | --- | --- | --- | --- | --- |
| 1 | Integracion con el Sistema STARS (Lectura Datos) | 2010-06-30 → 2010-06-02 (-28d) | 2010-07-06 → 2010-06-07 (-29d) | 5d → 4d | 2d → 18d | resources Programador Sr 1 → Programador Sr 1; Programador Sr 2 |
| 2 | Modulo Seguridad que Oculta Info Llamado | 2010-07-07 → 2010-06-08 (-29d) | 2010-07-09 → 2010-06-09 (-30d) | 3d → 1.5d | 17d → 36.5d | resources Programador Sr 2 → Programador Sr 2; Programador Sr 1 |
| 3 | **(GEN01) Identificacion y Autenticacion** | 2010-07-07 → 2010-06-08 (-29d) | 2010-07-09 → 2010-06-10 (-29d) |  | 11d → 54d |  |
| 4 | Autenticacion | 2010-07-07 → 2010-06-08 (-29d) | 2010-07-07 → 2010-06-09 (-28d) | 1d → 2d | 13d → 29d | resources none → Prog SSr 1 |
| 5 | Interfaz Inicio Sesion | 2010-07-07 → 2010-06-08 (-29d) | 2010-07-09 → 2010-06-10 (-29d) |  | 11d → 28d | resources none → Prog SSr 2 |
| 6 | **(GEN02) Gestion General de Registros** | 2010-07-07 → 2010-06-09 (-28d) | 2010-07-20 → 2010-06-17 (-33d) | 10d → 6.5d | 10d → 54d | resources Programador Jr 1; Programador Jr 2 → none |
| 7 | ABM Registro | 2010-07-19 → 2010-06-10 (-39d) | 2010-07-19 → 2010-06-14 (-35d) |  | 11d → 57.5d | constraint none → finish no earlier than 2010-06-10; resources Programador Jr 1; Programador Jr 2 → Programador Jr 1 |
| 8 | Buscar registro | 2010-07-19 → 2010-06-11 (-38d) | 2010-07-19 → 2010-06-11 (-38d) |  | 11d → 58d | constraint none → start no earlier than 2010-06-09; resources Programador Jr 1; Programador Jr 2 → Programador Jr 1 |
| 9 | Copiar registro | 2010-07-20 → 2010-06-09 (-41d) | 2010-07-20 → 2010-06-10 (-40d) |  | 10d → 59.5d | constraint none → start no earlier than 2010-06-09; resources Programador Jr 1; Programador Jr 2 → Programador Jr 1 |
| 10 | Interfaz ABM Registro | 2010-07-07 → 2010-06-15 (-22d) | 2010-07-09 → 2010-06-17 (-22d) |  | 17d → 30d | resources Programador Jr 1; Programador Jr 2 → Prog SSr 2 |
| 11 | **(USR01) Determinacion del servicio de atencion** | 2010-07-13 → 2010-07-29 (+16d) | 2010-07-14 → 2010-08-02 (+19d) | 2d → 3d | 7d → 15d |  |
| 12 | Capturar la Comunicación???? | 2010-07-13 → 2010-07-29 (+16d) | 2010-07-14 → 2010-07-29 (+15d) | 2d → 1d | 7d → 17d | constraint none → start no earlier than 2010-07-28; resources none → Programador Jr 1 |
| 13 | Determinar el tipo de servicio | 2010-07-13 → 2010-07-30 (+17d) | 2010-07-13 → 2010-07-30 (+17d) |  | 8d → 16d | constraint none → start no earlier than 2010-07-30; resources none → Programador Jr 1 |
| 14 | Lista de Espera | 2010-07-13 → 2010-08-02 (+20d) | 2010-07-13 → 2010-08-02 (+20d) |  | 8d → 15d | constraint none → start no earlier than 2010-08-02; resources none → Programador Jr 1 |
| 15 | Determinar conjunto de operadores adecuados al tipo de solicitud | 2010-07-13 → 2010-07-29 (+16d) | 2010-07-13 → 2010-07-29 (+16d) |  | 8d → 17d | constraint none → start no earlier than 2010-07-28; resources none → Programador Jr 2 |
| 16 | **(USR02) Agenda** | 2010-07-12 → 2010-06-23 (-19d) | 2010-07-15 → 2010-07-22 (+7d) | 4d → 22d | 10d → 27d | resources Programador Jr 1; Programador Jr 2 → none |
| 17 | Selección de una agenda | 2010-07-15 → 2010-07-02 (-13d) | 2010-07-15 → 2010-07-02 (-13d) | 0.5d → 1d | 10d → 41d | constraint none → start no earlier than 2010-07-02; resources Programador Jr 1; Programador Jr 2 → Programador Jr 1 |
| 18 | ABM citas sobre la agenda | 2010-07-13 → 2010-06-30 (-13d) | 2010-07-13 → 2010-07-01 (-12d) |  | 12d → 42.5d | constraint start no earlier than 2010-06-16 → start no earlier than 2010-06-30; resources Programador Jr 1; Programador Jr 2 → Programador Jr 1 |
| 19 | Interfaz de la Agenda | 2010-07-12 → 2010-06-24 (-18d) | 2010-07-15 → 2010-06-25 (-20d) |  | 10.5d → 46d | resources Programador Jr 1; Programador Jr 2 → Programador Jr 2 |
| 20 | Integracion con Stars - Llamada desde Agenda | 2010-07-13 → 2010-07-14 (+1d) | 2010-07-15 → 2010-07-22 (+7d) | 3d → 6d | 10d → 27d | constraint none → start no earlier than 2010-07-14; resources Programador Sr 2; Programador Sr 1 → Prog SSr 1; Prog SSr 2 |
| 21 | Asignar pacientes a cita | 2010-07-12 → 2010-06-23 (-19d) | 2010-07-12 → 2010-06-23 (-19d) | 0.5d → 1d | 13.5d → 48d | resources Programador Jr 1; Programador Jr 2 → Programador Jr 2 |
| 22 | (USR03) Rellamada |  | 2010-07-21 → 2010-07-22 (+1d) | 1d → 2d | 9d → 28d | constraint none → start no earlier than 2010-07-21; resources Programador Jr 1; Programador Jr 2 → Prog SSr 2 |
| 23 | **(USR04) Consulta** | 2010-07-07 → 2010-06-08 (-29d) | 2010-07-08 → 2010-06-14 (-24d) | 2d → 5d | 7d → 23d |  |
| 24 | **Tratar Consulta** | 2010-07-07 → 2010-06-08 (-29d) | 2010-07-07 → 2010-06-08 (-29d) |  | 8.5d → 27.5d |  |
| 25 | Ajornar Consulta | 2010-07-07 → 2010-06-08 (-29d) | 2010-07-07 → 2010-06-08 (-29d) |  | 8.5d → 25.5d | resources none → Programador Jr 1 |
| 26 | Transferir consulta | 2010-07-07 → 2010-06-08 (-29d) | 2010-07-07 → 2010-06-08 (-29d) |  | 8.5d → 25.5d | resources none → Programador Jr 2 |
| 27 | Modulo Envio de Correo | 2010-07-07 → 2010-06-10 (-27d) | 2010-07-08 → 2010-06-11 (-27d) |  | 7d → 21d | resources none → Prog SSr 1 |
| 28 | Modulo Envio SMS | 2010-07-07 → 2010-06-11 (-26d) | 2010-07-08 → 2010-06-14 (-24d) |  | 7d → 20d | resources none → Prog SSr 2 |
| 29 | Inclusion en Campaña de Seguimiento | 2010-07-07 → 2010-06-08 (-29d) | 2010-07-07 → 2010-06-09 (-28d) |  | 8d → 24.5d | resources none → Programador Jr 1 |
| 30 | (USR05) Consejo Salud | 2010-07-13 → 2010-07-19 (+6d) | 2010-07-13 → 2010-07-20 (+7d) | 1d → 2d | 15d → 18.5d | resources none → Prog SSr 1 |
| 31 | **(USR06) Gestionar Consulta pendiente** | 2010-07-09 → 2010-07-19 (+10d) | 2010-07-09 → 2010-07-19 (+10d) |  | 8d → 24d |  |
| 32 | Priorizacion de la Lista de Consultas | 2010-07-09 → 2010-07-19 (+10d) | 2010-07-09 → 2010-07-19 (+10d) |  | 8d → 3.5d | resources none → Prog SSr 2 |
| 33 | **(USR07) Programacion de cita previa** | 2010-07-13 → 2010-08-31 (+49d) | 2010-07-13 → 2010-09-01 (+50d) | 1d → 2d | 15d → 0d |  |
| 34 | Realizar Citación (Interface con Sistema de citación AP) | 2010-07-13 → 2010-08-31 (+49d) | 2010-07-13 → 2010-09-01 (+50d) | 1d → 2d | 15d → 0d | resources none → Prog SSr 1 |
| 35 | **(USR08) Gestiones sobre la TSI** | 2010-07-13 → 2010-08-05 (+23d) | 2010-07-13 → 2010-08-16 (+34d) | 0.5d → 7.5d | 10.5d → -18.5d |  |
| 36 | Verificacion Documentacion Necesaria | 2010-07-13 → 2010-08-05 (+23d) | 2010-07-13 → 2010-08-05 (+23d) | 0.5d → 1d | 10.5d → -12d | constraint none → start no earlier than 2010-06-29; resources none → Programador Jr 1 |
| 37 | Enviar Gestion (Interface con sistema RCA) | 2010-07-13 → 2010-08-11 (+29d) | 2010-07-13 → 2010-08-11 (+29d) | 0.5d → 1d | 10.5d → -16d | constraint none → start no earlier than 2010-08-11; resources none → Programador Jr 1 |
| 38 | Cierre automatico de la consulta por paso de tiempo | 2010-07-13 → 2010-08-10 (+28d) | 2010-07-13 → 2010-08-10 (+28d) | 0.5d → 1d | 10.5d → -15d | constraint none → start no earlier than 2010-08-10; resources none → Programador Jr 1 |
| 39 | Guardar LOG gestion TSI????? | 2010-07-13 → 2010-08-13 (+31d) | 2010-07-13 → 2010-08-16 (+34d) | 0.5d → 1d | 10.5d → -18.5d | resources none → Programador Jr 1 |
| 40 | **(USR09) Servicio de traduccion** | 2010-07-12 → 2010-06-29 (-13d) | 2010-07-13 → 2010-07-08 (-5d) | 2d → 7.5d | 15d → 39d |  |
| 41 | Contactar Servicio Externo de Traduccion | 2010-07-12 → 2010-07-05 (-7d) | 2010-07-12 → 2010-07-06 (-6d) | 1d → 2d | 16d → 41d | constraint none → start no earlier than 2010-07-05; resources none → Programador Sr 2 |
| 42 | Enlace Comunicacion Multiconferencia | 2010-07-12 → 2010-06-29 (-13d) | 2010-07-13 → 2010-07-02 (-11d) | 2d → 3d | 15d → 43.5d | constraint none → start no earlier than 2010-06-29; resources none → Programador Sr 2 |
| 43 | Modulo monitorización de servicio | 2010-07-12 → 2010-07-07 (-5d) | 2010-07-13 → 2010-07-08 (-5d) |  | 15d → 39d | constraint none → start no earlier than 2010-07-07; resources none → Programador Sr 2 |
| 44 | **(USR10) Informacion Sanitaria General** | 2010-07-28 → 2010-08-05 (+8d) | 2010-07-28 → 2010-08-05 (+8d) |  | 4d → 19d |  |
| 45 | Guardar Informacion Ciudadano | 2010-07-28 → 2010-08-05 (+8d) | 2010-07-28 → 2010-08-05 (+8d) |  | 4d → 19d | resources none → Programador Jr 2 |
| 46 | **(USR11) Seguimiento de Patologias** | 2010-07-16 → 2010-07-23 (+7d) | 2010-07-16 → 2010-08-02 (+17d) | 1d → 7d | 10d → 22d |  |
| 47 | Buscar Campañas Abiertas | 2010-07-16 → 2010-07-28 (+12d) | 2010-07-16 → 2010-07-28 (+12d) | 0.5d → 1d | 10.5d → 25d | constraint none → start no earlier than 2010-07-28; resources none → Programador Jr 2 |
| 48 | **Gestionar Seguimiento** | 2010-07-16 → 2010-07-23 (+7d) | 2010-07-16 → 2010-08-02 (+17d) | 0.5d → 7d | 10.5d → 22d |  |
| 49 | Visualizar Historial Pacientes | 2010-07-16 → 2010-07-23 (+7d) | 2010-07-16 → 2010-07-26 (+10d) | 0.5d → 2d | 10.5d → 27d | constraint none → start no earlier than 2010-07-19; resources none → Programador Jr 2 |
| 50 | Llamada al Paciente | 2010-07-16 → 2010-08-02 (+17d) | 2010-07-16 → 2010-08-02 (+17d) | 0.5d → 1d | 10.5d → 22d | constraint none → start no earlier than 2010-08-02; resources none → Programador Jr 2 |
| 51 | Desligar paciente de campaña | 2010-07-16 → 2010-07-27 (+11d) | 2010-07-16 → 2010-07-27 (+11d) |  | 10d → 26d | constraint none → start no earlier than 2010-07-27; resources none → Programador Jr 2 |
| 52 | **(USR12) Encuestas** | 2010-07-01 → 2010-06-07 (-24d) | 2010-07-05 → 2010-07-20 (+15d) | 3d → 32d | 19d → 31d |  |
| 53 | Interfaz de Encuestas | 2010-07-01 → 2010-06-24 (-7d) | 2010-07-05 → 2010-06-29 (-6d) |  | 19d → 46.5d | constraint none → start no earlier than 2010-06-07; resources none → Programador Jr 1 |
| 54 | Contacto con Encuestado | 2010-07-01 → 2010-06-07 (-24d) | 2010-07-01 → 2010-07-20 (+19d) | 1d → 2d | 21d → 10d | resources none → Prog SSr 2 |
| 55 | ABM Formulario De Encuesta | 2010-07-05 → 2010-06-07 (-28d) | 2010-07-05 → 2010-06-07 (-28d) |  | 19d → 62d | resources Programador Jr 1; Programador Jr 2 → Programador Jr 2 |
| 56 | **(USR13) Buscar Consultas** | 2010-07-12 → 2010-06-28 (-14d) | 2010-07-12 → 2010-07-05 (-7d) | 1d → 6d | 9d → 40d |  |
| 57 | **Operativo de Busqueda** | 2010-07-12 → 2010-06-28 (-14d) | 2010-07-12 → 2010-07-05 (-7d) | 1d → 6d | 9d → 40d |  |
| 58 | Buscar según distintos criterios | 2010-07-12 → 2010-06-28 (-14d) | 2010-07-12 → 2010-06-30 (-12d) | 1d → 3d | 9d → 43d | resources none → Programador Jr 2 |
| 59 | Filtrar resultados de la busqueda según permisos del usuario | 2010-07-12 → 2010-07-01 (-11d) | 2010-07-12 → 2010-07-01 (-11d) | 0.5d → 1d | 9.5d → 42d | resources none → Programador Jr 2 |
| 60 | Acotar resultados si los mismos sobrepasan el parametro configurable "n" | 2010-07-12 → 2010-07-05 (-7d) | 2010-07-12 → 2010-07-05 (-7d) | 0.5d → 1d | 9.5d → 40d | resources none → Programador Jr 2 |
| 61 | **(USR14) Hacer Uso de Documentos** | 2010-07-09 → 2010-07-05 (-4d) | 2010-07-12 → 2010-07-16 (+4d) | 2d → 9d | 8d → 11d |  |
| 62 | Creación y uso de Guias Interrogatorio | 2010-07-09 → 2010-07-05 (-4d) | 2010-07-12 → 2010-07-07 (-5d) |  | 8d → 18d | resources none → Programador Jr 1 |
| 63 | Creación y uso Fichas Tematicas | 2010-07-09 → 2010-07-07 (-2d) | 2010-07-12 → 2010-07-09 (-3d) |  | 8d → 16d | resources none → Programador Jr 1 |
| 64 | Creación y uso de Recursos |  | 2010-07-12 → 2010-07-13 (+1d) |  | 8d → 14d | resources none → Programador Jr 1 |
| 65 | Búsqueda y selección de documentos | 2010-07-09 → 2010-07-13 (+4d) | 2010-07-12 → 2010-07-15 (+3d) |  | 8d → 12d | resources none → Programador Jr 1 |
| 66 | Apertura documentos | 2010-07-09 → 2010-07-15 (+6d) | 2010-07-09 → 2010-07-16 (+7d) |  | 9d → 11d | resources none → Programador Jr 1 |
| 67 | **(USR15) Cerrar consulta y dar respuesta al ciudadano** | 2010-07-09 → 2010-06-15 (-24d) | 2010-07-09 → 2010-06-25 (-14d) | 1d → 8.5d | 11.5d → 16.5d |  |
| 68 | Clasificar Finalizacion de Consulta | 2010-07-09 → 2010-06-15 (-24d) | 2010-07-09 → 2010-06-16 (-23d) | 0.5d → 2d | 12d → 21d | resources none → Prog SSr 1 |
| 69 | Adición de motivo de cierre a la consulta | 2010-07-09 → 2010-06-15 (-24d) | 2010-07-09 → 2010-06-16 (-23d) | 0.5d → 1d | 12d → 21.5d | resources none → Programador Jr 2 |
| 70 | Creación de clasificaciones ad-hoc | 2010-07-09 → 2010-06-24 (-15d) | 2010-07-09 → 2010-06-25 (-14d) |  | 11.5d → 14.5d | constraint none → start no earlier than 2010-06-24; resources none → Programador Sr 1 |

| ID | Task | Start | Finish | Duration | Total float | Other |
| --- | --- | --- | --- | --- | --- | --- |
| 71 | **(USR16) Visualizar Consulta** | 2010-07-09 → 2010-06-16 (-23d) | 2010-07-09 → 2010-06-22 (-17d) | 1d → 4.5d | 9d → 46d |  |
| 72 | Mostrar datos generales de la consulta | 2010-07-09 → 2010-06-21 (-18d) | 2010-07-09 → 2010-06-22 (-17d) | 1d → 2d | 9d → 46d | constraint none → start no earlier than 2010-06-21; resources none → Programador Jr 2 |
| 73 | Mostrar datos según el documento elegido | 2010-07-09 → 2010-06-16 (-23d) | 2010-07-09 → 2010-06-18 (-21d) | 1d → 2d | 9d → 48.5d | constraint none → start no earlier than 2010-06-16; resources none → Programador Jr 2 |
| 74 | **(USR17) Crear/Transferir Consulta** | 2010-07-09 → 2010-07-23 (+14d) | 2010-07-12 → 2010-07-28 (+16d) | 2d → 4d | 7d → -7d |  |
| 75 | Crear Consulta | 2010-07-09 → 2010-07-23 (+14d) | 2010-07-12 → 2010-07-26 (+14d) |  | 7d → -7d | constraint none → start no earlier than 2010-07-23; resources none → Prog SSr 1 |
| 76 | Copiar consulta | 2010-07-09 → 2010-07-27 (+18d) | 2010-07-09 → 2010-07-27 (+18d) |  | 8d → -8d | constraint none → start no earlier than 2010-07-27; resources none → Prog SSr 1 |
| 77 | **Transferir Consulta** | 2010-07-09 → 2010-07-28 (+19d) | 2010-07-09 → 2010-07-28 (+19d) |  | 8d → -7d |  |
| 78 | Localizar a otro operador del mismo perfil | 2010-07-09 → 2010-07-28 (+19d) | 2010-07-09 → 2010-07-28 (+19d) |  | 8d → -9d | constraint none → start no earlier than 2010-07-28; resources none → Prog SSr 1 |
| 79 | **(ADM01) Mantenimiento del Entorno, clasif y prioridades** | 2010-06-30 → 2010-06-02 (-28d) | 2010-07-23 → 2010-06-23 (-30d) | 18d → 15.5d | 0d → 19.5d |  |
| 80 | Módulo de edición de parametros grales de la aplicación | 2010-06-30 → 2010-06-11 (-19d) | 2010-07-23 → 2010-06-23 (-30d) | 6d → 4d | 0d → 19.5d | resources Programador Sr 1; Programador Sr 2 → Programador Sr 2 |
| 81 | Módulo edición listas de clasificaciones (Códigos internos) | 2010-06-30 → 2010-06-10 (-20d) | 2010-07-02 → 2010-06-15 (-17d) |  | 15d → 25.5d | resources none → Programador Sr 1 |
| 82 | **Módulo mantenimiento de la lista de espera** | 2010-06-30 → 2010-06-04 (-26d) | 2010-07-05 → 2010-06-07 (-28d) | 4d → 2d | 14d → 31d |  |
| 83 | ABM de la lista de espera | 2010-07-05 → 2010-06-07 (-28d) | 2010-07-05 → 2010-06-07 (-28d) |  | 14d → 31d | resources Programador Jr 1; Programador Jr 2 → Programador Jr 1 |
| 84 | Módulo de gestión de prioridades sobre la lista de espera | 2010-06-30 → 2010-06-04 (-26d) | 2010-06-30 → 2010-06-04 (-26d) |  | 17d → 32d | resources none → Prog SSr 2 |
| 85 | **Módulo mantenimiento de lineas de servicio** | 2010-06-30 → 2010-06-02 (-28d) | 2010-07-06 → 2010-06-03 (-33d) | 5d → 2d | 13d → 33d |  |
| 86 | ABM lineas de servicio | 2010-07-06 → 2010-06-02 (-34d) | 2010-07-06 → 2010-06-02 (-34d) |  | 13d → 34d | resources Programador Jr 1; Programador Jr 2 → Programador Jr 2 |
| 87 | ABM servicios para una linea seleccionada | 2010-06-30 → 2010-06-03 (-27d) | 2010-06-30 → 2010-06-03 (-27d) |  | 17d → 33d | resources Programador Jr 1; Programador Jr 2 → Programador Jr 2 |
| 88 | **Módulo mantenimiento agendas** | 2010-06-30 → 2010-06-02 (-28d) | 2010-07-22 → 2010-06-22 (-30d) | 17d → 14.5d | 1d → 20.5d |  |
| 89 | Asignar operadores a agenda | 2010-06-30 → 2010-06-04 (-26d) | 2010-06-30 → 2010-06-04 (-26d) |  | 17d → 32d | resources none → Prog SSr 1 |
| 90 | ABM de usuarios de la agenda | 2010-07-22 → 2010-06-21 (-31d) | 2010-07-22 → 2010-06-22 (-30d) |  | 1d → 20.5d | constraint none → start no earlier than 2010-06-21; resources Programador Jr 1; Programador Jr 2 → Programador Jr 1 |
| 91 | ABM citas de la agenda | 2010-06-30 → 2010-06-02 (-28d) | 2010-06-30 → 2010-06-02 (-28d) |  | 17d → 34d | resources Programador Jr 1; Programador Jr 2 → Programador Jr 1 |
| 92 | **Módulo mantenimiento BBDD** | 2010-06-30 → 2010-06-09 (-21d) | 2010-07-01 → 2010-06-11 (-20d) |  | 16d → 27.5d |  |
| 93 | Módulo comprobación de formato de archivo | 2010-06-30 → 2010-06-09 (-21d) | 2010-06-30 → 2010-06-10 (-20d) |  | 17d → 28.5d | resources none → Programador Sr 1 |
| 94 | Módulo actualización de BBDD | 2010-06-30 → 2010-06-09 (-21d) | 2010-07-01 → 2010-06-11 (-20d) |  | 16d → 27.5d | resources none → Programador Sr 2 |
| 95 | **(ADM02) Extraccion de estadisticas y listados** | 2010-07-26 → 2010-07-01 (-25d) | 2010-07-27 → 2010-07-22 (-5d) | 2d → 16d | 0d → 24d | resources Programador Jr 1; Programador Jr 2 → none |
| 96 | Listados De Administración | 2010-07-26 → 2010-07-21 (-5d) | 2010-07-27 → 2010-07-22 (-5d) |  | 0d → 24d | resources Programador Jr 1; Programador Jr 2 → Prog SSr 1 |
| 97 | **Listados Comunes** | 2010-07-26 → 2010-07-01 (-25d) | 2010-07-26 → 2010-07-07 (-19d) | 1d → 5d | 1d → 35d |  |
| 98 | Detalle de estado de finalización consulta/acción | 2010-07-26 → 2010-07-05 (-21d) | 2010-07-26 → 2010-07-05 (-21d) |  | 1d → 16.5d | constraint none → start no earlier than 2010-07-01; resources none → Programador Sr 1 |
| 99 | Listado de clasificaciones | 2010-07-26 → 2010-07-02 (-24d) | 2010-07-26 → 2010-07-02 (-24d) |  | 1d → 17.5d | constraint none → start no earlier than 2010-07-01; resources none → Programador Sr 1 |
| 100 | Listados de incidencias en las comunicaciones | 2010-07-26 → 2010-07-06 (-20d) | 2010-07-26 → 2010-07-06 (-20d) |  | 1d → 15.5d | constraint none → start no earlier than 2010-07-01; resources none → Programador Sr 1 |
| 101 | Ratios por usuario | 2010-07-26 → 2010-07-07 (-19d) | 2010-07-26 → 2010-07-07 (-19d) |  | 1d → 14.5d | constraint none → start no earlier than 2010-07-01; resources none → Programador Sr 1 |
| 102 | Finales de servicio | 2010-07-26 → 2010-07-01 (-25d) | 2010-07-26 → 2010-07-01 (-25d) |  | 1d → 18.5d | constraint none → start no earlier than 2010-07-01; resources none → Programador Sr 1 |
| 103 | **(ADM03) Mantenimiento de documentos** | 2010-07-16 → 2010-07-23 (+7d) | 2010-07-21 → 2010-08-13 (+23d) | 4d → 15.5d | 8d → 12.5d |  |
| 104 | Creación y edición de documentos | 2010-07-20 → 2010-08-06 (+17d) | 2010-07-21 → 2010-08-13 (+23d) |  | 8d → 11.5d | resources none → Programador Sr 2 |
| 105 | Borrado de documentos | 2010-07-16 → 2010-07-28 (+12d) | 2010-07-16 → 2010-08-03 (+18d) |  | 11d → 10d | resources none → Programador Sr 2 |
| 106 | Clasificación de documentos | 2010-07-16 → 2010-07-23 (+7d) | 2010-07-16 → 2010-07-23 (+7d) |  | 11d → 26d | resources none → Programador Sr 2 |
| 107 | Búsqueda de documentos | 2010-07-16 → 2010-07-26 (+10d) | 2010-07-19 → 2010-07-28 (+9d) |  | 10d → 14d | resources none → Programador Sr 2 |
| 108 | (ADM04) Mantenimiento de Recursos | 2010-07-13 → 2010-07-16 (+3d) | 2010-07-14 → 2010-07-21 (+7d) |  | 8d → 11d | resources none → Programador Sr 2 |
| 109 | (ADM05) Mantenimiento de guias de interrogatorio | 2010-07-16 → 2010-07-27 (+11d) | 2010-07-19 → 2010-08-03 (+15d) |  | 8d → 4d | resources none → Programador Sr 2 |
| 110 | (ADM06) Mantenimiento de Fichas tematicas | 2010-07-16 → 2010-08-04 (+19d) | 2010-07-19 → 2010-08-05 (+17d) |  | 8d → 11.5d | resources none → Programador Sr 2 |
| 111 | **(ADM07) Mantenimiento de relaciones sobre guias de interrogatorio y fichas tematicas** | 2010-07-15 → 2010-07-22 (+7d) | 2010-07-15 → 2010-07-22 (+7d) |  | 8d → 11d |  |
| 112 | Adición de documentos a fichas temáticas | 2010-07-15 → 2010-07-22 (+7d) | 2010-07-15 → 2010-07-22 (+7d) |  | 8d → 11d | constraint none → start no earlier than 2010-07-06; resources none → Programador Jr 2 |
| 113 | Adición de documentos a guias de interrogatorio | 2010-07-15 → 2010-07-22 (+7d) | 2010-07-15 → 2010-07-22 (+7d) |  | 8d → 11d | constraint none → start no earlier than 2010-07-22; resources none → Programador Jr 1 |
| 114 | **(ADM08) Mantenimiento de encuestas** | 2010-07-01 → 2010-06-04 (-27d) | 2010-07-01 → 2010-06-04 (-27d) |  | 23d → 63d |  |
| 115 | **Mantenimiento Indice de Encuestas** | 2010-07-01 → 2010-06-04 (-27d) | 2010-07-01 → 2010-06-04 (-27d) |  | 23d → 63d |  |
| 116 | Mantener Ediciones | 2010-07-01 → 2010-06-04 (-27d) | 2010-07-01 → 2010-06-04 (-27d) |  | 23d → 63d |  |
| 117 | Cierre de ediciones | 2010-07-01 → 2010-06-04 (-27d) | 2010-07-01 → 2010-06-04 (-27d) |  | 23d → 63d |  |
| 118 | Asignación de formulario a encuesta | 2010-07-01 → 2010-06-04 (-27d) | 2010-07-01 → 2010-06-04 (-27d) |  | 23d → 63d | constraint none → start no earlier than 2010-06-04; resources none → Programador Jr 2 |
| 119 | Asignación de operadores a encuesta | 2010-07-01 → 2010-06-04 (-27d) | 2010-07-01 → 2010-06-04 (-27d) |  | 23d → 63d | constraint none → start no earlier than 2010-06-04; resources none → Programador Jr 1 |
| 120 | **Asignación lista de encuestados** | 2010-07-01 → 2010-06-04 (-27d) | 2010-07-01 → 2010-06-04 (-27d) |  | 23d → 63d |  |
| 121 | Alta, baja de encuestados | 2010-07-01 → 2010-06-04 (-27d) | 2010-07-01 → 2010-06-04 (-27d) |  | 23d → 63d |  |
| 122 | Asignación automática en base a un archivo de texto | 2010-07-01 → 2010-06-04 (-27d) | 2010-07-01 → 2010-06-04 (-27d) |  | 23d → 63d |  |
| 123 | Publicar Encuestas | 2010-07-01 → 2010-06-04 (-27d) | 2010-07-01 → 2010-06-04 (-27d) |  | 23d → 63d |  |
| 124 | **(ADM09) Mantenimiento de seguimiento de patologias** | 2010-07-26 → 2010-06-23 (-33d) | 2010-07-26 → 2010-06-29 (-27d) | 1d → 4d | 4d → 44.5d |  |
| 125 | Mantenimiento Indice de campañas de seguimiento | 2010-07-26 → 2010-06-23 (-33d) | 2010-07-26 → 2010-06-24 (-32d) |  | 4d → 47.5d | constraint none → start no earlier than 2010-06-21; resources none → Programador Sr 1 |
| 126 | Asignación de formulario a campaña de seguimiento | 2010-07-26 → 2010-06-25 (-31d) | 2010-07-26 → 2010-06-28 (-28d) | 0.5d → 1d | 4.5d → 25d | constraint none → start no earlier than 2010-06-25; resources none → Programador Sr 1 |
| 127 | Asignación de operadores a campaña de seguimiento | 2010-07-26 → 2010-06-28 (-28d) | 2010-07-26 → 2010-06-29 (-27d) | 0.5d → 1d | 4.5d → 24d | constraint none → start no earlier than 2010-06-28; resources none → Programador Sr 1 |
| 128 | Asignación de listas de pacientes | 2010-07-26 → 2010-06-24 (-32d) | 2010-07-26 → 2010-06-25 (-31d) | 0.5d → 1d | 4.5d → 46.5d | constraint none → start no earlier than 2010-06-24; resources none → Programador Sr 2 |
| 129 | Activación/ Desactivación de campañas | 2010-07-26 → 2010-06-25 (-31d) | 2010-07-26 → 2010-06-28 (-28d) | 0.5d → 1d | 4.5d → 25d | constraint none → start no earlier than 2010-06-25; resources none → Programador Sr 2 |
| 130 | **(ADM10) Creacion de formularios de encuesta y seguimiento** | 2010-06-30 → 2010-06-02 (-28d) | 2010-06-30 → 2010-06-03 (-27d) | 1d → 2d | 19d → 32d |  |
| 131 | Mantener Indice de Encuesta | 2010-06-30 → 2010-06-02 (-28d) | 2010-06-30 → 2010-06-03 (-27d) | 1d → 2d | 19d → 35d | resources none → Prog SSr 2 |
| 132 | Crear y Editar Encuestas | 2010-06-30 → 2010-06-02 (-28d) | 2010-06-30 → 2010-06-03 (-27d) | 1d → 2d | 19d → 35d | resources none → Prog SSr 1 |
| 133 | **(ADM11) Mantenimiento de usuarios, perfiles y permisos** | 2010-07-07 → 2010-06-10 (-27d) | 2010-07-07 → 2010-06-16 (-21d) | 1d → 4d | 2d → 37.5d |  |
| 134 | Mantenimiento Opciones Funcionales | 2010-07-07 → 2010-06-14 (-23d) | 2010-07-07 → 2010-06-15 (-22d) | 1d → 2d | 2d → 38d |  |
| 135 | **Mantener Perfiles Trabajo** | 2010-07-07 → 2010-06-10 (-27d) | 2010-07-07 → 2010-06-15 (-22d) | 1d → 3d | 2d → 38.5d |  |
| 136 | Alta, modificación de perfiles | 2010-07-07 → 2010-06-14 (-23d) | 2010-07-07 → 2010-06-15 (-22d) |  | 2d → 38.5d |  |
| 137 | ABM de opciones funcionales a perfil | 2010-07-07 → 2010-06-10 (-27d) | 2010-07-07 → 2010-06-11 (-26d) |  | 2d → 40.5d |  |
| 138 | Adición de responsabilidades a opciones funcionales | 2010-07-07 → 2010-06-11 (-26d) | 2010-07-07 → 2010-06-14 (-23d) | 0.5d → 1d | 2.5d → 39.5d |  |
| 139 | **Mantener Usuarios** | 2010-07-07 → 2010-06-11 (-26d) | 2010-07-07 → 2010-06-16 (-21d) | 1d → 3d | 2d → 37.5d |  |
| 140 | Creación/gestion de usuarios | 2010-07-07 → 2010-06-11 (-26d) | 2010-07-07 → 2010-06-14 (-23d) |  | 2d → 39.5d |  |

| ID | Task | Start | Finish | Duration | Total float | Predecessors | Other |
| --- | --- | --- | --- | --- | --- | --- | --- |
| 141 | Asiganción de perfil a usuario | 2010-07-07 → 2010-06-14 (-23d) | 2010-07-07 → 2010-06-15 (-22d) | 0.5d → 1d | 2.5d → 38.5d |  |  |
| 142 | Asignación de agendas a usuario | 2010-07-07 → 2010-06-15 (-22d) | 2010-07-07 → 2010-06-16 (-21d) |  | 2d → 37.5d |  |  |
| 143 | **(ADM12) Listado de acciones proactivas** | 2010-07-28 → 2010-07-23 (-5d) | 2010-07-29 → 2010-07-26 (-3d) |  | 3d → 27d |  |  |
| 144 | Módulo de elaboraciónde informes de estado de campaña de seguimiento | 2010-07-28 → 2010-07-23 (-5d) | 2010-07-29 → 2010-07-26 (-3d) |  | 3d → 27d |  |  |
| 145 | Módulo de elaboración de informes de estado de encuesta | 2010-07-28 → 2010-07-23 (-5d) | 2010-07-29 → 2010-07-26 (-3d) |  | 3d → 27d |  |  |
| 146 | Módulo de elaboración de informes de ediciones de encuestas | 2010-07-28 → 2010-07-23 (-5d) | 2010-07-29 → 2010-07-26 (-3d) |  | 3d → 27d |  |  |
| 147 | Módulo de elaboración de listados de campañas de seguimiento | 2010-07-28 → 2010-07-23 (-5d) | 2010-07-29 → 2010-07-26 (-3d) |  | 3d → 27d |  |  |
| 148 | Módulo de elaboración de listados de información de encuestas | 2010-07-28 → 2010-07-23 (-5d) | 2010-07-29 → 2010-07-26 (-3d) |  | 3d → 27d |  |  |
| 149 | **(ADM13) Listados de documentos** | 2010-07-28 → 2010-08-13 (+16d) | 2010-07-28 → 2010-08-16 (+19d) |  | 4d → 12.5d |  |  |
| 150 | Elaboración de listado de configuración | 2010-07-28 → 2010-08-13 (+16d) | 2010-07-28 → 2010-08-16 (+19d) |  | 4d → 12.5d |  |  |
| 151 | Elaboración de listado de uso | 2010-07-28 → 2010-08-13 (+16d) | 2010-07-28 → 2010-08-16 (+19d) |  | 4d → 12.5d |  |  |
| 152 | Elaboración de listado de asociaciones | 2010-07-28 → 2010-08-13 (+16d) | 2010-07-28 → 2010-08-16 (+19d) |  | 4d → 12.5d |  |  |
| 153 | **(ADM14) Listado sobre consultas** | 2010-07-28 → 2010-07-23 (-5d) | 2010-07-28 → 2010-07-23 (-5d) |  | 4d → 28d |  |  |
| 154 | Módulo de obtención de listados de consulta por ciudadano | 2010-07-28 → 2010-07-23 (-5d) | 2010-07-28 → 2010-07-23 (-5d) |  | 4d → 28d |  |  |
| 155 | Módulo de obtención de listados de consultas con cierre principal | 2010-07-28 → 2010-07-23 (-5d) | 2010-07-28 → 2010-07-23 (-5d) |  | 4d → 28d |  |  |
| 156 | Módulo de obtención de listados de consulta con cierre secundario | 2010-07-28 → 2010-07-23 (-5d) | 2010-07-28 → 2010-07-23 (-5d) |  | 4d → 28d |  |  |
| 157 | Módulo de obtención de listados de consulta por motivo de cierre | 2010-07-28 → 2010-07-23 (-5d) | 2010-07-28 → 2010-07-23 (-5d) |  | 4d → 28d |  |  |
| 158 | Módulo de obtención de listado de resumen de consultas por servicio | 2010-07-28 → 2010-07-23 (-5d) | 2010-07-28 → 2010-07-23 (-5d) |  | 4d → 28d |  |  |
| 159 | Módulo de obtención de listado de consultas por área geográfica | 2010-07-28 → 2010-07-23 (-5d) | 2010-07-28 → 2010-07-23 (-5d) |  | 4d → 28d |  |  |
| 160 | Módulo de obtención de listado de consultas por usuario | 2010-07-28 → 2010-07-23 (-5d) | 2010-07-28 → 2010-07-23 (-5d) |  | 4d → 28d |  |  |
| 161 | Módulo de obtención de listado de consultas pendientes | 2010-07-28 → 2010-07-23 (-5d) | 2010-07-28 → 2010-07-23 (-5d) |  | 4d → 28d |  |  |
| 162 | **(ADM15) Mantener Asignaciones TSI** | 2010-07-26 → 2010-07-23 (-3d) | 2010-07-30 → 2010-07-29 (-1d) |  | 2d → -2d |  |  |
| 163 | **Módulo de envío de datos a CatSalut** | 2010-07-26 → 2010-07-23 (-3d) | 2010-07-30 → 2010-07-27 (-3d) | 5d → 3d | 2d → none |  |  |
| 164 | Recolección de datos de operaciones TSI pendientes | 2010-07-26 → 2010-07-23 (-3d) | 2010-07-26 → 2010-07-23 (-3d) |  | 6d → 2d |  |  |
| 165 | Migración de los datos a archivo TXT | 2010-07-26 → 2010-07-23 (-3d) | 2010-07-27 → 2010-07-26 (-1d) |  | 5d → 1d |  |  |
| 166 | Interface de comunicación con CatSalut | 2010-07-26 → 2010-07-23 (-3d) | 2010-07-30 → 2010-07-29 (-1d) |  | 2d → -2d |  |  |
| 167 | **(ADM16) Asignar documentos a acciones** | 2010-07-22 → 2010-08-13 (+22d) | 2010-07-22 → 2010-08-16 (+25d) |  | 8d → 12.5d |  |  |
| 168 | Creación/eliminación de asociaciones | 2010-07-22 → 2010-08-13 (+22d) | 2010-07-22 → 2010-08-16 (+25d) |  | 8d → 12.5d |  |  |
| 169 | Cadicidad de asociaciones | 2010-07-22 → 2010-08-13 (+22d) | 2010-07-22 → 2010-08-16 (+25d) |  | 8d → 12.5d |  |  |
| 170 | **(INT01) Direcciones de farmacias, CAP y otra informacion breve** | 2010-07-26 → 2010-08-03 (+8d) | 2010-07-27 → 2010-08-04 (+8d) |  | 0d → 15d |  |  |
| 171 | Trabajo con listas de resultados | 2010-07-26 → 2010-08-03 (+8d) | 2010-07-27 → 2010-08-04 (+8d) |  | 0d → 15d |  |  |
| 172 | **(SIS01) Trazabilidad y registro de uso** | 2010-07-07 → 2010-06-14 (-23d) | 2010-07-20 → 2010-06-29 (-21d) | 10d → 11.5d | 10d → 46.5d |  | resources Programador Sr 1; Programador Sr 2 → none |
| 173 | Control Acceso a Consultas | 2010-07-12 → 2010-06-15 (-27d) | 2010-07-15 → 2010-06-17 (-28d) |  | 13d → 44d | 23 → none | resources Programador Sr 1; Programador Sr 2 → Programador Sr 1 |
| 174 | Control Acceso a Encuestas | 2010-07-07 → 2010-06-21 (-16d) | 2010-07-08 → 2010-06-23 (-15d) |  | 18d → 49.5d | 52 → none | constraint none → start no earlier than 2010-06-21; resources Programador Sr 1; Programador Sr 2 → Programador Sr 1 |
| 175 | Control General Acceso al Sistema | 2010-07-08 → 2010-06-17 (-21d) | 2010-07-09 → 2010-06-21 (-18d) |  | 17d → 42d | 133 → none | resources Programador Sr 1; Programador Sr 2 → Programador Sr 1 |
| 176 | Control Acceso a Campañas de Seguimiento | 2010-07-19 → 2010-06-17 (-32d) | 2010-07-20 → 2010-06-18 (-32d) |  | 10d → 42.5d | 46 → none | resources Programador Sr 1; Programador Sr 2 → Programador Sr 2 |
| 177 | Control Acceso a Documentos | 2010-07-13 → 2010-06-23 (-20d) | 2010-07-14 → 2010-06-29 (-15d) |  | 14d → 36d | 61 → none | resources Programador Sr 1; Programador Sr 2 → Programador Sr 2 |
| 178 | Control Acceso a Recursos Internos | 2010-07-07 → 2010-06-16 (-21d) | 2010-07-08 → 2010-06-22 (-16d) |  | 18d → 27.5d |  | resources Programador Sr 1; Programador Sr 2 → Programador Sr 2 |
| 179 | Historial de Consultas | 2010-07-07 → 2010-06-14 (-23d) | 2010-07-07 → 2010-06-14 (-23d) |  | 19d → 36.5d |  | constraint none → start no earlier than 2010-06-14; resources Programador Sr 1; Programador Sr 2 → Prog SSr 1 |
| 180 | **(ISC01) Transferir info, comunicacion a STARS** | 2010-07-19 → 2010-06-21 (-28d) | 2010-07-23 → 2010-06-23 (-30d) | 5d → 3d | 7d → 50d |  | resources Programador Sr 1; Programador Sr 2 → none |
| 181 | Recibir información del sistema de comunicaciones | 2010-07-19 → 2010-06-21 (-28d) | 2010-07-23 → 2010-06-23 (-30d) |  | 7d → 26d |  | resources Programador Sr 1; Programador Sr 2 → Prog SSr 1; Prog SSr 2 |
| 182 | **(ISC02) Iniciar llamada desde STARS** | 2010-07-26 → 2010-06-28 (-28d) | 2010-07-28 → 2010-06-30 (-28d) |  | 4d → 45d |  | resources Programador Sr 1; Programador Sr 2 → none |
| 183 | Lanzamiento de petición de comunicación | 2010-07-26 → 2010-06-28 (-28d) | 2010-07-28 → 2010-06-30 (-28d) |  | 4d → 21d |  | resources Programador Sr 1; Programador Sr 2 → Prog SSr 1; Prog SSr 2 |
| 184 | **(ISC03) Informacion encuesta** | 2010-07-01 → 2010-06-04 (-27d) | 2010-07-01 → 2010-06-04 (-27d) |  | 23d → 63d |  |  |
| 185 | Activación actividad de encuesta | 2010-07-01 → 2010-06-04 (-27d) | 2010-07-01 → 2010-06-04 (-27d) |  | 23d → 63d |  |  |
| 186 | ABM Consultas | 2010-07-23 → 2010-06-29 (-24d) | 2010-07-23 → 2010-06-30 (-23d) |  | 7d → 45.5d |  | constraint none → start no earlier than 2010-06-29; resources Programador Jr 1; Programador Jr 2 → Programador Jr 1 |
| 187 | ABM Usuarios | 2010-07-12 → 2010-06-11 (-31d) | 2010-07-12 → 2010-06-11 (-31d) |  | 13d → 55d |  | resources Programador Jr 1; Programador Jr 2 → none |
| 188 | Proteccion de Acceso | 2010-07-13 → 2010-06-14 (-29d) | 2010-07-15 → 2010-06-16 (-29d) |  | 13d → 55d |  | resources Programador Sr 1; Programador Sr 2 → none |
| 189 | ABM Fichas / Guias / Recursos | 2010-07-15 → 2010-07-22 (+7d) | 2010-07-19 → 2010-07-26 (+7d) |  | 11d → 27d |  | resources Programador Jr 1; Programador Jr 2 → none |
| 190 | ABM Cuestionarios | 2010-07-01 → 2010-06-04 (-27d) | 2010-07-01 → 2010-06-04 (-27d) |  | 23d → 63d |  | resources Programador Jr 1; Programador Jr 2 → none |
| 191 | Interfaz General | 2010-07-07 → 2010-06-17 (-20d) | 2010-07-20 → 2010-07-13 (-7d) | 10d → 13d | 10d → 15.5d |  | resources none → Prog SSr 1; Prog SSr 2 |
| 192 | Interfaz Para Usuario Avanzado | 2010-07-26 → 2010-06-23 (-33d) | 2010-07-30 → 2010-06-30 (-30d) |  | 2d → 45.5d |  |  |
| 193 | Interfaz de Listados para ADM02 | 2010-07-28 → 2010-07-23 (-5d) | 2010-08-03 → 2010-07-29 (-5d) |  | 0d → 24d |  |  |
| 194 | Interfaz Mantenimiento Usuarios y Perfiles | 2010-07-08 → 2010-06-16 (-22d) | 2010-07-14 → 2010-06-23 (-21d) |  | 14d → 50.5d |  |  |
| 195 | Interfaz Direcciones INT01 | 2010-07-28 → 2010-08-05 (+8d) | 2010-08-03 → 2010-08-11 (+8d) |  | 0d → 15d |  |  |
| 196 | ABM Enfermedades / Centros Salud | 2010-07-28 → 2010-08-05 (+8d) | 2010-07-29 → 2010-08-06 (+8d) |  | 3d → 18d |  | resources Programador Jr 1; Programador Jr 2 → none |
| 197 | Listado de Usuarios y Perfiles | 2010-08-02 → 2010-07-12 (-21d) | 2010-08-02 → 2010-07-12 (-21d) |  | 1d → 37d |  | resources Programador Jr 1; Programador Jr 2 → none |
| 198 | Interface con sistema de comunicaciones (ISC01, ISC02, ISC03) | 2010-07-07 → 2010-06-08 (-29d) | 2010-07-13 → 2010-06-21 (-22d) | 5d → 9d | 15d → 52.5d |  | resources Programador Sr 1; Programador Sr 2 → Programador Jr 1; Programador Jr 2 |
| 200 | Arquitectura General / Configuracion Ambientes | 2010-06-09 → 2010-05-12 (-28d) | 2010-06-29 → 2010-06-01 (-28d) |  | 0d → 17d | 201 → 205 |  |
| 201 | **Tareas IT Sobre Nuestra Empresa** |  |  |  | 2d → 27d |  | resources IT 1 → none |
| 203 | **Infraestructura** | 2010-05-10 → 2010-05-06 (-4d) | 2010-05-17 → 2010-05-18 (+1d) | 6d → 9d | none → 27d |  | resources IT 1 → none |
| 204 | Preparacion de Ambientes en servidores | 2010-05-17 → 2010-05-06 (-11d) | 2010-05-17 → 2010-05-06 (-11d) |  | 0d → 57d |  | constraint none → start no earlier than 2010-05-06 |
| 205 | Instalacion y Configuracion de Servidor DEV | 2010-05-11 → 2010-05-07 (-4d) | 2010-05-14 → 2010-05-11 (-3d) |  | 1d → 18d |  |  |
| 206 | Instalacion y Configuracion de Servidores de Usos Multiples | 2010-05-13 → 2010-05-12 (-1d) | 2010-05-24 → 2010-05-18 (-6d) |  | -5d → 49d |  | constraint none → start no earlier than 2010-05-11 |
| 207 | **Redes** | 2010-05-25 → 2010-06-04 (+10d) | 2010-06-03 → 2010-06-08 (+5d) | 8d → 3d | none → 61d |  | resources IT 1 → none |

## Version 4 (saved 2010-09-02, file Casos Uso Lole Con Recursos 2010 Version Previa - 5 RECURSOS.mpp)

Note of the change: version corregida

Last finish 2010-09-01 → 2010-11-05 (+65d).

Added:

| ID | Task | Duration | Start | Finish | Predecessors | Constraint | Resources |
| --- | --- | --- | --- | --- | --- | --- | --- |
| 6 | Testing Id y Aut | 1d | 2010-06-16 | 2010-06-16 | 5, 4 |  | Tester |
| 12 | Testing Registros | 2d | 2010-07-05 | 2010-07-06 | 11, 9, 8, 10 | start no earlier than 2010-07-05 | Tester |
| 18 | Testing Servicio Atencion | 1d | 2010-09-01 | 2010-09-01 | 14, 15, 16, 17 | start no earlier than 2010-09-01 | Tester |
| 25 | Testing Agenda | 2d | 2010-07-27 | 2010-07-28 | 20, 21, 22, 23, 24 | start no earlier than 2010-07-27 | Tester |
| 27 | Rellamada | 2d | 2010-08-16 | 2010-08-17 |  | start no earlier than 2010-08-16 | Prog SSr 1 |
| 28 | Testing Rellamada | 1d | 2010-08-25 | 2010-08-25 | 27 | start no earlier than 2010-08-25 | Tester |
| 36 | Testing Consulta | 3d | 2010-06-22 | 2010-06-24 | 30, 33, 34, 35 |  | Tester |
| 38 | Consejo Salud | 2d | 2010-08-23 | 2010-08-24 |  | start no earlier than 2010-08-19 | Programador Jr 2 |
| 39 | Testing Consejo Salud | 1d | 2010-08-27 | 2010-08-27 | 38 | start no earlier than 2010-08-27 | Tester |
| 42 | Testing USR06 | 1d | 2010-08-11 | 2010-08-11 | 41 | start no earlier than 2010-08-11 | Tester |
| 45 | Testing USR07 | 1d | 2010-08-26 | 2010-08-26 | 44 | start no earlier than 2010-08-26 | Tester |
| 51 | Testing | 1d | 2010-09-02 | 2010-09-02 | 47, 48, 49, 50 | start no earlier than 2010-09-02 | Tester |
| 56 | Testing | 2d | 2010-08-30 | 2010-08-31 | 53, 54, 55 | start no earlier than 2010-08-30 | Tester |
| 59 | Testing | 1d | 2010-09-13 | 2010-09-13 | 58 | start no earlier than 2010-09-13 | Tester |
| 66 | Testing | 2d | 2010-09-03 | 2010-09-06 | 61, 63, 62, 65 | start no earlier than 2010-09-03 | Tester |
| 71 | Testing | 2d | 2010-07-23 | 2010-07-26 | 68, 69, 70 | start no earlier than 2010-07-19 | Tester |
| 77 | Testing | 1d | 2010-08-02 | 2010-08-02 | 74, 75, 76 | start no earlier than 2010-08-02 | Tester |
| 84 | Testing | 2d | 2010-08-19 | 2010-08-20 | 70, 80, 81, 82, 83 | start no earlier than 2010-08-19 | Tester |
| 89 | Testing | 1d | 2010-08-04 | 2010-08-04 | 86, 87, 88 | start no earlier than 2010-08-04 | Tester |
| 93 | Testing | 1d | 2010-07-08 | 2010-07-08 | 91, 92 | start no earlier than 2010-07-01 | Tester |
| 99 | Testing | 2d | 2010-08-09 | 2010-08-10 | 95, 96, 98 | start no earlier than 2010-07-15 | Tester |
| 116 | Testing | 2d | 2010-08-12 | 2010-08-13 | 102, 101, 103, 106, 109, 113 |  | Tester |
| 125 | Testing | 1d | 2010-08-23 | 2010-08-23 | 118, 119 | start no earlier than 2010-08-23 | Tester |
| 153 | Testing ADM 3 al 9 | 3d | 2010-08-16 | 2010-08-18 |  |  | Tester |
| 157 | Testing Creacion Formularios Enc y Seg | 1d | 2010-07-01 | 2010-07-01 | 155, 156 | start no earlier than 2010-07-01 | Tester |
| 168 | Testing Mantenimiento Usuarios | 1d | 2010-06-30 | 2010-06-30 | 159, 160, 164 | start no earlier than 2010-06-30 | Tester |
| 175 | Testing Listados Proactivas | 2d | 2010-09-14 | 2010-09-15 | 170, 171, 172, 173, 174 | start no earlier than 2010-09-10 | Tester |
| 180 | Testing Listado Docs | 1d | 2010-09-10 | 2010-09-10 | 177, 178, 179 | start no earlier than 2010-09-10 | Tester |
| 190 | Testing Listado Consultas | 2d | 2010-09-20 | 2010-09-21 | 182, 183, 184, 185, 186, 187, 188, 189 | start no earlier than 2010-09-20 | Tester |
| 196 | Testing TSI | 2d | 2010-09-16 | 2010-09-17 | 192 | start no earlier than 2010-09-16 | Tester |
| 200 | Testing Asignacion Docs a Acciones | 1d | 2010-09-22 | 2010-09-22 | 198, 199 | start no earlier than 2010-09-22 | Tester |
| 203 | Testing Dirs | 1d | 2010-09-09 | 2010-09-09 | 202 | start no earlier than 2010-09-09 | Tester |
| 212 | Testing Trazabilidad / Registro | 2d | 2010-07-29 | 2010-07-30 | 205, 206, 207, 208, 209, 210, 211 | start no earlier than 2010-06-30 | Tester |
| 217 | Testing Inicio Llamada STARS | 1d | 2010-08-06 | 2010-08-06 | 216 | start no earlier than 2010-08-06 | Tester |
| 233 | Testing ABMs Varios | 4d | 2010-09-23 | 2010-09-28 | 220, 221, 223, 224, 230 | start no earlier than 2010-09-23 | Tester |
| 234 | Testing Interfaces Varias | 3d | 2010-09-29 | 2010-10-01 | 225, 226, 227, 228, 229, 232 | start no earlier than 2010-09-29 | Tester |
| 247 | **Configuracion del Ambiente de Produccion** | 24d | 2010-08-02 | 2010-09-02 |  |  |  |
| 248 | Instalar y Configurar Load Balancer | 3d | 2010-08-23 | 2010-08-25 |  | start no earlier than 2010-08-23 | IT 1 |
| 249 | Instalar y Configurar APP Server | 3d | 2010-08-16 | 2010-08-18 |  | start no earlier than 2010-08-16 | IT 1 |
| 250 | Instalar y Configurar DB Server | 3d | 2010-08-09 | 2010-08-11 |  | start no earlier than 2010-08-09 | IT 1 |
| 251 | Instalar y Configurar Web Server | 3d | 2010-08-30 | 2010-09-01 |  | start no earlier than 2010-08-30 | IT 1 |
| 253 | Puesta en Marcha | 10d | 2010-10-04 | 2010-10-15 | 247, 234 | start no earlier than 2010-10-04 | IT 1; Arquitecto; Programador Sr 1; Programador Sr 2 |
| 254 | Testeo Final en Produccion | 5d | 2010-10-18 | 2010-10-22 | 253 |  | Tester |
| 256 | **Web Server (Consultas Externas del Cliente)** | 20d | 2010-07-12 | 2010-08-06 | 7, 30 |  |  |
| 257 | Interfaz Web Server | 4d | 2010-08-02 | 2010-08-05 |  | start no earlier than 2010-08-02 | Programador Jr 2 |
| 258 | Modulo Chat | 3d | 2010-08-02 | 2010-08-04 |  | start no earlier than 2010-08-02 | Prog SSr 1 |
| 259 | Busquedas y Listados del Web Server | 2d | 2010-08-05 | 2010-08-06 |  | start no earlier than 2010-08-05 | Prog SSr 1 |
| 260 | Test Web Server | 2d | 2010-07-12 | 2010-07-13 |  | start no earlier than 2010-07-12 | Tester |
| 262 | **Capacitacion del Personal Para el Uso de la APP** | 10d | 2010-10-25 | 2010-11-05 | 253, 254 |  |  |
| 263 | Cpacitacion Usuario Operador | 5d | 2010-10-25 | 2010-10-29 |  |  | Arquitecto; Programador Sr 1; Programador Sr 2 |
| 264 | Capacitacion Usuario Administrador | 5d | 2010-11-01 | 2010-11-05 |  |  | Arquitecto; Programador Sr 1; Programador Sr 2 |
| 266 | Retoques, Desarrollos Finales, Ultimas Pruebas | 10d | 2010-09-20 | 2010-10-01 |  | start no earlier than 2010-09-20 | Programador Jr 1; Prog SSr 1; Programador Jr 2; Programador Sr 1; Programador Sr 2 |
| 267 | Mantenimiento de la Infra | 10d | 2010-06-18 A | 2010-08-20 |  | start no earlier than 2010-06-18 | IT 1 |

Changed:

| ID | Task | Start | Finish | Duration | Total float | Other |
| --- | --- | --- | --- | --- | --- | --- |
| 1 | Integracion con el Sistema STARS (Lectura Datos) | 2010-06-02 → 2010-06-04 (+2d) | 2010-06-07 → 2010-06-10 (+3d) | 4d → 5d | 18d → 13d |  |
| 2 | Modulo Seguridad que Oculta Info Llamado | 2010-06-08 → 2010-06-11 (+3d) | 2010-06-09 → 2010-06-15 (+6d) | 1.5d → 3d | 36.5d → 93d |  |
| 3 | **(GEN01) Identificacion y Autenticacion** | 2010-06-08 → 2010-06-11 (+3d) | 2010-06-10 → 2010-06-16 (+6d) | 3d → 4d | 54d → 90d |  |
| 4 | Autenticacion | 2010-06-08 → 2010-06-11 (+3d) | 2010-06-09 → 2010-06-14 (+5d) |  | 29d → 81d | constraint none → start no earlier than 2010-06-10; resources Prog SSr 1 → Programador Jr 1 |
| 5 | Interfaz Inicio Sesion | 2010-06-08 → 2010-06-11 (+3d) | 2010-06-10 → 2010-06-15 (+5d) |  | 28d → 80d | constraint none → start no earlier than 2010-06-08; resources Prog SSr 2 → Prog SSr 1 |
| 7 | **(GEN02) Gestion General de Registros** | 2010-06-09 → 2010-06-11 (+2d) | 2010-06-17 → 2010-07-06 (+19d) | 6.5d → 18d | 54d → 84d |  |
| 8 | ABM Registro | 2010-06-10 → 2010-06-24 (+14d) | 2010-06-14 → 2010-06-24 (+10d) |  | 57.5d → 69d | constraint finish no earlier than 2010-06-10 → start no earlier than 2010-06-11; resources Programador Jr 1 → Programador Jr 2 |
| 9 | Buscar registro | 2010-06-11 → 2010-06-25 (+14d) | 2010-06-11 → 2010-06-25 (+14d) |  | 58d → 68d | constraint start no earlier than 2010-06-09 → start no earlier than 2010-06-25; resources Programador Jr 1 → Programador Jr 2 |
| 10 | Copiar registro | 2010-06-09 → 2010-06-11 (+2d) | 2010-06-10 → 2010-06-11 (+1d) |  | 59.5d → 100d | constraint start no earlier than 2010-06-09 → start no earlier than 2010-06-10; resources Programador Jr 1 → Programador Jr 2 |
| 11 | Interfaz ABM Registro | 2010-06-15 → 2010-06-28 (+13d) | 2010-06-17 → 2010-07-01 (+14d) | 3d → 4d | 30d → 86d | constraint none → start no earlier than 2010-06-28; resources Prog SSr 2 → Programador Sr 2 |
| 13 | **(USR01) Determinacion del servicio de atencion** | 2010-07-29 → 2010-08-16 (+18d) | 2010-08-02 → 2010-09-01 (+30d) | 3d → 13d | 15d → 16d |  |
| 14 | Capturar la Comunicación???? | 2010-07-29 → 2010-08-16 (+18d) | 2010-07-29 → 2010-08-16 (+18d) |  | 17d → 20d | constraint start no earlier than 2010-07-28 → start no earlier than 2010-08-16 |
| 15 | Determinar el tipo de servicio | 2010-07-30 → 2010-08-26 (+27d) | 2010-07-30 → 2010-08-26 (+27d) |  | 16d → 12d | constraint start no earlier than 2010-07-30 → start no earlier than 2010-08-26 |
| 16 | Lista de Espera | 2010-08-02 → 2010-08-19 (+17d) | 2010-08-02 → 2010-08-19 (+17d) |  | 15d → 17d | constraint start no earlier than 2010-08-02 → start no earlier than 2010-08-19 |
| 17 | Determinar conjunto de operadores adecuados al tipo de solicitud | 2010-07-29 → 2010-08-30 (+32d) | 2010-07-29 → 2010-08-30 (+32d) |  | 17d → 10d | constraint start no earlier than 2010-07-28 → start no earlier than 2010-08-30 |
| 19 | **(USR02) Agenda** | 2010-06-23 → 2010-07-09 (+16d) | 2010-07-22 → 2010-07-28 (+6d) | 22d → 14d | 27d → 68d |  |
| 20 | Selección de una agenda | 2010-07-02 → 2010-07-22 (+20d) | 2010-07-02 → 2010-07-23 (+21d) | 1d → 2d | 41d → 44d | constraint start no earlier than 2010-07-02 → start no earlier than 2010-07-22 |
| 21 | ABM citas sobre la agenda | 2010-06-30 → 2010-07-15 (+15d) | 2010-07-01 → 2010-07-15 (+14d) |  | 42.5d → 50d | constraint start no earlier than 2010-06-30 → start no earlier than 2010-07-15 |
| 22 | Interfaz de la Agenda | 2010-06-24 → 2010-07-12 (+18d) | 2010-06-25 → 2010-07-14 (+19d) | 2d → 3d | 46d → 51d | constraint none → start no earlier than 2010-07-12; resources Programador Jr 2 → Programador Jr 1 |
| 23 | Integracion con Stars - Llamada desde Agenda | 2010-07-14 → 2010-07-13 (-1d) | 2010-07-22 → 2010-07-20 (-2d) |  | 27d → 47d | constraint start no earlier than 2010-07-14 → start no earlier than 2010-07-13; resources Prog SSr 1; Prog SSr 2 → Programador Sr 1 |
| 24 | Asignar pacientes a cita | 2010-06-23 → 2010-07-09 (+16d) | 2010-06-23 → 2010-07-09 (+16d) |  | 48d → 79d | constraint none → start no earlier than 2010-07-08; resources Programador Jr 2 → Programador Jr 1 |
| 26 | **(USR03) Rellamada** | 2010-07-21 → 2010-08-16 (+26d) | 2010-07-22 → 2010-08-25 (+34d) | 2d → 8d | 28d → 52d | constraint start no earlier than 2010-07-21 → none; resources Prog SSr 2 → none |
| 29 | **(USR04) Consulta** | 2010-06-08 → 2010-06-14 (+6d) | 2010-06-14 → 2010-06-21 (+7d) | 5d → 6d | 23d → 10d |  |
| 30 | **Tratar Consulta** | 2010-06-08 → 2010-06-14 (+6d) | 2010-06-08 → 2010-06-15 (+7d) | 0.5d → 2d | 27.5d → 14d |  |
| 31 | Ajornar Consulta | 2010-06-08 → 2010-06-15 (+7d) | 2010-06-08 → 2010-06-15 (+7d) | 0.5d → 1d | 25.5d → 14d | constraint none → start no earlier than 2010-06-15; resources Programador Jr 1 → Programador Jr 2 |
| 32 | Transferir consulta | 2010-06-08 → 2010-06-14 (+6d) | 2010-06-08 → 2010-06-14 (+6d) | 0.5d → 1d | 25.5d → 15d | constraint none → start no earlier than 2010-06-14 |
| 33 | Modulo Envio de Correo | 2010-06-10 → 2010-06-15 (+5d) | 2010-06-11 → 2010-06-16 (+5d) |  | 21d → 13d | constraint none → start no earlier than 2010-06-15; resources Prog SSr 1 → Programador Jr 1 |
| 34 | Modulo Envio SMS | 2010-06-11 → 2010-06-16 (+5d) | 2010-06-14 → 2010-06-21 (+7d) | 2d → 4d | 20d → 10d | constraint none → start no earlier than 2010-06-16; resources Prog SSr 2 → Programador Sr 1 |
| 35 | Inclusion en Campaña de Seguimiento | 2010-06-08 → 2010-06-18 (+10d) | 2010-06-09 → 2010-06-18 (+9d) |  | 24.5d → 11d | constraint none → start no earlier than 2010-06-18; resources Programador Jr 1 → Programador Jr 2 |
| 37 | **(USR05) Consejo Salud** | 2010-07-19 → 2010-08-23 (+35d) | 2010-07-20 → 2010-08-27 (+38d) | 2d → 5d | 18.5d → 50d | resources Prog SSr 1 → none |
| 40 | **(USR06) Gestionar Consulta pendiente** | 2010-07-19 → 2010-08-05 (+17d) | 2010-07-19 → 2010-08-11 (+23d) | 1d → 5d | 24d → 29d |  |
| 41 | Priorizacion de la Lista de Consultas | 2010-07-19 → 2010-08-05 (+17d) | 2010-07-19 → 2010-08-05 (+17d) |  | 3.5d → 25d | constraint none → start no earlier than 2010-08-05; resources Prog SSr 2 → Programador Jr 1 |
| 43 | **(USR07) Programacion de cita previa** | 2010-08-31 → 2010-08-11 (-20d) | 2010-09-01 → 2010-08-26 (-6d) | 2d → 12d | 0d → 51d |  |
| 44 | Realizar Citación (Interface con Sistema de citación AP) | 2010-08-31 → 2010-08-11 (-20d) | 2010-09-01 → 2010-08-12 (-20d) |  | 0d → 33d | constraint none → start no earlier than 2010-08-11 |
| 46 | **(USR08) Gestiones sobre la TSI** | 2010-08-05 → 2010-08-11 (+6d) | 2010-08-16 → 2010-09-02 (+17d) | 7.5d → 17d | -18.5d → -36d |  |
| 47 | Verificacion Documentacion Necesaria | 2010-08-05 → 2010-08-11 (+6d) | 2010-08-05 → 2010-08-11 (+6d) |  | -12d → -21d | constraint start no earlier than 2010-06-29 → start no earlier than 2010-08-11 |
| 48 | Enviar Gestion (Interface con sistema RCA) | 2010-08-11 → 2010-08-24 (+13d) | 2010-08-11 → 2010-08-25 (+14d) | 1d → 2d | -16d → -31d | constraint start no earlier than 2010-08-11 → start no earlier than 2010-08-24 |
| 49 | Cierre automatico de la consulta por paso de tiempo | 2010-08-10 → 2010-08-18 (+8d) | 2010-08-10 → 2010-08-18 (+8d) |  | -15d → -26d | constraint start no earlier than 2010-08-10 → start no earlier than 2010-08-18 |
| 50 | Guardar LOG gestion TSI | 2010-08-13 → 2010-08-11 (-2d) | 2010-08-16 → 2010-08-11 (-5d) |  | -18.5d → -21d | was named Guardar LOG gestion TSI?????; constraint none → start no earlier than 2010-08-05; resources Programador Jr 1 → Programador Jr 2 |
| 52 | **(USR09) Servicio de traduccion** | 2010-06-29 → 2010-08-05 (+37d) | 2010-07-08 → 2010-08-31 (+54d) | 7.5d → 19d | 39d → 48d |  |
| 53 | Contactar Servicio Externo de Traduccion | 2010-07-05 → 2010-08-19 (+45d) | 2010-07-06 → 2010-08-24 (+49d) | 2d → 4d |  | constraint start no earlier than 2010-07-05 → start no earlier than 2010-08-19; resources Programador Sr 2 → Prog SSr 1 |
| 54 | Enlace Comunicacion Multiconferencia | 2010-06-29 → 2010-08-05 (+37d) | 2010-07-02 → 2010-08-10 (+39d) | 3d → 4d | 43.5d → 61d | constraint start no earlier than 2010-06-29 → start no earlier than 2010-07-27 |
| 55 | Modulo monitorización de servicio | 2010-07-07 → 2010-08-11 (+35d) | 2010-07-08 → 2010-08-12 (+35d) |  | 39d → 32d | constraint start no earlier than 2010-07-07 → start no earlier than 2010-08-11 |
| 57 | **(USR10) Informacion Sanitaria General** | 2010-08-05 → 2010-09-10 (+36d) | 2010-08-05 → 2010-09-13 (+39d) | 1d → 2d | 19d → 39d |  |
| 58 | Guardar Informacion Ciudadano | 2010-08-05 → 2010-09-10 (+36d) | 2010-08-05 → 2010-09-10 (+36d) |  | 19d → 39d | constraint none → start no earlier than 2010-09-07 |
| 60 | **(USR11) Seguimiento de Patologias** | 2010-07-23 → 2010-08-12 (+20d) | 2010-08-02 → 2010-09-06 (+35d) | 7d → 18d | 22d → 44d |  |
| 61 | Buscar Campañas Abiertas | 2010-07-28 → 2010-08-12 (+15d) | 2010-07-28 → 2010-08-13 (+16d) | 1d → 2d | 25d → 48d | constraint start no earlier than 2010-07-28 → start no earlier than 2010-08-12 |
| 62 | **Gestionar Seguimiento** | 2010-07-23 → 2010-08-13 (+21d) | 2010-08-02 → 2010-08-26 (+24d) | 7d → 10d | 22d → 49d |  |
| 63 | Visualizar Historial Pacientes | 2010-07-23 → 2010-08-13 (+21d) | 2010-07-26 → 2010-08-13 (+18d) | 2d → 1d | 27d → 31d | constraint start no earlier than 2010-07-19 → start no earlier than 2010-08-13; resources Programador Jr 2 → Prog SSr 1 |
| 64 | Llamada al Paciente | 2010-08-02 → 2010-08-25 (+23d) | 2010-08-02 → 2010-08-26 (+24d) | 1d → 2d |  | constraint start no earlier than 2010-08-02 → start no earlier than 2010-08-25 |
| 65 | Desligar paciente de campaña | 2010-07-27 → 2010-08-27 (+31d) | 2010-07-27 → 2010-08-27 (+31d) |  | 26d → 21d | constraint start no earlier than 2010-07-27 → start no earlier than 2010-08-27; resources Programador Jr 2 → Prog SSr 1 |
| 67 | **(USR12) Encuestas** | 2010-06-07 → 2010-07-02 (+25d) | 2010-07-20 → 2010-07-26 (+6d) | 32d → 17d | 31d → 56d |  |
| 68 | Interfaz de Encuestas | 2010-06-24 → 2010-07-20 (+26d) | 2010-06-29 → 2010-07-22 (+23d) |  | 46.5d → 49d | constraint start no earlier than 2010-06-07 → start no earlier than 2010-07-20; resources Programador Jr 1 → Programador Jr 2 |
| 69 | Contacto con Encuestado | 2010-06-07 → 2010-07-02 (+25d) | 2010-07-20 → 2010-07-05 (-15d) |  | 10d → 77d | constraint none → start no earlier than 2010-06-16; resources Prog SSr 2 → Programador Sr 2 |
| 70 | ABM Formulario De Encuesta | 2010-06-07 → 2010-07-02 (+25d) | 2010-06-07 → 2010-07-05 (+28d) | 1d → 2d | 62d → 56d | constraint none → start no earlier than 2010-07-01 |
| 72 | **(USR13) Buscar Consultas** | 2010-06-28 → 2010-07-09 (+11d) | 2010-07-05 → 2010-08-02 (+28d) | 6d → 17d | 40d → 66d |  |
| 73 | **Operativo de Busqueda** | 2010-06-28 → 2010-07-09 (+11d) | 2010-07-05 → 2010-08-02 (+28d) | 6d → 17d | 40d → 66d |  |
| 74 | Buscar según distintos criterios | 2010-06-28 → 2010-07-26 (+28d) | 2010-06-30 → 2010-07-28 (+28d) |  | 43d → 41d | constraint none → start no earlier than 2010-07-26 |
| 75 | Filtrar resultados de la busqueda según permisos del usuario | 2010-07-01 → 2010-07-09 (+8d) | 2010-07-01 → 2010-07-09 (+8d) |  | 42d → 81d | constraint none → start no earlier than 2010-07-06 |
| 76 | Acotar resultados si los mismos sobrepasan el parametro configurable "n" | 2010-07-05 → 2010-07-16 (+11d) | 2010-07-05 → 2010-07-16 (+11d) |  | 40d → 51d | constraint none → start no earlier than 2010-07-16 |
| 78 | **(USR14) Hacer Uso de Documentos** | 2010-07-05 → 2010-07-19 (+14d) | 2010-07-16 → 2010-08-20 (+35d) | 9d → 25d | 11d → 24d |  |
| 79 | Creación y uso de Guias Interrogatorio | 2010-07-05 → 2010-08-09 (+35d) | 2010-07-07 → 2010-08-10 (+34d) |  | 18d → 25d | constraint none → start no earlier than 2010-08-09 |
| 80 | Creación y uso Fichas Tematicas | 2010-07-07 → 2010-08-12 (+36d) | 2010-07-09 → 2010-08-13 (+35d) |  | 16d → 20d | constraint none → start no earlier than 2010-08-12 |
| 81 | Creación y uso de Recursos | 2010-07-09 → 2010-07-19 (+10d) | 2010-07-13 → 2010-07-20 (+7d) |  | 14d → 40d | constraint none → start no earlier than 2010-07-19 |
| 82 | Búsqueda y selección de documentos | 2010-07-13 → 2010-07-27 (+14d) | 2010-07-15 → 2010-07-28 (+13d) |  | 12d → 32d | constraint none → start no earlier than 2010-07-27 |
| 83 | Apertura documentos | 2010-07-15 → 2010-07-29 (+14d) | 2010-07-16 → 2010-07-30 (+14d) | 1d → 2d | 11d → 30d | constraint none → start no earlier than 2010-07-29 |
| 85 | **(USR15) Cerrar consulta y dar respuesta al ciudadano** | 2010-06-15 → 2010-06-28 (+13d) | 2010-06-25 → 2010-08-04 (+40d) | 8.5d → 28d | 16.5d → -18d |  |
| 86 | Clasificar Finalizacion de Consulta | 2010-06-15 → 2010-06-28 (+13d) | 2010-06-16 → 2010-06-29 (+13d) |  | 21d → 7d | constraint none → start no earlier than 2010-06-28; resources Prog SSr 1 → Programador Jr 1 |
| 87 | Adición de motivo de cierre a la consulta | 2010-06-15 → 2010-07-19 (+34d) | 2010-06-16 → 2010-07-19 (+33d) |  | 21.5d → -7d | constraint none → start no earlier than 2010-07-19 |
| 88 | Creación de clasificaciones ad-hoc | 2010-06-24 → 2010-07-23 (+29d) | 2010-06-25 → 2010-07-23 (+28d) |  | 14.5d → -11d | constraint start no earlier than 2010-06-24 → start no earlier than 2010-07-23; resources Programador Sr 1 → Programador Jr 2 |

| ID | Task | Start | Finish | Duration | Total float | Other |
| --- | --- | --- | --- | --- | --- | --- |
| 90 | **(USR16) Visualizar Consulta** | 2010-06-16 → 2010-06-30 (+14d) | 2010-06-22 → 2010-07-08 (+16d) | 4.5d → 7d | 46d → 74d |  |
| 91 | Mostrar datos generales de la consulta | 2010-06-21 → 2010-07-06 (+15d) | 2010-06-22 → 2010-07-07 (+15d) |  | 46d → 49d | constraint start no earlier than 2010-06-21 → start no earlier than 2010-06-30; resources Programador Jr 2 → Programador Jr 1 |
| 92 | Mostrar datos según el documento elegido | 2010-06-16 → 2010-06-30 (+14d) | 2010-06-18 → 2010-07-01 (+13d) |  | 48.5d → 53d | constraint start no earlier than 2010-06-16 → start no earlier than 2010-06-30; resources Programador Jr 2 → Programador Jr 1 |
| 94 | **(USR17) Crear/Transferir Consulta** | 2010-07-23 → 2010-06-22 (-31d) | 2010-07-28 → 2010-08-10 (+13d) | 4d → 36d | -7d → -22d |  |
| 95 | Crear Consulta | 2010-07-23 → 2010-06-22 (-31d) | 2010-07-26 → 2010-06-23 (-33d) |  | -7d → 10d | constraint start no earlier than 2010-07-23 → start no earlier than 2010-06-21; resources Prog SSr 1 → Programador Jr 1 |
| 96 | Copiar consulta | 2010-07-27 → 2010-06-23 (-34d) | 2010-07-27 → 2010-06-23 (-34d) |  | -8d → 10d | constraint start no earlier than 2010-07-27 → start no earlier than 2010-06-23; resources Prog SSr 1 → Programador Jr 2 |
| 97 | **Transferir Consulta** | 2010-07-28 → 2010-08-06 (+9d) | 2010-07-28 → 2010-08-06 (+9d) |  | -7d → -22d |  |
| 98 | Localizar a otro operador del mismo perfil | 2010-07-28 → 2010-08-06 (+9d) | 2010-07-28 → 2010-08-06 (+9d) |  | -9d → -22d | constraint start no earlier than 2010-07-28 → start no earlier than 2010-08-06; resources Prog SSr 1 → Programador Jr 1 |
| 100 | **(ADM01) Mantenimiento del Entorno, clasif y prioridades** | 2010-06-02 → 2010-06-04 (+2d) | 2010-06-23 → 2010-08-13 (+51d) | 15.5d → 51d | 19.5d → -22d |  |
| 101 | Módulo de edición de parametros grales de la aplicación | 2010-06-11 → 2010-07-29 (+48d) | 2010-06-23 → 2010-08-03 (+41d) |  | 19.5d → -16d | constraint none → start no earlier than 2010-07-29; resources Programador Sr 2 → Programador Sr 1 |
| 102 | Módulo edición listas de clasificaciones (Códigos internos) | 2010-06-10 → 2010-08-04 (+55d) | 2010-06-15 → 2010-08-06 (+52d) |  | 25.5d → -19d | constraint none → start no earlier than 2010-08-04 |
| 103 | **Módulo mantenimiento de la lista de espera** |  | 2010-06-07 → 2010-06-09 (+2d) | 2d → 4d | 31d → 23d |  |
| 104 | ABM de la lista de espera | 2010-06-07 → 2010-06-04 (-3d) | 2010-06-07 → 2010-06-04 (-3d) |  | 31d → 26d | constraint none → start no earlier than 2010-06-03 |
| 105 | Módulo de gestión de prioridades sobre la lista de espera | 2010-06-04 → 2010-06-08 (+4d) | 2010-06-04 → 2010-06-09 (+5d) | 1d → 2d | 32d → 23d | constraint none → start no earlier than 2010-06-08; resources Prog SSr 2 → Prog SSr 1 |
| 106 | **Módulo mantenimiento de lineas de servicio** | 2010-06-02 → 2010-06-04 (+2d) | 2010-06-03 → 2010-06-07 (+4d) |  | 33d → 25d |  |
| 107 | ABM lineas de servicio | 2010-06-02 → 2010-06-04 (+2d) | 2010-06-02 → 2010-06-04 (+2d) |  | 34d → 26d |  |
| 108 | ABM servicios para una linea seleccionada | 2010-06-03 → 2010-06-07 (+4d) | 2010-06-03 → 2010-06-07 (+4d) |  | 33d → 25d | constraint none → start no earlier than 2010-06-07; resources Programador Jr 2 → Programador Jr 1 |
| 109 | **Módulo mantenimiento agendas** | 2010-06-02 → 2010-06-07 (+5d) | 2010-06-22 → 2010-06-25 (+3d) | 14.5d → 15d | 20.5d → 11d |  |
| 110 | Asignar operadores a agenda | 2010-06-04 → 2010-06-08 (+4d) | 2010-06-04 → 2010-06-08 (+4d) |  | 32d → 24d | constraint none → start no earlier than 2010-06-08; resources Prog SSr 1 → Programador Jr 2 |
| 111 | ABM de usuarios de la agenda | 2010-06-21 → 2010-06-25 (+4d) | 2010-06-22 → 2010-06-25 (+3d) |  | 20.5d → 11d | constraint start no earlier than 2010-06-21 → start no earlier than 2010-06-25 |
| 112 | ABM citas de la agenda | 2010-06-02 → 2010-06-07 (+5d) | 2010-06-02 → 2010-06-07 (+5d) |  | 34d → 25d | constraint none → start no earlier than 2010-06-07; resources Programador Jr 1 → Programador Jr 2 |
| 113 | **Módulo mantenimiento BBDD** | 2010-06-09 → 2010-08-09 (+61d) | 2010-06-11 → 2010-08-11 (+61d) | 2d → 3d | 27.5d → -22d |  |
| 114 | Módulo comprobación de formato de archivo | 2010-06-09 → 2010-08-09 (+61d) | 2010-06-10 → 2010-08-09 (+60d) |  | 28.5d → -20d | constraint none → start no earlier than 2010-08-09 |
| 115 | Módulo actualización de BBDD | 2010-06-09 → 2010-08-10 (+62d) | 2010-06-11 → 2010-08-11 (+61d) |  | 27.5d → -16d | constraint none → start no earlier than 2010-08-10; resources Programador Sr 2 → Programador Sr 1 |
| 117 | **(ADM02) Extraccion de estadisticas y listados** | 2010-07-01 → 2010-08-16 (+46d) | 2010-07-22 → 2010-08-23 (+32d) | 16d → 6d | 24d → 26d |  |
| 118 | Listados De Administración | 2010-07-21 → 2010-08-16 (+26d) | 2010-07-22 → 2010-08-17 (+26d) |  |  | constraint none → start no earlier than 2010-08-16; resources Prog SSr 1 → Programador Sr 1 |
| 119 | **Listados Comunes** | 2010-07-01 → 2010-08-16 (+46d) | 2010-07-07 → 2010-08-20 (+44d) |  | 35d → 26d |  |
| 120 | Detalle de estado de finalización consulta/acción | 2010-07-05 → 2010-08-18 (+44d) | 2010-07-05 → 2010-08-18 (+44d) |  | 16.5d → 21d | constraint start no earlier than 2010-07-01 → start no earlier than 2010-08-18; resources Programador Sr 1 → Programador Jr 2 |
| 121 | Listado de clasificaciones | 2010-07-02 → 2010-08-16 (+45d) | 2010-07-02 → 2010-08-16 (+45d) |  | 17.5d → 30d | constraint start no earlier than 2010-07-01 → start no earlier than 2010-06-29; resources Programador Sr 1 → Programador Jr 2 |
| 122 | Listados de incidencias en las comunicaciones | 2010-07-06 → 2010-08-19 (+44d) | 2010-07-06 → 2010-08-19 (+44d) |  | 15.5d → 20d | constraint start no earlier than 2010-07-01 → start no earlier than 2010-08-19; resources Programador Sr 1 → Programador Jr 2 |
| 123 | Ratios por usuario | 2010-07-07 → 2010-08-20 (+44d) | 2010-07-07 → 2010-08-20 (+44d) |  | 14.5d → 19d | constraint start no earlier than 2010-07-01 → start no earlier than 2010-08-20; resources Programador Sr 1 → Programador Jr 2 |
| 124 | Finales de servicio | 2010-07-01 → 2010-08-17 (+47d) | 2010-07-01 → 2010-08-17 (+47d) |  | 18.5d → 22d | constraint start no earlier than 2010-07-01 → start no earlier than 2010-08-17; resources Programador Sr 1 → Programador Jr 1 |
| 126 | **(ADM03) Mantenimiento de documentos** | 2010-07-23 → 2010-08-31 (+39d) | 2010-08-13 → 2010-09-07 (+25d) | 15.5d → 6d | 12.5d → 41d |  |
| 127 | Creación y edición de documentos | 2010-08-06 → 2010-09-06 (+31d) | 2010-08-13 → 2010-09-07 (+25d) |  | 11.5d → 41d | constraint none → start no earlier than 2010-09-06 |
| 128 | Borrado de documentos | 2010-07-28 → 2010-09-06 (+40d) | 2010-08-03 → 2010-09-06 (+34d) |  | 10d → 15d | constraint none → start no earlier than 2010-09-06; resources Programador Sr 2 → Programador Jr 2 |
| 129 | Clasificación de documentos | 2010-07-23 → 2010-08-31 (+39d) | 2010-07-23 → 2010-08-31 (+39d) |  | 26d → 19d | constraint none → start no earlier than 2010-08-31; resources Programador Sr 2 → Programador Jr 2 |
| 130 | Búsqueda de documentos | 2010-07-26 → 2010-09-06 (+42d) | 2010-07-28 → 2010-09-07 (+41d) |  |  | constraint none → start no earlier than 2010-09-06; resources Programador Sr 2 → Programador Jr 1 |
| 131 | (ADM04) Mantenimiento de Recursos | 2010-07-16 → 2010-08-23 (+38d) | 2010-07-21 → 2010-08-25 (+35d) | 2d → 3d | 11d → 44d | constraint none → start no earlier than 2010-08-02 |
| 132 | (ADM05) Mantenimiento de guias de interrogatorio | 2010-07-27 → 2010-08-30 (+34d) | 2010-08-03 → 2010-09-01 (+29d) | 2d → 3d | 4d → 43d | constraint none → start no earlier than 2010-08-30; resources Programador Sr 2 → Prog SSr 1 |
| 133 | (ADM06) Mantenimiento de Fichas tematicas | 2010-08-04 → 2010-08-30 (+26d) | 2010-08-05 → 2010-09-01 (+27d) | 2d → 3d | 11.5d → 43d | constraint none → start no earlier than 2010-08-27; resources Programador Sr 2 → Programador Sr 1 |
| 134 | **(ADM07) Mantenimiento de relaciones sobre guias de interrogatorio y fichas tematicas** | 2010-07-22 → 2010-08-26 (+35d) | 2010-07-22 → 2010-08-27 (+36d) | 1d → 2d | 11d → 43d |  |
| 135 | Adición de documentos a fichas temáticas | 2010-07-22 → 2010-08-27 (+36d) | 2010-07-22 → 2010-08-27 (+36d) |  | 11d → 16d | constraint start no earlier than 2010-07-06 → start no earlier than 2010-08-27 |
| 136 | Adición de documentos a guias de interrogatorio | 2010-07-22 → 2010-08-26 (+35d) | 2010-07-22 → 2010-08-26 (+35d) |  | 11d → 17d | constraint start no earlier than 2010-07-22 → start no earlier than 2010-08-26; resources Programador Jr 1 → Prog SSr 1 |
| 137 | **(ADM08) Mantenimiento de encuestas** | 2010-06-04 → 2010-07-02 (+28d) | 2010-06-04 → 2010-07-21 (+47d) | 1d → 14d | 63d → 77d |  |
| 138 | **Mantenimiento Indice de Encuestas** | 2010-06-04 → 2010-07-12 (+38d) | 2010-06-04 → 2010-07-14 (+40d) | 1d → 3d | 63d → 82d |  |
| 139 | Mantener Ediciones | 2010-06-04 → 2010-07-12 (+38d) | 2010-06-04 → 2010-07-13 (+39d) | 1d → 2d | 63d → 56d | constraint none → start no earlier than 2010-07-12; resources none → Programador Jr 2 |
| 140 | Cierre de ediciones | 2010-06-04 → 2010-07-14 (+40d) | 2010-06-04 → 2010-07-14 (+40d) |  | 63d → 55d | constraint none → start no earlier than 2010-07-14; resources none → Programador Jr 2 |
| 141 | Asignación de formulario a encuesta | 2010-06-04 → 2010-07-16 (+42d) | 2010-06-04 → 2010-07-16 (+42d) |  | 63d → 53d | constraint start no earlier than 2010-06-04 → start no earlier than 2010-07-16; resources Programador Jr 2 → Programador Jr 1 |
| 142 | Asignación de operadores a encuesta | 2010-06-04 → 2010-07-02 (+28d) | 2010-06-04 → 2010-07-02 (+28d) |  | 63d → 65d | constraint start no earlier than 2010-06-04 → start no earlier than 2010-07-02 |
| 143 | **Asignación lista de encuestados** | 2010-06-04 → 2010-07-07 (+33d) | 2010-06-04 → 2010-07-21 (+47d) | 1d → 11d | 63d → 77d |  |
| 144 | Alta, baja de encuestados | 2010-06-04 → 2010-07-07 (+33d) | 2010-06-04 → 2010-07-07 (+33d) |  | 63d → 60d | constraint none → start no earlier than 2010-07-07; resources none → Programador Jr 2 |
| 145 | Asignación automática en base a un archivo de texto | 2010-06-04 → 2010-07-21 (+47d) | 2010-06-04 → 2010-07-21 (+47d) |  | 63d → 50d | constraint none → start no earlier than 2010-07-21; resources none → Programador Jr 1 |
| 146 | Publicar Encuestas | 2010-06-04 → 2010-07-15 (+41d) | 2010-06-04 → 2010-07-15 (+41d) |  | 63d → 54d | constraint none → start no earlier than 2010-07-15; resources none → Programador Jr 2 |
| 147 | **(ADM09) Mantenimiento de seguimiento de patologias** | 2010-06-23 → 2010-08-16 (+54d) | 2010-06-29 → 2010-08-23 (+55d) | 4d → 6d | 44.5d → 49d |  |
| 148 | Mantenimiento Indice de campañas de seguimiento | 2010-06-23 → 2010-08-16 (+54d) | 2010-06-24 → 2010-08-17 (+54d) | 1d → 2d | 47.5d → 43d | constraint start no earlier than 2010-06-21 → start no earlier than 2010-08-16; resources Programador Sr 1 → Programador Sr 2 |
| 149 | Asignación de formulario a campaña de seguimiento | 2010-06-25 → 2010-08-20 (+56d) | 2010-06-28 → 2010-08-20 (+53d) |  | 25d → 23d | constraint start no earlier than 2010-06-25 → start no earlier than 2010-08-20; resources Programador Sr 1 → Programador Jr 1 |
| 150 | Asignación de operadores a campaña de seguimiento | 2010-06-28 → 2010-08-23 (+56d) | 2010-06-29 → 2010-08-23 (+55d) |  | 24d → 22d | constraint start no earlier than 2010-06-28 → start no earlier than 2010-08-23; resources Programador Sr 1 → Programador Jr 1 |
| 151 | Asignación de listas de pacientes | 2010-06-24 → 2010-08-18 (+55d) | 2010-06-25 → 2010-08-18 (+54d) |  | 46.5d → 25d | constraint start no earlier than 2010-06-24 → start no earlier than 2010-08-18; resources Programador Sr 2 → Prog SSr 1 |
| 152 | Activación/ Desactivación de campañas | 2010-06-25 → 2010-08-17 (+53d) | 2010-06-28 → 2010-08-17 (+50d) |  | 25d → 26d | constraint start no earlier than 2010-06-25 → start no earlier than 2010-08-17; resources Programador Sr 2 → Programador Jr 2 |
| 154 | **(ADM10) Creacion de formularios de encuesta y seguimiento** | 2010-06-02 → 2010-06-04 (+2d) | 2010-06-03 → 2010-07-01 (+28d) | 2d → 20d | 32d → 56d |  |
| 155 | Mantener Indice de Encuesta | 2010-06-02 → 2010-06-28 (+26d) | 2010-06-03 → 2010-06-29 (+26d) |  | 35d → 50d | constraint none → start no earlier than 2010-06-28; resources Prog SSr 2 → Programador Sr 1 |
| 156 | Crear y Editar Encuestas | 2010-06-02 → 2010-06-04 (+2d) | 2010-06-03 → 2010-06-07 (+4d) |  | 35d → 73d |  |
| 158 | **(ADM11) Mantenimiento de usuarios, perfiles y permisos** | 2010-06-10 → 2010-06-16 (+6d) | 2010-06-16 → 2010-06-29 (+13d) | 4d → 10d | 37.5d → 65d |  |
| 159 | Mantenimiento Opciones Funcionales | 2010-06-14 → 2010-06-16 (+2d) | 2010-06-15 → 2010-06-17 (+2d) |  | 38d → 66d | constraint none → start no earlier than 2010-06-16; resources none → Programador Sr 2 |
| 160 | **Mantener Perfiles Trabajo** | 2010-06-10 → 2010-06-16 (+6d) | 2010-06-15 → 2010-06-18 (+3d) |  | 38.5d → 72d |  |
| 161 | Alta, modificación de perfiles | 2010-06-14 → 2010-06-18 (+4d) | 2010-06-15 → 2010-06-18 (+3d) |  | 38.5d → 65d | constraint none → start no earlier than 2010-06-18; resources none → Programador Jr 1 |
| 162 | ABM de opciones funcionales a perfil | 2010-06-10 → 2010-06-16 (+6d) | 2010-06-11 → 2010-06-16 (+5d) |  | 40.5d → 67d | constraint none → start no earlier than 2010-06-16; resources none → Programador Jr 2 |
| 163 | Adición de responsabilidades a opciones funcionales | 2010-06-11 → 2010-06-17 (+6d) | 2010-06-14 → 2010-06-17 (+3d) |  | 39.5d → 66d | constraint none → start no earlier than 2010-06-17; resources none → Programador Jr 2 |
| 164 | **Mantener Usuarios** | 2010-06-11 → 2010-06-17 (+6d) | 2010-06-16 → 2010-06-29 (+13d) | 3d → 9d | 37.5d → 65d |  |
| 165 | Creación/gestion de usuarios | 2010-06-11 → 2010-06-17 (+6d) | 2010-06-14 → 2010-06-17 (+3d) |  | 39.5d → 66d | constraint none → start no earlier than 2010-06-17; resources none → Programador Jr 1 |

| ID | Task | Start | Finish | Duration | Total float | Other |
| --- | --- | --- | --- | --- | --- | --- |
| 166 | Asiganción de perfil a usuario | 2010-06-14 → 2010-06-21 (+7d) | 2010-06-15 → 2010-06-21 (+6d) |  | 38.5d → 64d | constraint none → start no earlier than 2010-06-21; resources none → Programador Jr 2 |
| 167 | Asignación de agendas a usuario | 2010-06-15 → 2010-06-28 (+13d) | 2010-06-16 → 2010-06-29 (+13d) | 1d → 2d | 37.5d → 65d | constraint none → start no earlier than 2010-06-28; resources none → Programador Jr 2 |
| 169 | **(ADM12) Listado de acciones proactivas** | 2010-07-23 → 2010-08-25 (+33d) | 2010-07-26 → 2010-09-15 (+51d) | 2d → 16d | 27d → 37d |  |
| 170 | Módulo de elaboraciónde informes de estado de campaña de seguimiento | 2010-07-23 → 2010-08-25 (+33d) | 2010-07-26 → 2010-08-27 (+32d) | 2d → 3d | 27d → 21d | constraint none → start no earlier than 2010-08-25; resources none → Programador Sr 1 |
| 171 | Módulo de elaboración de informes de estado de encuesta | 2010-07-23 → 2010-08-26 (+34d) | 2010-07-26 → 2010-08-30 (+35d) | 2d → 3d | 27d → 20d | constraint none → start no earlier than 2010-08-26; resources none → Programador Sr 2 |
| 172 | Módulo de elaboración de informes de ediciones de encuestas | 2010-07-23 → 2010-09-02 (+41d) | 2010-07-26 → 2010-09-06 (+42d) | 2d → 3d | 27d → 15d | constraint none → start no earlier than 2010-09-02; resources none → Programador Sr 1 |
| 173 | Módulo de elaboración de listados de campañas de seguimiento | 2010-07-23 → 2010-09-08 (+47d) | 2010-07-26 → 2010-09-10 (+46d) | 2d → 3d | 27d → 11d | constraint none → start no earlier than 2010-09-08; resources none → Programador Sr 2 |
| 174 | Módulo de elaboración de listados de información de encuestas | 2010-07-23 → 2010-09-09 (+48d) | 2010-07-26 → 2010-09-13 (+49d) | 2d → 3d | 27d → 10d | constraint none → start no earlier than 2010-09-09; resources none → Programador Sr 1 |
| 176 | **(ADM13) Listados de documentos** | 2010-08-13 → 2010-09-08 (+26d) | 2010-08-16 → 2010-09-10 (+25d) | 1d → 3d | 12.5d → 40d |  |
| 177 | Elaboración de listado de configuración | 2010-08-13 → 2010-09-08 (+26d) | 2010-08-16 → 2010-09-08 (+23d) |  | 12.5d → 41d | constraint none → start no earlier than 2010-09-07; resources none → Programador Jr 1 |
| 178 | Elaboración de listado de uso | 2010-08-13 → 2010-09-08 (+26d) | 2010-08-16 → 2010-09-08 (+23d) |  | 12.5d → 41d | constraint none → start no earlier than 2010-09-06; resources none → Programador Jr 2 |
| 179 | Elaboración de listado de asociaciones | 2010-08-13 → 2010-09-09 (+27d) | 2010-08-16 → 2010-09-09 (+24d) |  | 12.5d → 13d | constraint none → start no earlier than 2010-09-09; resources none → Programador Jr 2 |
| 181 | **(ADM14) Listado sobre consultas** | 2010-07-23 → 2010-08-31 (+39d) | 2010-07-23 → 2010-09-21 (+60d) | 1d → 16d | 28d → 33d |  |
| 182 | Módulo de obtención de listados de consulta por ciudadano | 2010-07-23 → 2010-09-13 (+52d) | 2010-07-23 → 2010-09-14 (+53d) | 1d → 2d | 28d → 9d | constraint none → start no earlier than 2010-09-13; resources none → Prog SSr 1 |
| 183 | Módulo de obtención de listados de consultas con cierre principal | 2010-07-23 → 2010-08-31 (+39d) | 2010-07-23 → 2010-09-01 (+40d) | 1d → 2d | 28d → 18d | constraint none → start no earlier than 2010-08-31; resources none → Programador Sr 2 |
| 184 | Módulo de obtención de listados de consulta con cierre secundario | 2010-07-23 → 2010-09-02 (+41d) | 2010-07-23 → 2010-09-03 (+42d) | 1d → 2d | 28d → 16d | constraint none → start no earlier than 2010-09-02; resources none → Programador Sr 2 |
| 185 | Módulo de obtención de listados de consulta por motivo de cierre | 2010-07-23 → 2010-09-09 (+48d) | 2010-07-23 → 2010-09-10 (+49d) | 1d → 2d | 28d → 11d | constraint none → start no earlier than 2010-09-09; resources none → Prog SSr 1 |
| 186 | Módulo de obtención de listado de resumen de consultas por servicio | 2010-07-23 → 2010-09-16 (+55d) | 2010-07-23 → 2010-09-17 (+56d) | 1d → 2d | 28d → 6d | constraint none → start no earlier than 2010-09-16; resources none → Programador Sr 1 |
| 187 | Módulo de obtención de listado de consultas por área geográfica | 2010-07-23 → 2010-09-13 (+52d) | 2010-07-23 → 2010-09-14 (+53d) | 1d → 2d | 28d → 9d | constraint none → start no earlier than 2010-09-13; resources none → Programador Sr 2 |
| 188 | Módulo de obtención de listado de consultas por usuario | 2010-07-23 → 2010-09-14 (+53d) | 2010-07-23 → 2010-09-15 (+54d) | 1d → 2d | 28d → 8d | constraint none → start no earlier than 2010-09-14; resources none → Programador Sr 1 |
| 189 | Módulo de obtención de listado de consultas pendientes | 2010-07-23 → 2010-09-15 (+54d) | 2010-07-23 → 2010-09-16 (+55d) | 1d → 2d | 28d → 7d | constraint none → start no earlier than 2010-09-15; resources none → Programador Sr 2 |
| 191 | **(ADM15) Mantener Asignaciones TSI** | 2010-07-23 → 2010-07-15 (-8d) | 2010-07-29 → 2010-09-17 (+50d) | 5d → 47d | -2d → 0d |  |
| 193 | Recolección de datos de operaciones TSI pendientes | 2010-07-23 → 2010-08-02 (+10d) | 2010-07-23 → 2010-08-04 (+12d) | 1d → 3d | 2d → 40d | constraint none → start no earlier than 2010-08-02; resources none → Programador Jr 1 |
| 194 | Migración de los datos a archivo TXT | 2010-07-23 → 2010-07-29 (+6d) | 2010-07-26 → 2010-07-30 (+4d) |  | 1d → 43d | constraint none → start no earlier than 2010-07-29; resources none → Programador Jr 2 |
| 195 | Interface de comunicación con CatSalut | 2010-07-23 → 2010-07-15 (-8d) | 2010-07-29 → 2010-07-21 (-8d) |  | -2d → 50d | constraint none → start no earlier than 2010-07-15; resources none → Programador Sr 2 |
| 197 | **(ADM16) Asignar documentos a acciones** | 2010-08-13 → 2010-09-08 (+26d) | 2010-08-16 → 2010-09-22 (+37d) | 1d → 11d | 12.5d → 32d |  |
| 198 | Creación/eliminación de asociaciones | 2010-08-13 → 2010-09-13 (+31d) | 2010-08-16 → 2010-09-13 (+28d) |  | 12.5d → 11d | constraint none → start no earlier than 2010-09-13; resources none → Programador Jr 2 |
| 199 | Cadicidad de asociaciones | 2010-08-13 → 2010-09-08 (+26d) | 2010-08-16 → 2010-09-08 (+23d) |  | 12.5d → 41d | constraint none → start no earlier than 2010-09-07; resources none → Programador Sr 1 |
| 201 | **(INT01) Direcciones de farmacias, CAP y otra informacion breve** | 2010-08-03 → 2010-09-02 (+30d) | 2010-08-04 → 2010-09-09 (+36d) | 2d → 6d | 15d → 13d |  |
| 202 | Trabajo con listas de resultados | 2010-08-03 → 2010-09-02 (+30d) | 2010-08-04 → 2010-09-03 (+30d) |  | 15d → 16d | constraint none → start no earlier than 2010-09-01; resources none → Programador Jr 1 |
| 204 | **(SIS01) Trazabilidad y registro de uso** | 2010-06-14 → 2010-06-21 (+7d) | 2010-06-29 → 2010-07-30 (+31d) | 11.5d → 30d | 46.5d → 70d |  |
| 205 | Control Acceso a Consultas | 2010-06-15 → 2010-06-22 (+7d) | 2010-06-17 → 2010-06-23 (+6d) |  | 44d → 68d | constraint none → start no earlier than 2010-06-22 |
| 206 | Control Acceso a Encuestas | 2010-06-21 → 2010-07-06 (+15d) | 2010-06-23 → 2010-07-07 (+14d) |  | 49.5d → 58d | constraint start no earlier than 2010-06-21 → start no earlier than 2010-07-06; resources Programador Sr 1 → Programador Sr 2 |
| 207 | Control General Acceso al Sistema | 2010-06-17 → 2010-06-24 (+7d) | 2010-06-21 → 2010-06-25 (+4d) |  | 42d → 66d | constraint none → start no earlier than 2010-06-24 |
| 208 | Control Acceso a Campañas de Seguimiento | 2010-06-17 → 2010-06-21 (+4d) | 2010-06-18 → 2010-06-23 (+5d) |  | 42.5d → 68.5d | constraint none → start no earlier than 2010-06-21 |
| 209 | Control Acceso a Documentos | 2010-06-23 → 2010-07-08 (+15d) | 2010-06-29 → 2010-07-09 (+10d) |  | 36d → 56d | constraint none → start no earlier than 2010-07-08 |
| 210 | Control Acceso a Recursos Internos | 2010-06-16 → 2010-06-21 (+5d) | 2010-06-22 → 2010-06-25 (+3d) | 2d → 3d | 27.5d → 83d |  |
| 211 | Historial de Consultas | 2010-06-14 → 2010-07-27 (+43d) | 2010-06-14 → 2010-07-28 (+44d) | 1d → 2d | 36.5d → 60d | constraint start no earlier than 2010-06-14 → start no earlier than 2010-07-27 |
| 213 | **(ISC01) Transferir info, comunicacion a STARS** | 2010-06-21 → 2010-06-16 (-5d) |  | 3d → 6d | 50d → 97d |  |
| 214 | Recibir información del sistema de comunicaciones | 2010-06-21 → 2010-06-16 (-5d) |  | 3d → 6d | 26d → 70d | constraint none → start no earlier than 2010-06-16; resources Prog SSr 1; Prog SSr 2 → Prog SSr 1 |
| 215 | **(ISC02) Iniciar llamada desde STARS** | 2010-06-28 → 2010-07-21 (+23d) | 2010-06-30 → 2010-08-06 (+37d) | 3d → 13d | 45d → 65d |  |
| 216 | Lanzamiento de petición de comunicación | 2010-06-28 → 2010-07-21 (+23d) | 2010-06-30 → 2010-07-28 (+28d) | 3d → 6d | 21d → 44d | constraint none → start no earlier than 2010-07-21; resources Prog SSr 1; Prog SSr 2 → Programador Sr 1 |
| 218 | **(ISC03) Informacion encuesta** | 2010-06-04 → 2010-07-08 (+34d) | 2010-06-04 → 2010-07-08 (+34d) |  | 63d → 86d |  |
| 219 | Activación actividad de encuesta | 2010-06-04 → 2010-07-08 (+34d) | 2010-06-04 → 2010-07-08 (+34d) |  | 63d → 61d | constraint none → start no earlier than 2010-07-08; resources none → Programador Jr 2 |
| 220 | ABM Consultas | 2010-06-29 → 2010-06-22 (-7d) | 2010-06-30 → 2010-06-22 (-8d) |  | 45.5d → 94d | constraint start no earlier than 2010-06-29 → start no earlier than 2010-06-22; resources Programador Jr 1 → Programador Jr 2 |
| 221 | ABM Usuarios | 2010-06-11 → 2010-06-24 (+13d) | 2010-06-11 → 2010-06-24 (+13d) |  | 55d → 82d | constraint none → start no earlier than 2010-06-24; resources none → Programador Jr 1 |
| 222 | Proteccion de Acceso | 2010-06-14 → 2010-07-12 (+28d) | 2010-06-16 → 2010-07-14 (+28d) |  | 55d → 72d | constraint none → start no earlier than 2010-07-12; resources none → Programador Sr 2 |
| 223 | ABM Fichas / Guias / Recursos | 2010-07-22 → 2010-08-27 (+36d) | 2010-07-26 → 2010-08-31 (+36d) |  | 27d → 44d | constraint none → start no earlier than 2010-08-27; resources none → Programador Jr 1 |
| 224 | ABM Cuestionarios | 2010-06-04 → 2010-07-05 (+31d) | 2010-06-04 → 2010-07-05 (+31d) |  | 63d → 75d | constraint none → start no earlier than 2010-07-05; resources none → Programador Jr 1 |
| 225 | Interfaz General | 2010-06-17 → 2010-06-24 (+7d) | 2010-07-13 → 2010-07-21 (+8d) | 13d → 20d | 15.5d → 54d | constraint none → start no earlier than 2010-06-24; resources Prog SSr 1; Prog SSr 2 → Prog SSr 1 |
| 226 | Interfaz Para Usuario Avanzado | 2010-06-23 → 2010-08-18 (+56d) | 2010-06-30 → 2010-08-24 (+55d) |  | 45.5d → 30d | constraint none → start no earlier than 2010-08-18; resources none → Programador Sr 1 |
| 227 | Interfaz de Listados para ADM02 | 2010-07-23 → 2010-09-02 (+41d) | 2010-07-29 → 2010-09-08 (+41d) |  | 24d → 19d | constraint none → start no earlier than 2010-09-02; resources none → Prog SSr 1 |
| 228 | Interfaz Mantenimiento Usuarios y Perfiles | 2010-06-16 → 2010-07-22 (+36d) | 2010-06-23 → 2010-07-28 (+35d) |  | 50.5d → 49d | constraint none → start no earlier than 2010-07-22; resources none → Programador Sr 2 |
| 229 | Interfaz Direcciones INT01 | 2010-08-05 → 2010-09-15 (+41d) | 2010-08-11 → 2010-09-21 (+41d) |  | 15d → 10d | constraint none → start no earlier than 2010-09-15; resources none → Prog SSr 1 |
| 230 | ABM Enfermedades / Centros Salud | 2010-08-05 → 2010-09-10 (+36d) | 2010-08-06 → 2010-09-13 (+38d) |  | 18d → 35d | constraint none → start no earlier than 2010-09-08; resources none → Programador Jr 1 |
| 231 | Listado de Usuarios y Perfiles | 2010-07-12 → 2010-07-08 (-4d) | 2010-07-12 → 2010-07-08 (-4d) |  | 37d → 76d | constraint none → start no earlier than 2010-07-08; resources none → Programador Jr 1 |
| 232 | Interface con sistema de comunicaciones (ISC01, ISC02, ISC03) | 2010-06-08 → 2010-06-30 (+22d) | 2010-06-21 → 2010-07-12 (+21d) |  | 52.5d → 61d | constraint none → start no earlier than 2010-06-30; resources Programador Jr 1; Programador Jr 2 → Programador Sr 1 |
| 236 | Arquitectura General / Configuracion Ambientes | 2010-05-12 → 2010-05-14 (+2d) | 2010-06-01 → 2010-06-03 (+2d) |  | 17d → 13d |  |
| 237 | **Tareas IT Sobre Nuestra Empresa** |  | 2010-06-08 → 2010-11-05 (+150d) | 24d → 132d | 27d → 0d |  |
| 238 | Compra Equipos Necesarios |  |  | 1.5d → 2d | 81d → 118d |  |
| 239 | **Infraestructura** |  | 2010-05-18 → 2010-05-20 (+2d) | 9d → 11d | 27d → 15d |  |
| 240 | Preparacion de Ambientes en servidores |  | 2010-05-06 → 2010-05-07 (+1d) | 1d → 2d | 57d → 117d |  |
| 241 | Instalacion y Configuracion de Servidor DEV | 2010-05-07 → 2010-05-10 (+3d) | 2010-05-11 → 2010-05-13 (+2d) | 3d → 4d | 18d → 19d | constraint none → start no earlier than 2010-05-10 |
| 242 | Instalacion y Configuracion de Servidores de Usos Multiples | 2010-05-12 → 2010-05-14 (+2d) | 2010-05-18 → 2010-05-20 (+2d) |  | 49d → 108d | constraint start no earlier than 2010-05-11 → start no earlier than 2010-05-14 |
| 245 | Instalacion de pcs nuevos usuarios | 2010-05-07 → 2010-05-10 (+3d) |  | 2.5d → 2d | 81d → 118d |  |
