# Casos Uso

How a schedule from MS Project changed from version to version. A marks actual dates.

## Version 1 (saved 2010-07-15, file CasosUsov4.mpp)

Note of the change: revert to previous version

| ID | WBS | Task | Duration | Start | Finish | Predecessors | Total float |
| --- | --- | --- | --- | --- | --- | --- | --- |
| 1 |  | Integracion con el Sistema STARS (Lectura Datos) | 1d? | 2010-05-06 | 2010-05-06 |  | 1d |
| 2 |  | Modulo Seguridad que Oculta Info Llamado | 1d? | 2010-05-06 | 2010-05-06 |  | 1d |
| 3 | 3 | **(GEN01) Identificacion y Autenticacion** | 1d | 2010-05-07 | 2010-05-07 | 199 | 0d |
| 4 |  | Autenticacion | 1d | 2010-05-07 | 2010-05-07 |  | 0d |
| 5 |  | Interfaz Inicio Sesion | 1d | 2010-05-07 | 2010-05-07 |  | 0d |
| 6 | 4 | **(GEN02) Gestion General de Registros** | 2d | 2010-05-06 | 2010-05-07 |  | 4d |
| 7 |  | ABM Registro | 1d | 2010-05-06 | 2010-05-06 |  | 5d |
| 8 |  | Buscar registro | 1d | 2010-05-06 | 2010-05-06 |  | 5d |
| 9 |  | Copiar registro | 1d | 2010-05-06 | 2010-05-06 |  | 5d |
| 10 |  | Interfaz ABM Registro | 2d | 2010-05-06 | 2010-05-07 |  | 4d |
| 11 | 5 | **(USR01) Determinacion del servicio de atencion** | 1d? | 2010-05-10 | 2010-05-10 | 1, 3 | 1d |
| 12 |  | Capturar la Comunicación???? | 1d? | 2010-05-10 | 2010-05-10 |  | 1d |
| 13 |  | Determinar el tipod e servicio | 1d? | 2010-05-10 | 2010-05-10 |  | 1d |
| 14 |  | Lista de Espera | 1d? | 2010-05-10 | 2010-05-10 |  | 1d |
| 15 |  | Determinar conjunto de operadores adecuados al tipo de solicitud | 1d? | 2010-05-10 | 2010-05-10 |  | 1d |
| 16 | 6 | **(USR02) Agenda** | 2d? | 2010-05-10 | 2010-05-11 | 3, 71 | 0d |
| 17 |  | Selección de una agenda | 1d? | 2010-05-11 | 2010-05-11 | 18 | 0d |
| 18 |  | ABM citas sobre la agenda | 1d? | 2010-05-10 | 2010-05-10 |  | 0d |
| 19 |  | Interfaz de la Agenda | 1d? | 2010-05-10 | 2010-05-10 |  | 1d |
| 20 |  | Integracion con Stars - Llamada desde Agenda | 1d? | 2010-05-10 | 2010-05-10 |  | 1d |
| 21 |  | Asignar pacientes a cita | 1d? | 2010-05-10 | 2010-05-10 |  | 1d |
| 22 |  | (USR03) Rellamada | 1d? | 2010-05-10 | 2010-05-10 | 31, 56 | 4d |
| 23 | 8 | **(USR04) Consulta** | 1d? | 2010-05-11 | 2010-05-11 | 11, 61, 67, 31, 74, 71 | 1d |
| 24 | 8.1 | **Tratar Consulta** | 1d? | 2010-05-11 | 2010-05-11 | 61, 67 | 1d |
| 25 |  | Ajornar Consulta | 1d? | 2010-05-11 | 2010-05-11 |  | 1d |
| 26 |  | Transferir consulta | 1d? | 2010-05-11 | 2010-05-11 |  | 1d |
| 27 |  | Modulo Envio de Correo | 1d? | 2010-05-11 | 2010-05-11 |  | 1d |
| 28 |  | Modulo Envio SMS | 1d? | 2010-05-11 | 2010-05-11 |  | 1d |
| 29 |  | Inclusion en Campaña de Seguimiento | 1d? | 2010-05-11 | 2010-05-11 |  | 1d |
| 30 |  | (USR05) Consejo Salud | 1d? | 2010-05-12 | 2010-05-12 | 61, 67, 23 | 1d |
| 31 | 10 | **(USR06) Gestionar Consulta pendiente** | 1d? | 2010-05-06 | 2010-05-06 |  | 3d |
| 32 |  | Priorizacion de la Lista de Consultas | 1d? | 2010-05-06 | 2010-05-06 |  | 3d |
| 33 | 11 | **(USR07) Programacion de cita previa** | 1d? | 2010-05-07 | 2010-05-07 | 67, 74 | 4d |
| 34 |  | Realizar Citación (Interface con Sistema de citación AP) | 1d? | 2010-05-07 | 2010-05-07 |  | 5d |
| 35 | 12 | **(USR08) Gestiones sobre la TSI** | 1d? | 2010-05-12 | 2010-05-12 | 31, 74, 67, 23 | 1d |
| 36 |  | Verificacion Documentacion Necesaria | 1d? | 2010-05-12 | 2010-05-12 |  | 1d |
| 37 |  | Enviar Gestion (Interface con sistema RCA) | 1d? | 2010-05-12 | 2010-05-12 |  | 1d |
| 38 |  | Cierre automatico de la consulta por paso de tiempo | 1d? | 2010-05-12 | 2010-05-12 |  | 1d |
| 39 |  | Guardar LOG gestion TSI????? | 1d? | 2010-05-12 | 2010-05-12 |  | 1d |
| 40 | 13 | **(USR09) Servicio de traduccion** | 1d? | 2010-05-12 | 2010-05-12 | 23, 67 | 1d |
| 41 |  | Contactar Servicio Externo de Traduccion | 1d? | 2010-05-12 | 2010-05-12 |  | 1d |
| 42 |  | Enlace Comunicacion Multiconferencia | 1d? | 2010-05-12 | 2010-05-12 |  | 1d |
| 43 |  | Modulo monitorización de servicio | 1d? | 2010-05-12 | 2010-05-12 |  | 1d |
| 44 | 14 | **(USR10) Informacion Sanitaria General** | 1d? | 2010-05-12 | 2010-05-12 | 67, 74, 170, 23 | 1d |
| 45 |  | Guardar Informacion Ciudadano | 1d? | 2010-05-12 | 2010-05-12 |  | 1d |
| 46 | 15 | **(USR11) Seguimiento de Patologias** | 1d? | 2010-05-12 | 2010-05-12 | 16, 31 | 0d |
| 47 |  | Buscar Campañas Abiertas | 1d? | 2010-05-12 | 2010-05-12 |  | 0d |
| 48 | 15.2 | **Gestionar Seguimiento** | 1d? | 2010-05-12 | 2010-05-12 |  | 0d |
| 49 |  | Visualizar Historial Pacientes | 1d? | 2010-05-12 | 2010-05-12 |  | 0d |
| 50 |  | Llamada al Paciente | 1d? | 2010-05-12 | 2010-05-12 |  | 0d |
| 51 |  | Desligar paciente de campaña | 1d? | 2010-05-12 | 2010-05-12 |  | 0d |
| 52 | 16 | **(USR12) Encuestas** | 1d? | 2010-05-06 | 2010-05-06 |  | 4d |
| 53 |  | Interfaz de Encuestas | 1d? | 2010-05-06 | 2010-05-06 |  | 4d |
| 54 |  | Contacto con Encuestado | 1d? | 2010-05-06 | 2010-05-06 |  | 4d |
| 55 |  | ABM Formulario De Encuesta | 1d? | 2010-05-06 | 2010-05-06 |  | 4d |
| 56 | 17 | **(USR13) Buscar Consultas** | 1d? | 2010-05-07 | 2010-05-07 | 71 | 3d |
| 57 | 17.1 | **Operativo de Busqueda** | 1d? | 2010-05-07 | 2010-05-07 |  | 3d |
| 58 |  | Buscar según distintos criterios | 1d? | 2010-05-07 | 2010-05-07 |  | 4d |
| 59 |  | Filtrar resultados de la busqueda según permisos del usuario | 1d? | 2010-05-07 | 2010-05-07 |  | 4d |
| 60 |  | Acotar resultados si los mismos sobrepasan el parametro configurable "n" | 1d? | 2010-05-07 | 2010-05-07 |  | 4d |
| 61 | 18 | **(USR14) Hacer Uso de Documentos** | 1d? | 2010-05-06 | 2010-05-06 |  | 3d |
| 62 |  | Creación y uso de Guias Interrogatorio | 1d? | 2010-05-06 | 2010-05-06 |  | 3d |
| 63 |  | Creación y uso Fichas Tematicas | 1d? | 2010-05-06 | 2010-05-06 |  | 3d |
| 64 |  | Creación y uso de Recursos | 1d? | 2010-05-06 | 2010-05-06 |  | 3d |
| 65 |  | Búsqueda y selección de documentos | 1d? | 2010-05-06 | 2010-05-06 |  | 3d |
| 66 |  | Apertura documentos | 1d? | 2010-05-06 | 2010-05-06 |  | 3d |
| 67 | 19 | **(USR15) Cerrar consulta y dar respuesta al ciudadano** | 1d? | 2010-05-06 | 2010-05-06 |  | 3d |
| 68 |  | Clasificar Finalizacion de Consulta | 1d? | 2010-05-06 | 2010-05-06 |  | 3d |
| 69 |  | Adición de motivo de cierre a la consulta | 1d? | 2010-05-06 | 2010-05-06 |  | 3d |
| 70 |  | Creación de clasificaciones ad-hoc | 1d? | 2010-05-06 | 2010-05-06 |  | 3d |

| ID | WBS | Task | Duration | Start | Finish | Predecessors | Total float |
| --- | --- | --- | --- | --- | --- | --- | --- |
| 71 | 20 | **(USR16) Visualizar Consulta** | 1d? | 2010-05-06 | 2010-05-06 |  | 1d |
| 72 |  | Mostrar datos generales de la consulta | 1d? | 2010-05-06 | 2010-05-06 |  | 1d |
| 73 |  | Mostrar datos según el documento elegido | 1d? | 2010-05-06 | 2010-05-06 |  | 1d |
| 74 | 21 | **(USR17) Crear/Transferir Consulta** | 1d? | 2010-05-06 | 2010-05-06 |  | 3d |
| 75 |  | Crear Consulta | 1d? | 2010-05-06 | 2010-05-06 |  | 3d |
| 76 |  | Copiar consulta | 1d? | 2010-05-06 | 2010-05-06 |  | 3d |
| 77 | 21.3 | **Transferir Consulta** | 1d? | 2010-05-06 | 2010-05-06 |  | 3d |
| 78 |  | Localizar a otro operador del mismo perfil | 1d? | 2010-05-06 | 2010-05-06 |  | 3d |
| 79 | 22 | **(ADM01) Mantenimiento del Entorno, clasif y prioridades** | 1d? | 2010-05-07 | 2010-05-07 | 193 | 2d |
| 80 |  | Módulo de edición de parametros grales de la aplicación | 1d? | 2010-05-07 | 2010-05-07 |  | 2d |
| 81 |  | Módulo edición listas de clasificaciones (Códigos internos) | 1d? | 2010-05-07 | 2010-05-07 |  | 2d |
| 82 | 22.3 | **Módulo mantenimiento de la lista de espera** | 1d? | 2010-05-07 | 2010-05-07 |  | 2d |
| 83 |  | ABM de la lista de espera | 1d? | 2010-05-07 | 2010-05-07 |  | 2d |
| 84 |  | Módulo de gestión de prioridades sobre la lista de espera | 1d? | 2010-05-07 | 2010-05-07 |  | 2d |
| 85 | 22.4 | **Módulo mantenimiento de lineas de servicio** | 1d? | 2010-05-07 | 2010-05-07 |  | 2d |
| 86 |  | ABM lineas de servicio | 1d? | 2010-05-07 | 2010-05-07 |  | 2d |
| 87 |  | ABM servicios para una linea seleccionada | 1d? | 2010-05-07 | 2010-05-07 |  | 2d |
| 88 | 22.5 | **Módulo mantenimiento agendas** | 1d? | 2010-05-07 | 2010-05-07 |  | 2d |
| 89 |  | Asignar operadores a agenda | 1d? | 2010-05-07 | 2010-05-07 |  | 2d |
| 90 |  | ABM de usuarios de la agenda | 1d? | 2010-05-07 | 2010-05-07 |  | 2d |
| 91 |  | ABM citas de la agenda | 1d? | 2010-05-07 | 2010-05-07 |  | 2d |
| 92 | 22.6 | **Módulo mantenimiento BBDD** | 1d? | 2010-05-07 | 2010-05-07 |  | 2d |
| 93 |  | Módulo comprobación de formato de archivo | 1d? | 2010-05-07 | 2010-05-07 |  | 2d |
| 94 |  | Módulo actualización de BBDD | 1d? | 2010-05-07 | 2010-05-07 |  | 2d |
| 95 | 23 | **(ADM02) Extraccion de estadisticas y listados** | 1d? | 2010-05-07 | 2010-05-07 | 143, 149, 153, 194 | 4d |
| 96 |  | Listados De Administración | 1d? | 2010-05-07 | 2010-05-07 |  | 4d |
| 97 | 23.2 | **Listados Comunes** | 1d? | 2010-05-07 | 2010-05-07 |  | 4d |
| 98 |  | Detalle de estado de finalización consulta/acción | 1d? | 2010-05-07 | 2010-05-07 |  | 4d |
| 99 |  | Listado de clasificaciones | 1d? | 2010-05-07 | 2010-05-07 |  | 4d |
| 100 |  | Listados de incidencias en las comunicaciones | 1d? | 2010-05-07 | 2010-05-07 |  | 4d |
| 101 |  | Ratios por usuario | 1d? | 2010-05-07 | 2010-05-07 |  | 4d |
| 102 |  | Finales de servicio | 1d? | 2010-05-07 | 2010-05-07 |  | 4d |
| 103 | 24 | **(ADM03) Mantenimiento de documentos** | 2d? | 2010-05-10 | 2010-05-11 | 149, 167, 111 | 2d |
| 104 |  | Creación y edición de documentos | 1d? | 2010-05-11 | 2010-05-11 | 108, 109, 110 | 2d |
| 105 |  | Borrado de documentos | 1d? | 2010-05-10 | 2010-05-10 |  | 3d |
| 106 |  | Clasificación de documentos | 1d? | 2010-05-10 | 2010-05-10 |  | 3d |
| 107 |  | Búsqueda de documentos | 1d? | 2010-05-10 | 2010-05-10 |  | 3d |
| 108 |  | (ADM04) Mantenimiento de Recursos | 1d? | 2010-05-07 | 2010-05-07 | 190 | 3d |
| 109 |  | (ADM05) Mantenimiento de guias de interrogatorio | 1d? | 2010-05-10 | 2010-05-10 | 111, 190 | 2d |
| 110 |  | (ADM06) Mantenimiento de Fichas tematicas | 1d? | 2010-05-10 | 2010-05-10 | 111, 190 | 2d |
| 111 | 28 | **(ADM07) Mantenimiento de relaciones sobre guias de interrogatorio y fichas tematicas** | 1d? | 2010-05-07 | 2010-05-07 | 190 | 2d |
| 112 |  | Adición de documentos a fichas temáticas | 1d? | 2010-05-07 | 2010-05-07 |  | 2d |
| 113 |  | Adición de documentos a guias de interrogatorio | 1d? | 2010-05-07 | 2010-05-07 |  | 2d |
| 114 | 29 | **(ADM08) Mantenimiento de encuestas** | 1d? | 2010-05-06 | 2010-05-06 |  | 5d |
| 115 | 29.1 | **Mantenimiento Indice de Encuestas** | 1d? | 2010-05-06 | 2010-05-06 |  | 5d |
| 116 |  | Mantener Ediciones | 1d? | 2010-05-06 | 2010-05-06 |  | 5d |
| 117 |  | Cierre de ediciones | 1d? | 2010-05-06 | 2010-05-06 |  | 5d |
| 118 |  | Asignación de formulario a encuesta | 1d? | 2010-05-06 | 2010-05-06 |  | 5d |
| 119 |  | Asignación de operadores a encuesta | 1d? | 2010-05-06 | 2010-05-06 |  | 5d |
| 120 | 29.4 | **Asignación lista de encuestados** | 1d? | 2010-05-06 | 2010-05-06 |  | 5d |
| 121 |  | Alta, baja de encuestados | 1d? | 2010-05-06 | 2010-05-06 |  | 5d |
| 122 |  | Asignación automática en base a un archivo de texto | 1d? | 2010-05-06 | 2010-05-06 |  | 5d |
| 123 |  | Publicar Encuestas | 1d? | 2010-05-06 | 2010-05-06 |  | 6d |
| 124 | 30 | **(ADM09) Mantenimiento de seguimiento de patologias** | 1d? | 2010-05-06 | 2010-05-06 |  | 5d |
| 125 |  | Mantenimiento Indice de campañas de seguimiento | 1d? | 2010-05-06 | 2010-05-06 |  | 5d |
| 126 |  | Asignación de formulario a campaña de seguimiento | 1d? | 2010-05-06 | 2010-05-06 |  | 5d |
| 127 |  | Asignación de operadores a campaña de seguimiento | 1d? | 2010-05-06 | 2010-05-06 |  | 5d |
| 128 |  | Asignación de listas de pacientes | 1d? | 2010-05-06 | 2010-05-06 |  | 5d |
| 129 |  | Activación/ Desactivación de campañas | 1d? | 2010-05-06 | 2010-05-06 |  | 6d |
| 130 | 31 | **(ADM10) Creacion de formularios de encuesta y seguimiento** | 1d? | 2010-05-07 | 2010-05-07 | 191 | 4d |
| 131 |  | Mantener Indice de Encuesta | 1d? | 2010-05-07 | 2010-05-07 |  | 4d |
| 132 |  | Crear y Editar Encuestas | 1d? | 2010-05-07 | 2010-05-07 |  | 4d |
| 133 | 32 | **(ADM11) Mantenimiento de usuarios, perfiles y permisos** | 1d? | 2010-05-07 | 2010-05-07 | 195 | 3d |
| 134 |  | Mantenimiento Opciones Funcionales | 1d? | 2010-05-07 | 2010-05-07 |  | 3d |
| 135 | 32.2 | **Mantener Perfiles Trabajo** | 1d? | 2010-05-07 | 2010-05-07 |  | 3d |
| 136 |  | Alta, modificación de perfiles | 1d? | 2010-05-07 | 2010-05-07 |  | 3d |
| 137 |  | ABM de opciones funcionales a perfil | 1d? | 2010-05-07 | 2010-05-07 |  | 3d |
| 138 |  | Adición de responsabilidades a opciones funcionales | 1d? | 2010-05-07 | 2010-05-07 |  | 3d |
| 139 | 32.3 | **Mantener Usuarios** | 1d? | 2010-05-07 | 2010-05-07 |  | 3d |
| 140 |  | Creación/gestion de usuarios | 1d? | 2010-05-07 | 2010-05-07 |  | 3d |

| ID | WBS | Task | Duration | Start | Finish | Predecessors | Total float |
| --- | --- | --- | --- | --- | --- | --- | --- |
| 141 |  | Asiganción de perfil a usuario | 1d? | 2010-05-07 | 2010-05-07 |  | 3d |
| 142 |  | Asignación de agendas a usuario | 1d? | 2010-05-07 | 2010-05-07 |  | 3d |
| 143 | 33 | **(ADM12) Listado de acciones proactivas** | 1d? | 2010-05-06 | 2010-05-06 |  | 4d |
| 144 |  | Módulo de elaboraciónde informes de estado de campaña de seguimiento | 1d? | 2010-05-06 | 2010-05-06 |  | 5d |
| 145 |  | Módulo de elaboración de informes de estado de encuesta | 1d? | 2010-05-06 | 2010-05-06 |  | 5d |
| 146 |  | Módulo de elaboración de informes de ediciones de encuestas | 1d? | 2010-05-06 | 2010-05-06 |  | 5d |
| 147 |  | Módulo de elaboración de listados de campañas de seguimiento | 1d? | 2010-05-06 | 2010-05-06 |  | 5d |
| 148 |  | Módulo de elaboración de listados de información de encuestas | 1d? | 2010-05-06 | 2010-05-06 |  | 5d |
| 149 | 34 | **(ADM13) Listados de documentos** | 1d? | 2010-05-06 | 2010-05-06 |  | 4d |
| 150 |  | Elaboración de listado de configuración | 1d? | 2010-05-06 | 2010-05-06 |  | 5d |
| 151 |  | Elaboración de listado de uso | 1d? | 2010-05-06 | 2010-05-06 |  | 5d |
| 152 |  | Elaboración de listado de asociaciones | 1d? | 2010-05-06 | 2010-05-06 |  | 5d |
| 153 | 35 | **(ADM14) Listado sobre consultas** | 1d? | 2010-05-06 | 2010-05-06 |  | 4d |
| 154 |  | Módulo de obtención de listados de consulta por ciudadano | 1d? | 2010-05-06 | 2010-05-06 |  | 5d |
| 155 |  | Módulo de obtención de listados de consultas con cierre principal | 1d? | 2010-05-06 | 2010-05-06 |  | 5d |
| 156 |  | Módulo de obtención de listados de consulta con cierre secundario | 1d? | 2010-05-06 | 2010-05-06 |  | 5d |
| 157 |  | Módulo de obtención de listados de consulta por motivo de cierre | 1d? | 2010-05-06 | 2010-05-06 |  | 5d |
| 158 |  | Módulo de obtención de listado de resumen de consultas por servicio | 1d? | 2010-05-06 | 2010-05-06 |  | 5d |
| 159 |  | Módulo de obtención de listado de consultas por área geográfica | 1d? | 2010-05-06 | 2010-05-06 |  | 5d |
| 160 |  | Módulo de obtención de listado de consultas por usuario | 1d? | 2010-05-06 | 2010-05-06 |  | 5d |
| 161 |  | Módulo de obtención de listado de consultas pendientes | 1d? | 2010-05-06 | 2010-05-06 |  | 5d |
| 162 | 36 | **(ADM15) Mantener Asignaciones TSI** | 1d? | 2010-05-10 | 2010-05-10 | 79 | 3d |
| 163 | 36.1 | **Módulo de envío de datos a CatSalut** | 1d? | 2010-05-10 | 2010-05-10 |  | 3d |
| 164 |  | Recolección de datos de operaciones TSI pendientes | 1d? | 2010-05-10 | 2010-05-10 |  | 3d |
| 165 |  | Migración de los datos a archivo TXT | 1d? | 2010-05-10 | 2010-05-10 |  | 3d |
| 166 |  | Interface de comunicación con CatSalut | 1d? | 2010-05-10 | 2010-05-10 |  | 3d |
| 167 | 37 | **(ADM16) Asignar documentos a acciones** | 1d? | 2010-05-06 | 2010-05-06 |  | 4d |
| 168 |  | Creación/eliminación de asociaciones | 1d? | 2010-05-06 | 2010-05-06 |  | 5d |
| 169 |  | Cadicidad de asociaciones | 1d? | 2010-05-06 | 2010-05-06 |  | 5d |
| 170 | 38 | **(INT01) Direcciones de farmacias, CAP y otra informacion breve** | 1d? | 2010-05-11 | 2010-05-11 | 11, 196, 61, 79 | 1d |
| 171 |  | Trabajo con listas de resultados | 1d? | 2010-05-11 | 2010-05-11 |  | 1d |
| 172 | 39 | **(SIS01) Trazabilidad y registro de uso** | 6d? | 2010-05-06 | 2010-05-13 |  | 0d |
| 173 |  | Control Acceso a Consultas | 1d? | 2010-05-12 | 2010-05-12 | 23 | 1d |
| 174 |  | Control Acceso a Encuestas | 1d? | 2010-05-07 | 2010-05-07 | 52 | 4d |
| 175 |  | Control General Acceso al Sistema | 1d? | 2010-05-10 | 2010-05-10 | 133 | 3d |
| 176 |  | Control Acceso a Campañas de Seguimiento | 1d? | 2010-05-13 | 2010-05-13 | 46 | 0d |
| 177 |  | Control Acceso a Documentos | 1d? | 2010-05-07 | 2010-05-07 | 61 | 4d |
| 178 |  | Control Acceso a Recursos Internos | 1d? | 2010-05-06 | 2010-05-06 |  | 5d |
| 179 |  | Historial de Consultas | 1d? | 2010-05-06 | 2010-05-06 |  | 5d |
| 180 | 40 | **(ISC01) Transferir info, comunicacion a STARS** | 1d? | 2010-05-06 | 2010-05-06 |  | 5d |
| 181 |  | Recibir información del sistema de comunicaciones | 1d? | 2010-05-06 | 2010-05-06 |  | 5d |
| 182 | 41 | **(ISC02) Iniciar llamada desde STARS** | 1d? | 2010-05-06 | 2010-05-06 |  | 5d |
| 183 |  | Lanzamiento de petición de comunicación | 1d? | 2010-05-06 | 2010-05-06 |  | 5d |
| 184 | 42 | **(ISC03) Informacion encuesta** | 1d? | 2010-05-06 | 2010-05-06 |  | 5d |
| 185 |  | Activación actividad de encuesta | 1d? | 2010-05-06 | 2010-05-06 |  | 5d |
| 187 |  | ABM Consultas | 1d? | 2010-05-06 | 2010-05-06 |  | 5d |
| 188 |  | ABM Usuarios | 1d? | 2010-05-06 | 2010-05-06 |  | 4d |
| 189 |  | Proteccion de Acceso | 1d? | 2010-05-07 | 2010-05-07 | 188 | 4d |
| 190 |  | ABM Fichas / Guias / Recursos | 1d? | 2010-05-06 | 2010-05-06 |  | 2d |
| 191 |  | ABM Cuestionarios | 1d? | 2010-05-06 | 2010-05-06 |  | 4d |
| 192 |  | Interfaz General | 1d? | 2010-05-06 | 2010-05-06 |  | 5d |
| 193 |  | Interfaz Para Usuario Avanzado | 1d? | 2010-05-06 | 2010-05-06 |  | 2d |
| 194 |  | Interfaz de Listados para ADM02 | 1d? | 2010-05-06 | 2010-05-06 |  | 4d |
| 195 |  | Interfaz Mantenimiento Usuarios y Perfiles | 1d? | 2010-05-06 | 2010-05-06 |  | 3d |
| 196 |  | Interfaz Direcciones INT01 | 1d? | 2010-05-06 | 2010-05-06 |  | 3d |
| 197 |  | ABM Enfermedades / Centros Salud | 1d? | 2010-05-06 | 2010-05-06 |  | 5d |
| 198 |  | Listados Iniciales | 1d? | 2010-05-06 | 2010-05-06 |  | 5d |
| 199 |  | Listado de Usuarios y Perfiles | 1d? | 2010-05-06 | 2010-05-06 |  | 0d |
| 200 |  | Interface con sistema de comunicaciones (ISC01, ISC02, ISC03) | 1d? | 2010-05-06 | 2010-05-06 |  | 5d |

## Version 2 (saved 2010-09-02, file Casos Uso v5 Final.mpp)

Note of the change: Version FINAL del project. Subo un doc con las fechas de cada cosa!

Last finish 2010-05-13 → 2010-11-15 (+186d).

Added:

| ID | Task | Duration | Start | Finish | Predecessors | Constraint | Resources |
| --- | --- | --- | --- | --- | --- | --- | --- |
| 6 | Testing Id y Aut | 1d | 2010-06-17 | 2010-06-17 | 5, 4 |  | Tester |
| 12 | Testing Registros | 2d | 2010-07-07 | 2010-07-08 | 11, 9, 8, 10 | start no earlier than 2010-07-07 | Tester |
| 18 | Testing Servicio Atencion | 1d | 2010-09-01 | 2010-09-01 | 14, 15, 16, 17 | start no earlier than 2010-09-01 | Tester |
| 25 | Testing Agenda | 2d | 2010-08-03 | 2010-08-04 | 20, 21, 22, 23, 24 | start no earlier than 2010-08-03 | Tester |
| 27 | Rellamada | 2d | 2010-08-16 | 2010-08-17 |  | start no earlier than 2010-08-16 | Prog SSr 1 |
| 28 | Testing Rellamada | 1d | 2010-08-27 | 2010-08-27 | 27 | start no earlier than 2010-08-27 | Tester |
| 36 | Testing Consulta | 3d | 2010-06-23 | 2010-06-25 | 30, 33, 34, 35 |  | Tester |
| 38 | Consejo Salud | 2d | 2010-09-07 | 2010-09-08 |  | start no earlier than 2010-09-07 | Prog SSr 1 |
| 39 | Testing Consejo Salud | 1d | 2010-09-09 | 2010-09-09 | 38 | start no earlier than 2010-08-27 | Tester |
| 42 | Testing USR06 | 1d | 2010-08-12 | 2010-08-12 | 41 | start no earlier than 2010-08-12 | Tester |
| 45 | Testing USR07 | 1d | 2010-08-26 | 2010-08-26 | 44 | start no earlier than 2010-08-26 | Tester |
| 51 | Testing | 1d | 2010-09-03 | 2010-09-03 | 47, 48, 49, 50 | start no earlier than 2010-09-02 | Tester |
| 56 | Testing | 2d | 2010-08-30 | 2010-08-31 | 53, 54, 55 | start no earlier than 2010-08-30 | Tester |
| 59 | Testing | 1d | 2010-09-16 | 2010-09-16 | 58 | start no earlier than 2010-09-13 | Tester |
| 66 | Testing | 2d | 2010-09-06 | 2010-09-07 | 61, 63, 62, 65 | start no earlier than 2010-09-06 | Tester |
| 71 | Testing | 2d | 2010-07-30 | 2010-08-02 | 68, 69, 70 | start no earlier than 2010-07-30 | Tester |
| 77 | Testing | 1d | 2010-08-09 | 2010-08-09 | 74, 75, 76 | start no earlier than 2010-08-02 | Tester |
| 84 | Testing | 2d | 2010-08-20 | 2010-08-23 | 70, 80, 81, 82, 83 | start no earlier than 2010-08-20 | Tester |
| 89 | Testing | 1d | 2010-08-10 | 2010-08-10 | 86, 87, 88 | start no earlier than 2010-08-10 | Tester |
| 93 | Testing | 1d | 2010-07-12 | 2010-07-12 | 91, 92 | start no earlier than 2010-07-12 | Tester |
| 99 | Testing | 2d | 2010-08-13 | 2010-08-16 | 95, 96, 98 | start no earlier than 2010-08-13 | Tester |
| 116 | Testing | 2d | 2010-08-24 | 2010-08-25 | 102, 101, 103, 106, 109, 113 | start no earlier than 2010-08-24 | Tester |
| 125 | Testing | 1d | 2010-09-13 | 2010-09-13 | 118, 119 | start no earlier than 2010-08-23 | Tester |
| 153 | Testing ADM 3 al 9 | 3d | 2010-08-17 | 2010-08-19 |  | start no earlier than 2010-08-17 | Tester |
| 157 | Testing Creacion Formularios Enc y Seg | 1d | 2010-07-06 | 2010-07-06 | 155, 156 | start no earlier than 2010-07-06 | Tester |
| 168 | Testing Mantenimiento Usuarios | 1d | 2010-07-13 | 2010-07-13 | 159, 160, 164 | start no earlier than 2010-07-13 | Tester |
| 175 | Testing Listados Proactivas | 2d | 2010-10-04 | 2010-10-05 | 170, 171, 172, 173, 174 | start no earlier than 2010-10-04 | Tester |
| 180 | Testing Listado Docs | 1d | 2010-09-24 | 2010-09-24 | 177, 178, 179 | start no earlier than 2010-09-10 | Tester |
| 190 | Testing Listado Consultas | 3d | 2010-10-08 | 2010-10-12 | 182, 183, 184, 185, 186, 187, 188, 189 | start no earlier than 2010-09-20 | Tester |
| 193 | Módulo de envío de datos a CatSalut | 0d? | 2010-07-23 | 2010-07-23 |  | must start on 2010-07-23 |  |
| 197 | Testing TSI | 2d | 2010-09-17 | 2010-09-20 | 192 | start no earlier than 2010-09-17 | Tester |
| 201 | Testing Asignacion Docs a Acciones | 1d | 2010-09-22 | 2010-09-22 | 199, 200 | start no earlier than 2010-09-22 | Tester |
| 204 | Testing Dirs | 1d | 2010-09-14 | 2010-09-14 | 203 | start no earlier than 2010-09-09 | Tester |
| 213 | Testing Trazabilidad / Registro | 2d | 2010-08-05 | 2010-08-06 | 206, 207, 208, 209, 210, 211, 212 | start no earlier than 2010-08-05 | Tester |
| 218 | Testing Inicio Llamada STARS | 1d | 2010-08-11 | 2010-08-11 | 217 | start no earlier than 2010-08-11 | Tester |
| 234 | Testing ABMs Varios | 4d | 2010-09-27 | 2010-09-30 | 221, 222, 224, 225, 231 | start no earlier than 2010-09-27 | Tester |
| 235 | Testing Interfaces Varias | 3d | 2010-10-13 | 2010-10-15 | 226, 227, 228, 229, 230, 233 | start no earlier than 2010-10-13 | Tester |
| 237 | Arquitectura General / Configuracion Ambientes / Framework | 15d | 2010-05-17 | 2010-06-04 | 242 |  | Arquitecto |
| 238 | **Tareas IT Sobre Nuestra Empresa** | 138d? | 2010-05-06 | 2010-11-15 |  |  |  |
| 239 | Compra Equipos Necesarios | 2d | 2010-05-06 | 2010-05-07 |  | start no earlier than 2010-05-06 | Programador Jr 1; Programador Jr 2 |
| 240 | **Infraestructura** | 12d | 2010-05-06 | 2010-05-21 |  |  |  |
| 241 | Preparacion de Ambientes en servidores | 3d | 2010-05-06 | 2010-05-10 |  | start no earlier than 2010-05-06 | IT 1 |
| 242 | Instalacion y Configuracion de Servidor DEV | 4d | 2010-05-11 | 2010-05-14 |  | start no earlier than 2010-05-11 | IT 1 |
| 243 | Instalacion y Configuracion de Servidores de Usos Multiples | 5d | 2010-05-17 | 2010-05-21 |  | start no earlier than 2010-05-17 | IT 1 |
| 244 | **Redes** | 12d | 2010-05-24 | 2010-06-08 | 240 |  |  |
| 245 | Configuracion del FW | 3d | 2010-06-04 | 2010-06-08 |  | start no earlier than 2010-06-04 | IT 1 |
| 246 | Configuracion Red Interna | 2d | 2010-05-24 | 2010-05-25 |  | start no earlier than 2010-05-24 | IT 1 |
| 247 | Instalacion de pcs nuevos usuarios | 2d | 2010-05-10 | 2010-05-11 | 239 | start no earlier than 2010-05-07 | Programador Jr 1; Programador Jr 2 |
| 249 | **Configuracion del Ambiente de Produccion** | 24d? | 2010-08-02 | 2010-09-02 |  |  |  |
| 250 | Configuracion del Ambiente de Produccion | 0d? | 2010-08-02 | 2010-08-02 |  | must start on 2010-08-02 |  |
| 251 | Configuracion del Ambiente de Produccion | 0d? | 2010-09-02 | 2010-09-02 |  | must finish on 2010-09-02 |  |
| 252 | Instalar y Configurar Load Balancer | 3d | 2010-08-23 | 2010-08-25 |  | start no earlier than 2010-08-23 | IT 1 |
| 253 | Instalar y Configurar APP Server | 3d | 2010-08-17 | 2010-08-19 |  | start no earlier than 2010-08-17 | IT 1 |
| 254 | Instalar y Configurar DB Server | 4d | 2010-08-09 | 2010-08-12 |  | start no earlier than 2010-08-09 | IT 1 |
| 255 | Instalar y Configurar Web Server | 3d | 2010-08-30 | 2010-09-01 |  | start no earlier than 2010-08-30 | IT 1 |
| 257 | Puesta en Marcha | 10d | 2010-10-18 | 2010-10-29 | 249, 235 | start no earlier than 2010-10-18 | IT 1; Arquitecto; Programador Sr 1; Programador Sr 2 |
| 258 | Testeo Final en Produccion | 9d | 2010-10-18 | 2010-10-28 | 270 |  | Tester |
| 260 | **Web Server (Consultas Externas del Cliente)** | 22d | 2010-07-14 | 2010-08-12 | 7, 30 |  |  |
| 261 | Interfaz Web Server | 4d | 2010-08-09 | 2010-08-12 |  | start no earlier than 2010-08-09 | Programador Jr 2 |
| 262 | Modulo Chat | 3d | 2010-08-02 | 2010-08-04 |  | start no earlier than 2010-08-02 | Prog SSr 1 |
| 263 | Busquedas y Listados del Web Server | 2d | 2010-08-05 | 2010-08-06 |  | start no earlier than 2010-08-05 | Prog SSr 1 |
| 264 | Test Web Server | 2d | 2010-07-14 | 2010-07-15 |  | start no earlier than 2010-07-14 | Tester |
| 266 | **Capacitacion del Personal Para el Uso de la APP** | 11d | 2010-11-01 | 2010-11-15 | 257, 258 |  |  |
| 267 | Capcitacion Usuario Operador | 5d | 2010-11-01 | 2010-11-05 |  | start no earlier than 2010-11-01 | Arquitecto; Programador Sr 1; Programador Sr 2 |
| 268 | Capacitacion Usuario Administrador | 5d | 2010-11-09 | 2010-11-15 |  | start no earlier than 2010-11-09 | Arquitecto; Programador Sr 1; Programador Sr 2 |
| 270 | Retoques, Desarrollos Finales, Ultimas Pruebas | 10d | 2010-10-04 | 2010-10-15 |  | start no earlier than 2010-10-04 | Programador Jr 1; Prog SSr 1; Programador Jr 2; Programador Sr 1; Programador Sr 2 |
| 271 | Mantenimiento de la Infra | 10d | 2010-06-18 A | 2010-08-20 |  | start no earlier than 2010-06-18 | IT 1 |

Removed: 198 Listados Iniciales

Changed:

| ID | Task | Start | Finish | Duration | Total float | Predecessors | Other |
| --- | --- | --- | --- | --- | --- | --- | --- |
| 1 | Integracion con el Sistema STARS (Lectura Datos) | 2010-05-06 → 2010-06-07 (+32d) | 2010-05-06 → 2010-06-11 (+36d) | 1d? → 5d | 1d → 18d | none → 237 | resources none → Programador Sr 1; Programador Sr 2 |
| 2 | Modulo Seguridad que Oculta Info Llamado | 2010-05-06 → 2010-06-14 (+39d) | 2010-05-06 → 2010-06-16 (+41d) | 1d? → 3d | 1d → 108d | none → 1 | resources none → Programador Sr 2; Programador Sr 1 |
| 3 | **(GEN01) Identificacion y Autenticacion** | 2010-05-07 → 2010-06-14 (+38d) | 2010-05-07 → 2010-06-17 (+41d) | 1d → 4d | 0d → 95d | 232 → 1 |  |
| 4 | Autenticacion | 2010-05-07 → 2010-06-14 (+38d) | 2010-05-07 → 2010-06-15 (+39d) | 1d → 2d | 0d → 96d |  | constraint none → start no earlier than 2010-06-10; resources none → Programador Jr 1 |
| 5 | Interfaz Inicio Sesion | 2010-05-07 → 2010-06-14 (+38d) | 2010-05-07 → 2010-06-16 (+40d) | 1d → 3d | 0d → 95d |  | constraint none → start no earlier than 2010-06-08; resources none → Prog SSr 1 |
| 7 | **(GEN02) Gestion General de Registros** | 2010-05-06 → 2010-06-15 (+40d) | 2010-05-07 → 2010-07-08 (+62d) | 2d → 18d | 4d → 88d | none → 1 |  |
| 8 | ABM Registro | 2010-05-06 → 2010-06-30 (+55d) | 2010-05-06 → 2010-07-01 (+56d) | 1d → 2d | 5d → 91d |  | constraint none → start no earlier than 2010-06-30; resources none → Programador Jr 2 |
| 9 | Buscar registro | 2010-05-06 → 2010-06-29 (+54d) | 2010-05-06 → 2010-06-29 (+54d) |  | 5d → 93d |  | constraint none → start no earlier than 2010-06-29; resources none → Programador Jr 2 |
| 10 | Copiar registro | 2010-05-06 → 2010-06-15 (+40d) | 2010-05-06 → 2010-06-15 (+40d) |  | 5d → 103d |  | constraint none → start no earlier than 2010-06-15; resources none → Programador Jr 2 |
| 11 | Interfaz ABM Registro | 2010-05-06 → 2010-06-29 (+54d) | 2010-05-07 → 2010-07-05 (+59d) | 2d → 4d | 4d → 89.5d |  | constraint none → start no earlier than 2010-06-29; resources none → Programador Sr 2 |
| 13 | **(USR01) Determinacion del servicio de atencion** | 2010-05-10 → 2010-08-17 (+99d) | 2010-05-10 → 2010-09-01 (+114d) | 1d? → 12d | 1d → 27d | 1, 3 → 94, 40 |  |
| 14 | Capturar la Comunicación???? | 2010-05-10 → 2010-08-17 (+99d) | 2010-05-10 → 2010-08-18 (+100d) | 1d? → 2d | 1d → 36d |  | constraint none → start no earlier than 2010-08-17; resources none → Programador Jr 1 |
| 15 | Determinar el tipo de servicio | 2010-05-10 → 2010-08-26 (+108d) | 2010-05-10 → 2010-08-26 (+108d) | 1d? → 1d | 1d → 30d |  | was named Determinar el tipod e servicio; constraint none → start no earlier than 2010-08-26; resources none → Programador Jr 1 |
| 16 | Lista de Espera | 2010-05-10 → 2010-08-23 (+105d) | 2010-05-10 → 2010-08-24 (+106d) | 1d? → 2d | 1d → 32d |  | constraint none → start no earlier than 2010-08-23; resources none → Programador Jr 1 |
| 17 | Determinar conjunto de operadores adecuados al tipo de solicitud | 2010-05-10 → 2010-08-30 (+112d) | 2010-05-10 → 2010-08-30 (+112d) | 1d? → 1d | 1d → 28d |  | constraint none → start no earlier than 2010-08-30; resources none → Programador Jr 2 |
| 19 | **(USR02) Agenda** | 2010-05-10 → 2010-07-14 (+65d) | 2010-05-11 → 2010-08-04 (+85d) | 2d? → 16d | 0d → 69d |  |  |
| 20 | Selección de una agenda | 2010-05-11 → 2010-07-29 (+79d) | 2010-05-11 → 2010-07-30 (+80d) | 1d? → 2d | 0d → 70d | 21 → none | constraint none → start no earlier than 2010-07-29; resources none → Programador Jr 1 |
| 21 | ABM citas sobre la agenda | 2010-05-10 → 2010-07-19 (+70d) | 2010-05-10 → 2010-07-20 (+71d) | 1d? → 2d | 0d → 78d |  | constraint none → start no earlier than 2010-07-19; resources none → Programador Jr 1 |
| 22 | Interfaz de la Agenda | 2010-05-10 → 2010-07-14 (+65d) | 2010-05-10 → 2010-07-16 (+67d) | 1d? → 3d | 1d → 80d |  | constraint none → start no earlier than 2010-07-14; resources none → Programador Jr 1 |
| 23 | Integracion con Stars - Llamada desde Agenda | 2010-05-10 → 2010-07-19 (+70d) | 2010-05-10 → 2010-07-26 (+77d) | 1d? → 6d | 1d → 74d |  | constraint none → start no earlier than 2010-07-19; resources none → Programador Sr 1 |
| 24 | Asignar pacientes a cita | 2010-05-10 → 2010-07-21 (+72d) | 2010-05-10 → 2010-07-21 (+72d) | 1d? → 1d | 1d → 77d |  | constraint none → start no earlier than 2010-07-21; resources none → Programador Jr 1 |
| 26 | **(USR03) Rellamada** | 2010-05-10 → 2010-08-16 (+98d) | 2010-05-10 → 2010-08-27 (+109d) | 1d? → 10d | 4d → 56d |  |  |
| 29 | **(USR04) Consulta** | 2010-05-11 → 2010-06-14 (+34d) | 2010-05-11 → 2010-06-22 (+42d) | 1d? → 7d | 1d → 15d | 13, 78, 85, 40, 94, 90 → 1 |  |
| 30 | **Tratar Consulta** | 2010-05-11 → 2010-06-14 (+34d) | 2010-05-11 → 2010-06-16 (+36d) | 1d? → 3d | 1d → 19d | 78, 85 → none |  |
| 31 | Ajornar Consulta | 2010-05-11 → 2010-06-16 (+36d) | 2010-05-11 → 2010-06-16 (+36d) | 1d? → 1d | 1d → 19d |  | constraint none → start no earlier than 2010-06-16; resources none → Programador Jr 2 |
| 32 | Transferir consulta | 2010-05-11 → 2010-06-14 (+34d) | 2010-05-11 → 2010-06-14 (+34d) | 1d? → 1d | 1d → 21d |  | constraint none → start no earlier than 2010-06-14; resources none → Programador Jr 2 |
| 33 | Modulo Envio de Correo | 2010-05-11 → 2010-06-16 (+36d) | 2010-05-11 → 2010-06-18 (+38d) | 1d? → 3d | 1d → 17d |  | constraint none → start no earlier than 2010-06-16; resources none → Programador Jr 1 |
| 34 | Modulo Envio SMS | 2010-05-11 → 2010-06-17 (+37d) | 2010-05-11 → 2010-06-22 (+42d) | 1d? → 4d | 1d → 15d |  | constraint none → start no earlier than 2010-06-17; resources none → Programador Sr 1 |
| 35 | Inclusion en Campaña de Seguimiento | 2010-05-11 → 2010-06-21 (+41d) | 2010-05-11 → 2010-06-21 (+41d) | 1d? → 1d | 1d → 16d |  | constraint none → start no earlier than 2010-06-21; resources none → Programador Jr 2 |
| 37 | **(USR05) Consejo Salud** | 2010-05-12 → 2010-09-07 (+118d) | 2010-05-12 → 2010-09-09 (+120d) | 1d? → 3d | 1d → 47d | 78, 85, 29 → 78, 85 |  |
| 40 | **(USR06) Gestionar Consulta pendiente** | 2010-05-06 → 2010-08-09 (+95d) | 2010-05-06 → 2010-08-12 (+98d) | 1d? → 4d | 3d → 38d | none → 29 |  |
| 41 | Priorizacion de la Lista de Consultas | 2010-05-06 → 2010-08-09 (+95d) | 2010-05-06 → 2010-08-10 (+96d) | 1d? → 2d | 3d → 39d |  | constraint none → start no earlier than 2010-08-09; resources none → Programador Jr 1 |
| 43 | **(USR07) Programacion de cita previa** | 2010-05-07 → 2010-08-18 (+103d) | 2010-05-07 → 2010-08-26 (+111d) | 1d? → 7d | 4d → 57d |  |  |
| 44 | Realizar Citación (Interface con Sistema de citación AP) | 2010-05-07 → 2010-08-18 (+103d) | 2010-05-07 → 2010-08-20 (+105d) | 1d? → 3d | 5d → 60d |  | constraint none → start no earlier than 2010-08-18; resources none → Prog SSr 1 |
| 46 | **(USR08) Gestiones sobre la TSI** | 2010-05-12 → 2010-08-18 (+98d) | 2010-05-12 → 2010-09-03 (+114d) | 1d? → 13d | 1d → -31d | 40, 94, 85, 29 → 94, 85, 29, 1 |  |
| 47 | Verificacion Documentacion Necesaria | 2010-05-12 → 2010-08-25 (+105d) | 2010-05-12 → 2010-08-25 (+105d) | 1d? → 1d | 1d → -25d |  | constraint none → start no earlier than 2010-08-25; resources none → Programador Jr 1 |
| 48 | Enviar Gestion (Interface con sistema RCA) | 2010-05-12 → 2010-09-01 (+112d) | 2010-05-12 → 2010-09-02 (+113d) | 1d? → 2d | 1d → -31d |  | constraint none → start no earlier than 2010-09-01; resources none → Programador Jr 1 |
| 49 | Cierre automatico de la consulta por paso de tiempo | 2010-05-12 → 2010-08-19 (+99d) | 2010-05-12 → 2010-08-20 (+100d) | 1d? → 2d | 1d → -22d |  | constraint none → start no earlier than 2010-08-19; resources none → Programador Jr 1 |
| 50 | Guardar LOG gestion TSI | 2010-05-12 → 2010-08-18 (+98d) | 2010-05-12 → 2010-08-18 (+98d) | 1d? → 1d | 1d → -20d |  | was named Guardar LOG gestion TSI?????; constraint none → start no earlier than 2010-08-18; resources none → Programador Jr 2 |
| 52 | **(USR09) Servicio de traduccion** | 2010-05-12 → 2010-08-11 (+91d) | 2010-05-12 → 2010-08-31 (+111d) | 1d? → 15d | 1d → 54d | 29, 85 → 85 |  |
| 53 | Contactar Servicio Externo de Traduccion | 2010-05-12 → 2010-08-23 (+103d) | 2010-05-12 → 2010-08-26 (+106d) | 1d? → 4d | 1d → 55d |  | constraint none → start no earlier than 2010-08-23; resources none → Prog SSr 1 |
| 54 | Enlace Comunicacion Multiconferencia | 2010-05-12 → 2010-08-11 (+91d) | 2010-05-12 → 2010-08-16 (+96d) | 1d? → 4d | 1d → 63d |  | constraint none → start no earlier than 2010-08-10; resources none → Programador Sr 2 |
| 55 | Modulo monitorización de servicio | 2010-05-12 → 2010-08-17 (+97d) | 2010-05-12 → 2010-08-20 (+100d) | 1d? → 4d | 1d → 59d |  | constraint none → start no earlier than 2010-08-17; resources none → Programador Sr 2 |
| 57 | **(USR10) Informacion Sanitaria General** | 2010-05-12 → 2010-09-15 (+126d) | 2010-05-12 → 2010-09-16 (+127d) | 1d? → 2d | 1d → 42d | 85, 94, 202, 29 → 85, 94, 202 |  |
| 58 | Guardar Informacion Ciudadano | 2010-05-12 → 2010-09-15 (+126d) | 2010-05-12 → 2010-09-15 (+126d) | 1d? → 1d | 1d → 42d |  | constraint none → start no earlier than 2010-09-07; resources none → Programador Jr 2 |
| 60 | **(USR11) Seguimiento de Patologias** | 2010-05-12 → 2010-08-13 (+93d) | 2010-05-12 → 2010-09-07 (+118d) | 1d? → 18d | 0d → 49d |  |  |
| 61 | Buscar Campañas Abiertas | 2010-05-12 → 2010-08-16 (+96d) | 2010-05-12 → 2010-08-17 (+97d) | 1d? → 2d | 0d → 62d |  | constraint none → start no earlier than 2010-08-16; resources none → Programador Jr 2 |
| 62 | **Gestionar Seguimiento** | 2010-05-12 → 2010-08-13 (+93d) | 2010-05-12 → 2010-08-25 (+105d) | 1d? → 9d | 0d → 56d |  |  |
| 63 | Visualizar Historial Pacientes | 2010-05-12 → 2010-08-13 (+93d) | 2010-05-12 → 2010-08-13 (+93d) | 1d? → 1d | 0d → 64d |  | constraint none → start no earlier than 2010-08-13; resources none → Prog SSr 1 |
| 64 | Llamada al Paciente | 2010-05-12 → 2010-08-24 (+104d) | 2010-05-12 → 2010-08-25 (+105d) | 1d? → 2d | 0d → 56d |  | constraint none → start no earlier than 2010-08-24; resources none → Programador Jr 2 |
| 65 | Desligar paciente de campaña | 2010-05-12 → 2010-08-27 (+107d) | 2010-05-12 → 2010-08-27 (+107d) | 1d? → 1d | 0d → 54d |  | constraint none → start no earlier than 2010-08-27; resources none → Prog SSr 1 |
| 67 | **(USR12) Encuestas** | 2010-05-06 → 2010-07-07 (+62d) | 2010-05-06 → 2010-08-02 (+88d) | 1d? → 19d | 4d → 64d | none → 154 |  |
| 68 | Interfaz de Encuestas | 2010-05-06 → 2010-07-26 (+81d) | 2010-05-06 → 2010-07-28 (+83d) | 1d? → 3d | 4d → 76d |  | constraint none → start no earlier than 2010-07-26; resources none → Programador Jr 2 |
| 69 | Contacto con Encuestado | 2010-05-06 → 2010-07-09 (+64d) | 2010-05-06 → 2010-07-12 (+67d) | 1d? → 2d | 4d → 88d |  | constraint none → start no earlier than 2010-07-09; resources none → Programador Sr 2 |
| 70 | ABM Formulario De Encuesta | 2010-05-06 → 2010-07-07 (+62d) | 2010-05-06 → 2010-07-08 (+63d) | 1d? → 2d | 4d → 64d |  | constraint none → start no earlier than 2010-07-06; resources none → Programador Jr 2 |
| 72 | **(USR13) Buscar Consultas** | 2010-05-07 → 2010-07-22 (+76d) | 2010-05-07 → 2010-08-09 (+94d) | 1d? → 13d | 3d → 67d |  |  |
| 73 | **Operativo de Busqueda** | 2010-05-07 → 2010-07-22 (+76d) | 2010-05-07 → 2010-08-09 (+94d) | 1d? → 13d | 3d → 67d |  |  |
| 74 | Buscar según distintos criterios | 2010-05-07 → 2010-08-04 (+89d) | 2010-05-07 → 2010-08-06 (+91d) | 1d? → 3d | 4d → 67d |  | constraint none → start no earlier than 2010-08-04; resources none → Programador Jr 2 |
| 75 | Filtrar resultados de la busqueda según permisos del usuario | 2010-05-07 → 2010-07-30 (+84d) | 2010-05-07 → 2010-07-30 (+84d) | 1d? → 1d | 4d → 72d |  | constraint none → start no earlier than 2010-07-30; resources none → Programador Jr 2 |
| 76 | Acotar resultados si los mismos sobrepasan el parametro configurable "n" | 2010-05-07 → 2010-07-22 (+76d) | 2010-05-07 → 2010-07-22 (+76d) | 1d? → 1d | 4d → 78d |  | constraint none → start no earlier than 2010-07-22; resources none → Programador Jr 2 |
| 78 | **(USR14) Hacer Uso de Documentos** | 2010-05-06 → 2010-07-26 (+81d) | 2010-05-06 → 2010-08-23 (+109d) | 1d? → 21d | 3d → 34d | none → 29 |  |
| 79 | Creación y uso de Guias Interrogatorio | 2010-05-06 → 2010-08-11 (+97d) | 2010-05-06 → 2010-08-12 (+98d) | 1d? → 2d | 3d → 41d |  | constraint none → start no earlier than 2010-08-11; resources none → Programador Jr 1 |
| 80 | Creación y uso Fichas Tematicas | 2010-05-06 → 2010-08-13 (+99d) | 2010-05-06 → 2010-08-16 (+102d) | 1d? → 2d | 3d → 37d |  | constraint none → start no earlier than 2010-08-13; resources none → Programador Jr 1 |
| 81 | Creación y uso de Recursos | 2010-05-06 → 2010-07-26 (+81d) | 2010-05-06 → 2010-07-27 (+82d) | 1d? → 2d | 3d → 51d |  | constraint none → start no earlier than 2010-07-26; resources none → Programador Jr 1 |
| 82 | Búsqueda y selección de documentos | 2010-05-06 → 2010-08-02 (+88d) | 2010-05-06 → 2010-08-03 (+89d) | 1d? → 2d | 3d → 46d |  | constraint none → start no earlier than 2010-08-02; resources none → Programador Jr 1 |
| 83 | Apertura documentos | 2010-05-06 → 2010-08-04 (+90d) | 2010-05-06 → 2010-08-05 (+91d) | 1d? → 2d | 3d → 44d |  | constraint none → start no earlier than 2010-08-04; resources none → Programador Jr 1 |
| 85 | **(USR15) Cerrar consulta y dar respuesta al ciudadano** | 2010-05-06 → 2010-07-05 (+60d) | 2010-05-06 → 2010-08-10 (+96d) | 1d? → 27d | 3d → -16d | none → 29 |  |
| 86 | Clasificar Finalizacion de Consulta | 2010-05-06 → 2010-07-05 (+60d) | 2010-05-06 → 2010-07-06 (+61d) | 1d? → 2d | 3d → 8d |  | constraint none → start no earlier than 2010-07-05; resources none → Programador Jr 2 |
| 87 | Adición de motivo de cierre a la consulta | 2010-05-06 → 2010-07-23 (+78d) | 2010-05-06 → 2010-07-23 (+78d) | 1d? → 1d | 3d → -5d |  | constraint none → start no earlier than 2010-07-23; resources none → Programador Jr 2 |
| 88 | Creación de clasificaciones ad-hoc | 2010-05-06 → 2010-07-29 (+84d) | 2010-05-06 → 2010-07-29 (+84d) | 1d? → 1d | 3d → -9d |  | constraint none → start no earlier than 2010-07-29; resources none → Programador Jr 2 |

| ID | Task | Start | Finish | Duration | Total float | Predecessors | Other |
| --- | --- | --- | --- | --- | --- | --- | --- |
| 90 | **(USR16) Visualizar Consulta** | 2010-05-06 → 2010-07-02 (+57d) | 2010-05-06 → 2010-07-12 (+67d) | 1d? → 7d | 1d → 78d | none → 29 |  |
| 91 | Mostrar datos generales de la consulta | 2010-05-06 → 2010-07-06 (+61d) | 2010-05-06 → 2010-07-07 (+62d) | 1d? → 2d | 1d → 80d |  | constraint none → start no earlier than 2010-06-30; resources none → Programador Jr 1 |
| 92 | Mostrar datos según el documento elegido | 2010-05-06 → 2010-07-02 (+57d) | 2010-05-06 → 2010-07-05 (+60d) | 1d? → 2d | 1d → 82d |  | constraint none → start no earlier than 2010-07-02; resources none → Programador Jr 1 |
| 94 | **(USR17) Crear/Transferir Consulta** | 2010-05-06 → 2010-06-25 (+50d) | 2010-05-06 → 2010-08-16 (+102d) | 1d? → 37d | 3d → -20d | none → 29 |  |
| 95 | Crear Consulta | 2010-05-06 → 2010-06-28 (+53d) | 2010-05-06 → 2010-06-29 (+54d) | 1d? → 2d | 3d → 12d |  | constraint none → start no earlier than 2010-06-28; resources none → Programador Jr 1 |
| 96 | Copiar consulta | 2010-05-06 → 2010-06-25 (+50d) | 2010-05-06 → 2010-06-28 (+53d) | 1d? → 2d | 3d → 13d |  | constraint none → start no earlier than 2010-06-25; resources none → Programador Jr 2 |
| 97 | **Transferir Consulta** | 2010-05-06 → 2010-08-06 (+92d) | 2010-05-06 → 2010-08-06 (+92d) | 1d? → 1d | 3d → -16d |  |  |
| 98 | Localizar a otro operador del mismo perfil | 2010-05-06 → 2010-08-06 (+92d) | 2010-05-06 → 2010-08-06 (+92d) | 1d? → 1d | 3d → -16d |  | constraint none → start no earlier than 2010-08-06; resources none → Programador Jr 1 |
| 100 | **(ADM01) Mantenimiento del Entorno, clasif y prioridades** | 2010-05-07 → 2010-06-07 (+31d) | 2010-05-07 → 2010-08-25 (+110d) | 1d? → 58d | 2d → -24d | 227 → 237 |  |
| 101 | Módulo de edición de parametros grales de la aplicación | 2010-05-07 → 2010-08-05 (+90d) | 2010-05-07 → 2010-08-10 (+95d) | 1d? → 4d | 2d → -15d |  | constraint none → start no earlier than 2010-08-05; resources none → Programador Sr 1 |
| 102 | Módulo edición listas de clasificaciones (Códigos internos) | 2010-05-07 → 2010-08-16 (+101d) | 2010-05-07 → 2010-08-18 (+103d) | 1d? → 3d | 2d → -21d |  | constraint none → start no earlier than 2010-08-16; resources none → Programador Sr 1 |
| 103 | **Módulo mantenimiento de la lista de espera** | 2010-05-07 → 2010-06-09 (+33d) | 2010-05-07 → 2010-06-10 (+34d) | 1d? → 2d | 2d → 28d |  |  |
| 104 | ABM de la lista de espera | 2010-05-07 → 2010-06-09 (+33d) | 2010-05-07 → 2010-06-10 (+34d) | 1d? → 2d | 2d → 28d |  | constraint none → start no earlier than 2010-06-09; resources none → Programador Jr 1 |
| 105 | Módulo de gestión de prioridades sobre la lista de espera | 2010-05-07 → 2010-06-09 (+33d) | 2010-05-07 → 2010-06-10 (+34d) | 1d? → 2d | 2d → 28d |  | constraint none → start no earlier than 2010-06-09; resources none → Prog SSr 1 |
| 106 | **Módulo mantenimiento de lineas de servicio** | 2010-05-07 → 2010-06-07 (+31d) | 2010-05-07 → 2010-06-08 (+32d) | 1d? → 2d | 2d → 30d |  |  |
| 107 | ABM lineas de servicio | 2010-05-07 → 2010-06-07 (+31d) | 2010-05-07 → 2010-06-08 (+32d) | 1d? → 2d | 2d → 30d |  | resources none → Programador Jr 2 |
| 108 | ABM servicios para una linea seleccionada | 2010-05-07 → 2010-06-07 (+31d) | 2010-05-07 → 2010-06-08 (+32d) | 1d? → 2d | 2d → 30d |  | constraint none → start no earlier than 2010-06-07; resources none → Programador Jr 1 |
| 109 | **Módulo mantenimiento agendas** | 2010-05-07 → 2010-06-09 (+33d) | 2010-05-07 → 2010-07-01 (+55d) | 1d? → 17d | 2d → 13d |  |  |
| 110 | Asignar operadores a agenda | 2010-05-07 → 2010-06-11 (+35d) | 2010-05-07 → 2010-06-11 (+35d) | 1d? → 1d | 2d → 27d |  | constraint none → start no earlier than 2010-06-11; resources none → Programador Jr 2 |
| 111 | ABM de usuarios de la agenda | 2010-05-07 → 2010-06-30 (+54d) | 2010-05-07 → 2010-07-01 (+55d) | 1d? → 2d | 2d → 13d |  | constraint none → start no earlier than 2010-06-30; resources none → Programador Jr 1 |
| 112 | ABM citas de la agenda | 2010-05-07 → 2010-06-09 (+33d) | 2010-05-07 → 2010-06-10 (+34d) | 1d? → 2d | 2d → 28d |  | constraint none → start no earlier than 2010-06-09; resources none → Programador Jr 2 |
| 113 | **Módulo mantenimiento BBDD** | 2010-05-07 → 2010-08-11 (+96d) | 2010-05-07 → 2010-08-13 (+98d) | 1d? → 3d | 2d → -18d |  |  |
| 114 | Módulo comprobación de formato de archivo | 2010-05-07 → 2010-08-11 (+96d) | 2010-05-07 → 2010-08-11 (+96d) | 1d? → 1d | 2d → -16d |  | constraint none → start no earlier than 2010-08-11; resources none → Programador Sr 1 |
| 115 | Módulo actualización de BBDD | 2010-05-07 → 2010-08-12 (+97d) | 2010-05-07 → 2010-08-13 (+98d) | 1d? → 2d | 2d → -18d |  | constraint none → start no earlier than 2010-08-12; resources none → Programador Sr 1 |
| 117 | **(ADM02) Extraccion de estadisticas y listados** | 2010-05-07 → 2010-08-27 (+112d) | 2010-05-07 → 2010-09-13 (+129d) | 1d? → 12d | 4d → 20d | 169, 176, 181, 228 → 100 |  |
| 118 | Listados De Administración | 2010-05-07 → 2010-09-06 (+122d) | 2010-05-07 → 2010-09-07 (+123d) | 1d? → 2d | 4d → 23d |  | constraint none → start no earlier than 2010-09-06; resources none → Programador Sr 1 |
| 119 | **Listados Comunes** | 2010-05-07 → 2010-08-27 (+112d) | 2010-05-07 → 2010-09-10 (+126d) | 1d? → 11d | 4d → 20d |  |  |
| 120 | Detalle de estado de finalización consulta/acción | 2010-05-07 → 2010-09-02 (+118d) | 2010-05-07 → 2010-09-02 (+118d) | 1d? → 1d | 4d → 26d |  | constraint none → start no earlier than 2010-09-02; resources none → Programador Jr 2 |
| 121 | Listado de clasificaciones | 2010-05-07 → 2010-09-01 (+117d) | 2010-05-07 → 2010-09-01 (+117d) | 1d? → 1d | 4d → 27d |  | constraint none → start no earlier than 2010-09-01; resources none → Prog SSr 1 |
| 122 | Listados de incidencias en las comunicaciones | 2010-05-07 → 2010-09-03 (+119d) | 2010-05-07 → 2010-09-03 (+119d) | 1d? → 1d | 4d → 25d |  | constraint none → start no earlier than 2010-09-03; resources none → Programador Jr 2 |
| 123 | Ratios por usuario | 2010-05-07 → 2010-09-09 (+125d) | 2010-05-07 → 2010-09-10 (+126d) | 1d? → 2d | 4d → 20d |  | constraint none → start no earlier than 2010-09-09; resources none → Prog SSr 1 |
| 124 | Finales de servicio | 2010-05-07 → 2010-08-27 (+112d) | 2010-05-07 → 2010-08-27 (+112d) | 1d? → 1d | 4d → 30d |  | constraint none → start no earlier than 2010-08-27; resources none → Programador Jr 1 |
| 126 | **(ADM03) Mantenimiento de documentos** | 2010-05-10 → 2010-09-01 (+114d) | 2010-05-11 → 2010-09-15 (+127d) | 2d? → 11d | 2d → 41d | 176, 198, 134 → 134 |  |
| 127 | Creación y edición de documentos | 2010-05-11 → 2010-09-13 (+125d) | 2010-05-11 → 2010-09-14 (+126d) | 1d? → 2d | 2d → 42d |  | constraint none → start no earlier than 2010-09-13; resources none → Programador Jr 2 |
| 128 | Borrado de documentos | 2010-05-10 → 2010-09-03 (+116d) | 2010-05-10 → 2010-09-03 (+116d) | 1d? → 1d | 3d → 49d |  | constraint none → start no earlier than 2010-09-03; resources none → Programador Jr 1 |
| 129 | Clasificación de documentos | 2010-05-10 → 2010-09-01 (+114d) | 2010-05-10 → 2010-09-01 (+114d) | 1d? → 1d | 3d → 51d |  | constraint none → start no earlier than 2010-08-31; resources none → Programador Jr 2 |
| 130 | Búsqueda de documentos | 2010-05-10 → 2010-09-14 (+127d) | 2010-05-10 → 2010-09-15 (+128d) | 1d? → 2d | 3d → 41d |  | constraint none → start no earlier than 2010-09-14; resources none → Programador Jr 1 |
| 131 | (ADM04) Mantenimiento de Recursos | 2010-05-07 → 2010-08-24 (+109d) | 2010-05-07 → 2010-08-26 (+111d) | 1d? → 3d | 3d → 49d | 224 → 78 | constraint none → start no earlier than 2010-08-02; resources none → Programador Sr 2 |
| 132 | (ADM05) Mantenimiento de guias de interrogatorio | 2010-05-10 → 2010-09-02 (+115d) | 2010-05-10 → 2010-09-06 (+119d) | 1d? → 3d | 2d → 46d | 134, 224 → 134, 78 | constraint none → start no earlier than 2010-09-02; resources none → Prog SSr 1 |
| 133 | (ADM06) Mantenimiento de Fichas tematicas | 2010-05-10 → 2010-09-08 (+121d) | 2010-05-10 → 2010-09-10 (+123d) | 1d? → 3d | 2d → 42d | 134, 224 → 134, 78 | constraint none → start no earlier than 2010-09-08; resources none → Programador Sr 1 |
| 134 | **(ADM07) Mantenimiento de relaciones sobre guias de interrogatorio y fichas tematicas** | 2010-05-07 → 2010-08-30 (+115d) | 2010-05-07 → 2010-08-31 (+116d) | 1d? → 2d | 2d → 47d | 224 → 131 |  |
| 135 | Adición de documentos a fichas temáticas | 2010-05-07 → 2010-08-31 (+116d) | 2010-05-07 → 2010-08-31 (+116d) | 1d? → 1d | 2d → 47d |  | constraint none → start no earlier than 2010-08-31; resources none → Programador Jr 2 |
| 136 | Adición de documentos a guias de interrogatorio | 2010-05-07 → 2010-08-30 (+115d) | 2010-05-07 → 2010-08-30 (+115d) | 1d? → 1d | 2d → 48d |  | constraint none → start no earlier than 2010-08-30; resources none → Prog SSr 1 |
| 137 | **(ADM08) Mantenimiento de encuestas** | 2010-05-06 → 2010-07-09 (+64d) | 2010-05-06 → 2010-07-23 (+78d) | 1d? → 11d | 5d → 81d | none → 154 |  |
| 138 | **Mantenimiento Indice de Encuestas** | 2010-05-06 → 2010-07-14 (+69d) | 2010-05-06 → 2010-07-20 (+75d) | 1d? → 5d | 5d → 84d |  |  |
| 139 | Mantener Ediciones | 2010-05-06 → 2010-07-19 (+74d) | 2010-05-06 → 2010-07-20 (+75d) | 1d? → 2d | 5d → 84d |  | constraint none → start no earlier than 2010-07-19; resources none → Programador Jr 2 |
| 140 | Cierre de ediciones | 2010-05-06 → 2010-07-14 (+69d) | 2010-05-06 → 2010-07-14 (+69d) | 1d? → 1d | 5d → 88d |  | constraint none → start no earlier than 2010-07-14; resources none → Programador Jr 2 |
| 141 | Asignación de formulario a encuesta | 2010-05-06 → 2010-07-22 (+77d) | 2010-05-06 → 2010-07-22 (+77d) | 1d? → 1d | 5d → 82d |  | constraint none → start no earlier than 2010-07-22; resources none → Programador Jr 1 |
| 142 | Asignación de operadores a encuesta | 2010-05-06 → 2010-07-09 (+64d) | 2010-05-06 → 2010-07-09 (+64d) | 1d? → 1d | 5d → 91d |  | constraint none → start no earlier than 2010-07-09; resources none → Programador Jr 2 |
| 143 | **Asignación lista de encuestados** | 2010-05-06 → 2010-07-12 (+67d) | 2010-05-06 → 2010-07-23 (+78d) | 1d? → 10d | 5d → 81d |  |  |
| 144 | Alta, baja de encuestados | 2010-05-06 → 2010-07-12 (+67d) | 2010-05-06 → 2010-07-13 (+68d) | 1d? → 2d | 5d → 89d |  | constraint none → start no earlier than 2010-07-12; resources none → Programador Jr 2 |
| 145 | Asignación automática en base a un archivo de texto | 2010-05-06 → 2010-07-23 (+78d) | 2010-05-06 → 2010-07-23 (+78d) | 1d? → 1d | 5d → 81d |  | constraint none → start no earlier than 2010-07-23; resources none → Programador Jr 1 |
| 146 | Publicar Encuestas | 2010-05-06 → 2010-07-15 (+70d) | 2010-05-06 → 2010-07-16 (+71d) | 1d? → 2d | 6d → 86d |  | constraint none → start no earlier than 2010-07-15; resources none → Programador Jr 2 |
| 147 | **(ADM09) Mantenimiento de seguimiento de patologias** | 2010-05-06 → 2010-08-26 (+112d) | 2010-05-06 → 2010-09-01 (+118d) | 1d? → 5d | 5d → 48d | none → 100 |  |
| 148 | Mantenimiento Indice de campañas de seguimiento | 2010-05-06 → 2010-08-30 (+116d) | 2010-05-06 → 2010-09-01 (+118d) | 1d? → 3d | 5d → 48d |  | constraint none → start no earlier than 2010-08-30; resources none → Programador Sr 2 |
| 149 | Asignación de formulario a campaña de seguimiento | 2010-05-06 → 2010-08-30 (+116d) | 2010-05-06 → 2010-08-30 (+116d) | 1d? → 1d | 5d → 50d |  | constraint none → start no earlier than 2010-08-30; resources none → Programador Jr 1 |
| 150 | Asignación de operadores a campaña de seguimiento | 2010-05-06 → 2010-08-31 (+117d) | 2010-05-06 → 2010-08-31 (+117d) | 1d? → 1d | 5d → 49d |  | constraint none → start no earlier than 2010-08-31; resources none → Programador Jr 1 |
| 151 | Asignación de listas de pacientes | 2010-05-06 → 2010-08-31 (+117d) | 2010-05-06 → 2010-08-31 (+117d) | 1d? → 1d | 5d → 49d |  | constraint none → start no earlier than 2010-08-31; resources none → Prog SSr 1 |
| 152 | Activación/ Desactivación de campañas | 2010-05-06 → 2010-08-26 (+112d) | 2010-05-06 → 2010-08-27 (+113d) | 1d? → 2d | 6d → 51d |  | constraint none → start no earlier than 2010-08-17; resources none → Programador Jr 2 |
| 154 | **(ADM10) Creacion de formularios de encuesta y seguimiento** | 2010-05-07 → 2010-06-07 (+31d) | 2010-05-07 → 2010-07-06 (+60d) | 1d? → 22d | 4d → 64d | 225 → 237 |  |
| 155 | Mantener Indice de Encuesta | 2010-05-07 → 2010-07-01 (+55d) | 2010-05-07 → 2010-07-05 (+59d) | 1d? → 3d | 4d → 64d |  | constraint none → start no earlier than 2010-07-01; resources none → Programador Sr 1 |
| 156 | Crear y Editar Encuestas | 2010-05-07 → 2010-06-07 (+31d) | 2010-05-07 → 2010-06-08 (+32d) | 1d? → 2d | 4d → 83d |  | resources none → Prog SSr 1 |
| 158 | **(ADM11) Mantenimiento de usuarios, perfiles y permisos** | 2010-05-07 → 2010-06-17 (+41d) | 2010-05-07 → 2010-07-09 (+63d) | 1d? → 17d | 3d → 65d | 229 → 1 |  |
| 159 | Mantenimiento Opciones Funcionales | 2010-05-07 → 2010-06-17 (+41d) | 2010-05-07 → 2010-06-18 (+42d) | 1d? → 2d | 3d → 80d |  | constraint none → start no earlier than 2010-06-17; resources none → Programador Sr 2 |
| 160 | **Mantener Perfiles Trabajo** | 2010-05-07 → 2010-06-17 (+41d) | 2010-05-07 → 2010-07-02 (+56d) | 1d? → 12d | 3d → 70d |  |  |
| 161 | Alta, modificación de perfiles | 2010-05-07 → 2010-06-22 (+46d) | 2010-05-07 → 2010-06-23 (+47d) | 1d? → 2d | 3d → 77d |  | constraint none → start no earlier than 2010-06-22; resources none → Programador Jr 1 |
| 162 | ABM de opciones funcionales a perfil | 2010-05-07 → 2010-06-17 (+41d) | 2010-05-07 → 2010-06-18 (+42d) | 1d? → 2d | 3d → 80d |  | constraint none → start no earlier than 2010-06-17; resources none → Programador Jr 2 |
| 163 | Adición de responsabilidades a opciones funcionales | 2010-05-07 → 2010-07-02 (+56d) | 2010-05-07 → 2010-07-02 (+56d) | 1d? → 1d | 3d → 70d |  | constraint none → start no earlier than 2010-07-02; resources none → Programador Jr 2 |
| 164 | **Mantener Usuarios** | 2010-05-07 → 2010-06-21 (+45d) | 2010-05-07 → 2010-07-09 (+63d) | 1d? → 15d | 3d → 65d |  |  |
| 165 | Creación/gestion de usuarios | 2010-05-07 → 2010-06-21 (+45d) | 2010-05-07 → 2010-06-21 (+45d) | 1d? → 1d | 3d → 79d |  | constraint none → start no earlier than 2010-06-21; resources none → Programador Jr 1 |

| ID | Task | Start | Finish | Duration | Total float | Predecessors | Other |
| --- | --- | --- | --- | --- | --- | --- | --- |
| 166 | Asiganción de perfil a usuario | 2010-05-07 → 2010-06-22 (+46d) | 2010-05-07 → 2010-06-22 (+46d) | 1d? → 1d | 3d → 78d |  | constraint none → start no earlier than 2010-06-22; resources none → Programador Jr 2 |
| 167 | Asignación de agendas a usuario | 2010-05-07 → 2010-07-08 (+62d) | 2010-05-07 → 2010-07-09 (+63d) | 1d? → 2d | 3d → 65d |  | constraint none → start no earlier than 2010-07-08; resources none → Programador Jr 1 |
| 169 | **(ADM12) Listado de acciones proactivas** | 2010-05-06 → 2010-09-14 (+131d) | 2010-05-06 → 2010-10-05 (+152d) | 1d? → 16d | 4d → 29d | none → 117, 147 |  |
| 170 | Módulo de elaboraciónde informes de estado de campaña de seguimiento | 2010-05-06 → 2010-09-14 (+131d) | 2010-05-06 → 2010-09-16 (+133d) | 1d? → 3d | 5d → 40d |  | constraint none → start no earlier than 2010-09-13; resources none → Programador Sr 1 |
| 171 | Módulo de elaboración de informes de estado de encuesta | 2010-05-06 → 2010-09-22 (+139d) | 2010-05-06 → 2010-09-24 (+141d) | 1d? → 3d | 5d → 34d |  | constraint none → start no earlier than 2010-09-22; resources none → Programador Sr 2 |
| 172 | Módulo de elaboración de informes de ediciones de encuestas | 2010-05-06 → 2010-09-17 (+134d) | 2010-05-06 → 2010-09-21 (+138d) | 1d? → 3d | 5d → 37d |  | constraint none → start no earlier than 2010-09-17; resources none → Programador Sr 1 |
| 173 | Módulo de elaboración de listados de campañas de seguimiento | 2010-05-06 → 2010-09-27 (+144d) | 2010-05-06 → 2010-09-29 (+146d) | 1d? → 3d | 5d → 31d |  | constraint none → start no earlier than 2010-09-27; resources none → Programador Sr 2 |
| 174 | Módulo de elaboración de listados de información de encuestas | 2010-05-06 → 2010-09-22 (+139d) | 2010-05-06 → 2010-09-24 (+141d) | 1d? → 3d | 5d → 34d |  | constraint none → start no earlier than 2010-09-22; resources none → Programador Sr 1 |
| 176 | **(ADM13) Listados de documentos** | 2010-05-06 → 2010-09-16 (+133d) | 2010-05-06 → 2010-09-24 (+141d) | 1d? → 7d | 4d → 36d | none → 117, 126 |  |
| 177 | Elaboración de listado de configuración | 2010-05-06 → 2010-09-23 (+140d) | 2010-05-06 → 2010-09-23 (+140d) | 1d? → 1d | 5d → 36d |  | constraint none → start no earlier than 2010-09-23; resources none → Programador Jr 1 |
| 178 | Elaboración de listado de uso | 2010-05-06 → 2010-09-16 (+133d) | 2010-05-06 → 2010-09-16 (+133d) | 1d? → 1d | 5d → 41d |  | constraint none → start no earlier than 2010-09-06; resources none → Programador Jr 2 |
| 179 | Elaboración de listado de asociaciones | 2010-05-06 → 2010-09-17 (+134d) | 2010-05-06 → 2010-09-17 (+134d) | 1d? → 1d | 5d → 40d |  | constraint none → start no earlier than 2010-09-17; resources none → Programador Jr 2 |
| 181 | **(ADM14) Listado sobre consultas** | 2010-05-06 → 2010-09-14 (+131d) | 2010-05-06 → 2010-10-12 (+159d) | 1d? → 21d | 4d → 24d | none → 117, 29 |  |
| 182 | Módulo de obtención de listados de consulta por ciudadano | 2010-05-06 → 2010-09-14 (+131d) | 2010-05-06 → 2010-09-16 (+133d) | 1d? → 3d | 5d → 39d |  | constraint none → start no earlier than 2010-09-13; resources none → Prog SSr 1 |
| 183 | Módulo de obtención de listados de consultas con cierre principal | 2010-05-06 → 2010-09-30 (+147d) | 2010-05-06 → 2010-10-04 (+151d) | 1d? → 3d | 5d → 27d |  | constraint none → start no earlier than 2010-09-30; resources none → Programador Sr 2 |
| 184 | Módulo de obtención de listados de consulta con cierre secundario | 2010-05-06 → 2010-09-30 (+147d) | 2010-05-06 → 2010-10-04 (+151d) | 1d? → 3d | 5d → 27d |  | constraint none → start no earlier than 2010-09-30; resources none → Programador Sr 1 |
| 185 | Módulo de obtención de listados de consulta por motivo de cierre | 2010-05-06 → 2010-09-17 (+134d) | 2010-05-06 → 2010-09-21 (+138d) | 1d? → 3d | 5d → 36d |  | constraint none → start no earlier than 2010-09-17; resources none → Prog SSr 1 |
| 186 | Módulo de obtención de listado de resumen de consultas por servicio | 2010-05-06 → 2010-09-14 (+131d) | 2010-05-06 → 2010-09-16 (+133d) | 1d? → 3d | 5d → 39d |  | constraint none → start no earlier than 2010-09-13; resources none → Programador Sr 2 |
| 187 | Módulo de obtención de listado de consultas por área geográfica | 2010-05-06 → 2010-10-05 (+152d) | 2010-05-06 → 2010-10-07 (+154d) | 1d? → 3d | 5d → 24d |  | constraint none → start no earlier than 2010-10-05; resources none → Programador Sr 2 |
| 188 | Módulo de obtención de listado de consultas por usuario | 2010-05-06 → 2010-09-27 (+144d) | 2010-05-06 → 2010-09-29 (+146d) | 1d? → 3d | 5d → 30d |  | constraint none → start no earlier than 2010-09-27; resources none → Programador Sr 1 |
| 189 | Módulo de obtención de listado de consultas pendientes | 2010-05-06 → 2010-09-17 (+134d) | 2010-05-06 → 2010-09-21 (+138d) | 1d? → 3d | 5d → 36d |  | constraint none → start no earlier than 2010-09-17; resources none → Programador Sr 2 |
| 191 | **(ADM15) Mantener Asignaciones TSI** | 2010-05-10 → 2010-07-23 (+74d) | 2010-05-10 → 2010-09-20 (+133d) | 1d? → 42d? | 3d → 0d | 100 → 100, 46 |  |
| 192 | **Módulo de envío de datos a CatSalut** | 2010-05-10 → 2010-07-23 (+74d) | 2010-05-10 → 2010-09-10 (+123d) | 1d? → 36d? | 3d → 0d |  |  |
| 194 | Recolección de datos de operaciones TSI pendientes | 2010-05-10 → 2010-09-06 (+119d) | 2010-05-10 → 2010-09-08 (+121d) | 1d? → 3d | 3d → 46d |  | constraint none → start no earlier than 2010-08-19; resources none → Programador Jr 2 |
| 195 | Migración de los datos a archivo TXT | 2010-05-10 → 2010-09-09 (+122d) | 2010-05-10 → 2010-09-10 (+123d) | 1d? → 2d | 3d → 44d |  | constraint none → start no earlier than 2010-09-09; resources none → Programador Jr 2 |
| 196 | Interface de comunicación con CatSalut | 2010-05-10 → 2010-09-06 (+119d) | 2010-05-10 → 2010-09-10 (+123d) | 1d? → 5d | 3d → 44d |  | constraint none → start no earlier than 2010-08-02; resources none → Programador Sr 2 |
| 198 | **(ADM16) Asignar documentos a acciones** | 2010-05-06 → 2010-09-16 (+133d) | 2010-05-06 → 2010-09-22 (+139d) | 1d? → 5d | 4d → 38d | none → 126 |  |
| 199 | Creación/eliminación de asociaciones | 2010-05-06 → 2010-09-20 (+137d) | 2010-05-06 → 2010-09-20 (+137d) | 1d? → 1d | 5d → 39d |  | constraint none → start no earlier than 2010-09-20; resources none → Programador Jr 2 |
| 200 | Caducidad de asociaciones | 2010-05-06 → 2010-09-16 (+133d) | 2010-05-06 → 2010-09-16 (+133d) | 1d? → 1d | 5d → 41d |  | was named Cadicidad de asociaciones; constraint none → start no earlier than 2010-09-16; resources none → Programador Jr 1 |
| 202 | **(INT01) Direcciones de farmacias, CAP y otra informacion breve** | 2010-05-11 → 2010-09-10 (+122d) | 2010-05-11 → 2010-09-14 (+126d) | 1d? → 3d | 1d → 21d | 13, 230, 78, 100 → 13, 78, 100 |  |
| 203 | Trabajo con listas de resultados | 2010-05-11 → 2010-09-10 (+122d) | 2010-05-11 → 2010-09-13 (+125d) | 1d? → 2d | 1d → 21d |  | constraint none → start no earlier than 2010-09-10; resources none → Programador Jr 1 |
| 205 | **(SIS01) Trazabilidad y registro de uso** | 2010-05-06 → 2010-06-21 (+46d) | 2010-05-13 → 2010-08-06 (+85d) | 6d? → 34.5d | 0d → 71d | none → 1 |  |
| 206 | Control Acceso a Consultas | 2010-05-12 → 2010-06-23 (+42d) | 2010-05-12 → 2010-06-25 (+44d) | 1d? → 3d | 1d → 99d | 29 → none | constraint none → start no earlier than 2010-06-23; resources none → Programador Sr 1 |
| 207 | Control Acceso a Encuestas | 2010-05-07 → 2010-07-06 (+60d) | 2010-05-07 → 2010-07-08 (+62d) | 1d? → 3d | 4d → 90d | 67 → none | constraint none → start no earlier than 2010-07-06; resources none → Programador Sr 2 |
| 208 | Control General Acceso al Sistema | 2010-05-10 → 2010-06-28 (+49d) | 2010-05-10 → 2010-06-30 (+51d) | 1d? → 3d | 3d → 96d | 158 → none | constraint none → start no earlier than 2010-06-28; resources none → Programador Sr 1 |
| 209 | Control Acceso a Campañas de Seguimiento | 2010-05-13 → 2010-06-21 (+39d) | 2010-05-13 → 2010-06-24 (+42d) | 1d? → 3d | 0d → 100.5d | 60 → none | constraint none → start no earlier than 2010-06-21; resources none → Programador Sr 2 |
| 210 | Control Acceso a Documentos | 2010-05-07 → 2010-07-13 (+67d) | 2010-05-07 → 2010-07-15 (+69d) | 1d? → 3d | 4d → 85d | 78 → none | constraint none → start no earlier than 2010-07-13; resources none → Programador Sr 2 |
| 211 | Control Acceso a Recursos Internos | 2010-05-06 → 2010-06-24 (+49d) | 2010-05-06 → 2010-06-29 (+54d) | 1d? → 3d | 5d → 97.5d |  | constraint none → start no earlier than 2010-06-24; resources none → Programador Sr 2 |
| 212 | Historial de Consultas | 2010-05-06 → 2010-07-27 (+82d) | 2010-05-06 → 2010-07-30 (+85d) | 1d? → 4d | 5d → 74d |  | constraint none → start no earlier than 2010-07-27; resources none → Prog SSr 1 |
| 214 | **(ISC01) Transferir info, comunicacion a STARS** | 2010-05-06 → 2010-06-17 (+42d) | 2010-05-06 → 2010-06-25 (+50d) | 1d? → 7d | 5d → 101d | none → 1 |  |
| 215 | Recibir información del sistema de comunicaciones | 2010-05-06 → 2010-06-17 (+42d) | 2010-05-06 → 2010-06-25 (+50d) | 1d? → 7d | 5d → 101d |  | constraint none → start no earlier than 2010-06-17; resources none → Prog SSr 1 |
| 216 | **(ISC02) Iniciar llamada desde STARS** | 2010-05-06 → 2010-07-27 (+82d) | 2010-05-06 → 2010-08-11 (+97d) | 1d? → 12d | 5d → 68d | none → 1 |  |
| 217 | Lanzamiento de petición de comunicación | 2010-05-06 → 2010-07-27 (+82d) | 2010-05-06 → 2010-08-04 (+90d) | 1d? → 7d | 5d → 72d |  | constraint none → start no earlier than 2010-07-27; resources none → Programador Sr 1 |
| 219 | **(ISC03) Informacion encuesta** | 2010-05-06 → 2010-07-21 (+76d) | 2010-05-06 → 2010-07-21 (+76d) | 1d? → 1d | 5d → 83d | none → 154 |  |
| 220 | Activación actividad de encuesta | 2010-05-06 → 2010-07-21 (+76d) | 2010-05-06 → 2010-07-21 (+76d) | 1d? → 1d | 5d → 83d |  | constraint none → start no earlier than 2010-07-21; resources none → Programador Jr 2 |
| 221 | ABM Consultas | 2010-05-06 → 2010-06-23 (+48d) | 2010-05-06 → 2010-06-24 (+49d) | 1d? → 2d | 5d → 98d | none → 29 | constraint none → start no earlier than 2010-06-22; resources none → Programador Jr 2 |
| 222 | ABM Usuarios | 2010-05-06 → 2010-06-24 (+49d) | 2010-05-06 → 2010-06-25 (+50d) | 1d? → 2d | 4d → 97d | none → 3 | constraint none → start no earlier than 2010-06-24; resources none → Programador Jr 1 |
| 223 | Proteccion de Acceso | 2010-05-07 → 2010-07-16 (+70d) | 2010-05-07 → 2010-07-20 (+74d) | 1d? → 3d | 4d → 84d |  | constraint none → start no earlier than 2010-07-16; resources none → Programador Sr 2 |
| 224 | ABM Fichas / Guias / Recursos | 2010-05-06 → 2010-09-06 (+123d) | 2010-05-06 → 2010-09-09 (+126d) | 1d? → 4d | 2d → 43d | none → 131 | constraint none → start no earlier than 2010-09-06; resources none → Programador Jr 1 |
| 225 | ABM Cuestionarios | 2010-05-06 → 2010-07-12 (+67d) | 2010-05-06 → 2010-07-13 (+68d) | 1d? → 2d | 4d → 85d | none → 154 | constraint none → start no earlier than 2010-07-12; resources none → Programador Jr 1 |
| 226 | Interfaz General | 2010-05-06 → 2010-06-28 (+53d) | 2010-05-06 → 2010-07-23 (+78d) | 1d? → 20d | 5d → 63d | none → 1 | constraint none → start no earlier than 2010-06-28; resources none → Prog SSr 1 |
| 227 | Interfaz Para Usuario Avanzado | 2010-05-06 → 2010-08-26 (+112d) | 2010-05-06 → 2010-09-03 (+120d) | 1d? → 7d | 2d → 33d | none → 100 | constraint none → start no earlier than 2010-08-18; resources none → Programador Sr 1 |
| 228 | Interfaz de Listados para ADM02 | 2010-05-06 → 2010-09-21 (+138d) | 2010-05-06 → 2010-09-29 (+146d) | 1d? → 7d | 4d → 15d | none → 117 | constraint none → start no earlier than 2010-09-21; resources none → Programador Jr 2 |
| 229 | Interfaz Mantenimiento Usuarios y Perfiles | 2010-05-06 → 2010-07-21 (+76d) | 2010-05-06 → 2010-07-30 (+85d) | 1d? → 8d | 3d → 58d | none → 158 | constraint none → start no earlier than 2010-07-21; resources none → Programador Sr 2 |
| 230 | Interfaz Direcciones INT01 | 2010-05-06 → 2010-09-22 (+139d) | 2010-05-06 → 2010-09-28 (+145d) | 1d? → 5d | 3d → 16d | none → 202 | constraint none → start no earlier than 2010-09-22; resources none → Prog SSr 1 |
| 231 | ABM Enfermedades / Centros Salud | 2010-05-06 → 2010-09-20 (+137d) | 2010-05-06 → 2010-09-22 (+139d) | 1d? → 3d | 5d → 34d | none → 202 | constraint none → start no earlier than 2010-09-20; resources none → Programador Jr 1 |
| 232 | Listado de Usuarios y Perfiles | 2010-05-06 → 2010-07-28 (+83d) | 2010-05-06 → 2010-07-28 (+83d) | 1d? → 1d | 0d → 78d | none → 158 | constraint none → start no earlier than 2010-07-28; resources none → Programador Jr 1 |
| 233 | Interface con sistema de comunicaciones (ISC01, ISC02, ISC03) | 2010-05-06 → 2010-07-06 (+61d) | 2010-05-06 → 2010-07-16 (+71d) | 1d? → 9d | 5d → 68d | none → 1 | constraint none → start no earlier than 2010-07-06; resources none → Programador Sr 1 |

## Version 3 (saved 2010-09-15, file Casos Uso v5 Final.mpp)

Last finish stays 2010-11-15.

Added:

| ID | Task | Duration | Start | Finish | Predecessors | Constraint | Resources |
| --- | --- | --- | --- | --- | --- | --- | --- |
| 238 | Incepcion de la Arquitectura | 5d | 2010-06-07 | 2010-06-11 |  | start no earlier than 2010-06-07 | Arquitecto / Lider |
| 244 | Instalacion de Ambiente Virtual para Desarrollo | 7d | 2010-05-24 | 2010-06-01 |  | start no earlier than 2010-05-24 | IT 1 |
| 255 | Configurar Clusters | 3d | 2010-09-29 | 2010-10-01 |  | start no earlier than 2010-09-29 | IT 1 |
| 256 | Configurar RAID en NAS | 2d | 2010-10-04 | 2010-10-05 |  | start no earlier than 2010-10-04 | IT 1 |
| 257 | Configurar Esquema Replicado de Backups Web Site y firewall | 3d | 2010-10-06 | 2010-10-08 | 256 |  | IT 1 |
| 258 | Configuracion Total del Entorno | 5d | 2010-10-11 | 2010-10-15 | 252, 253, 254, 255, 257 | start no earlier than 2010-10-11 | IT 1 |

Removed: 250 Configuracion del Ambiente de Produccion; 251 Configuracion del Ambiente de Produccion; 252 Instalar y Configurar Load Balancer

Changed:

| ID | Task | Start | Finish | Duration | Total float | Other |
| --- | --- | --- | --- | --- | --- | --- |
| 237 | Arquitectura General / Configuracion Ambientes / Framework |  |  |  |  | resources Arquitecto → Arquitecto / Lider |
| 239 | **Tareas IT Sobre Nuestra Empresa** |  |  | 138d? → 138d |  |  |
| 241 | **Infraestructura** |  | 2010-05-21 → 2010-06-01 (+11d) | 12d → 19d |  |  |
| 246 | **Redes** | 2010-05-24 → 2010-06-02 (+9d) |  | 12d → 5d |  |  |
| 248 | Configuracion Red Interna | 2010-05-24 → 2010-06-02 (+9d) | 2010-05-25 → 2010-06-03 (+9d) |  | 124d → 117d |  |
| 251 | **Configuracion del Ambiente de Produccion** | 2010-08-02 → 2010-09-13 (+42d) | 2010-09-02 → 2010-10-15 (+43d) | 24d? → 25d | 0d → 6d |  |
| 252 | Instalar y Configurar APP Server | 2010-08-17 → 2010-09-20 (+34d) | 2010-08-19 → 2010-09-22 (+34d) |  | 47d → 18d | constraint start no earlier than 2010-08-17 → start no earlier than 2010-09-20 |
| 253 | Instalar y Configurar DB Server | 2010-08-09 → 2010-09-13 (+35d) | 2010-08-12 → 2010-09-16 (+35d) |  | 52d → 22d | constraint start no earlier than 2010-08-09 → start no earlier than 2010-09-13 |
| 254 | Instalar y Configurar Web Server | 2010-08-30 → 2010-09-24 (+25d) | 2010-09-01 → 2010-09-28 (+27d) |  | 38d → 14d | constraint start no earlier than 2010-08-30 → start no earlier than 2010-09-24 |
| 260 | Puesta en Marcha |  |  |  |  | resources IT 1; Arquitecto; Programador Sr 1; Programador Sr 2 → IT 1; Arquitecto / Lider; Programador Sr 1; Programador Sr 2 |
| 270 | Capcitacion Usuario Operador |  |  |  |  | resources Arquitecto; Programador Sr 1; Programador Sr 2 → Arquitecto / Lider; Programador Sr 1; Programador Sr 2 |
| 271 | Capacitacion Usuario Administrador |  |  |  |  | resources Arquitecto; Programador Sr 1; Programador Sr 2 → Arquitecto / Lider; Programador Sr 1; Programador Sr 2 |

## Version 4 (saved 2010-09-26, file Casos Uso v5 Final.mpp)

Note of the change: adaptado para que la arq del cliente este configurada antes de las entregas

Last finish stays 2010-11-15.

Changed:

| ID | Task | Start | Finish | Duration | Total float | Predecessors | Other |
| --- | --- | --- | --- | --- | --- | --- | --- |
| 13 | **(USR01) Determinacion del servicio de atencion** |  | 2010-09-01 → 2010-08-31 (-1d) | 12d → 11d | 27d → 28d |  |  |
| 18 | Testing Servicio Atencion | 2010-09-01 → 2010-08-31 (-1d) | 2010-09-01 → 2010-08-31 (-1d) |  | 27d → 28d |  | constraint start no earlier than 2010-09-01 → start no earlier than 2010-08-31 |
| 26 | **(USR03) Rellamada** |  | 2010-08-27 → 2010-08-26 (-1d) | 10d → 9d | 56d → 57d |  |  |
| 28 | Testing Rellamada | 2010-08-27 → 2010-08-26 (-1d) | 2010-08-27 → 2010-08-26 (-1d) |  | 56d → 57d |  | constraint start no earlier than 2010-08-27 → start no earlier than 2010-08-26 |
| 43 | **(USR07) Programacion de cita previa** |  | 2010-08-26 → 2010-08-23 (-3d) | 7d → 4d | 57d → 60d |  |  |
| 45 | Testing USR07 | 2010-08-26 → 2010-08-23 (-3d) | 2010-08-26 → 2010-08-23 (-3d) |  | 57d → 60d |  | constraint start no earlier than 2010-08-26 → start no earlier than 2010-08-23 |
| 52 | **(USR09) Servicio de traduccion** |  | 2010-08-31 → 2010-08-30 (-1d) | 15d → 14d | 54d → 55d |  |  |
| 56 | Testing | 2010-08-30 → 2010-08-27 (-3d) | 2010-08-31 → 2010-08-30 (-1d) |  | 54d → 55d |  | constraint start no earlier than 2010-08-30 → start no earlier than 2010-08-27 |
| 68 | Interfaz de Encuestas | 2010-07-26 → 2010-07-27 (+1d) | 2010-07-28 → 2010-07-29 (+1d) |  | 76d → 75d |  | constraint start no earlier than 2010-07-26 → start no earlier than 2010-07-27 |
| 72 | **(USR13) Buscar Consultas** | 2010-07-22 → 2010-07-23 (+1d) |  | 13d → 12d |  |  |  |
| 73 | **Operativo de Busqueda** | 2010-07-22 → 2010-07-23 (+1d) |  | 13d → 12d |  |  |  |
| 75 | Filtrar resultados de la busqueda según permisos del usuario | 2010-07-30 → 2010-07-26 (-4d) | 2010-07-30 → 2010-07-26 (-4d) |  | 72d → 76d |  | constraint start no earlier than 2010-07-30 → start no earlier than 2010-07-26; resources Programador Jr 2 → Prog SSr 1 |
| 76 | Acotar resultados si los mismos sobrepasan el parametro configurable "n" | 2010-07-22 → 2010-07-23 (+1d) | 2010-07-22 → 2010-07-23 (+1d) |  | 78d → 77d |  | constraint start no earlier than 2010-07-22 → start no earlier than 2010-07-23 |
| 78 | **(USR14) Hacer Uso de Documentos** |  | 2010-08-23 → 2010-08-20 (-3d) | 21d → 20d | 34d → 35d |  |  |
| 84 | Testing | 2010-08-20 → 2010-08-19 (-1d) | 2010-08-23 → 2010-08-20 (-3d) |  | 34d → 35d |  | constraint start no earlier than 2010-08-20 → start no earlier than 2010-08-19 |
| 87 | Adición de motivo de cierre a la consulta | 2010-07-23 → 2010-07-26 (+3d) | 2010-07-23 → 2010-07-26 (+3d) |  | -5d → 69d |  | constraint start no earlier than 2010-07-23 → start no earlier than 2010-07-26 |
| 88 | Creación de clasificaciones ad-hoc | 2010-07-29 → 2010-07-30 (+1d) | 2010-07-29 → 2010-07-30 (+1d) |  | -9d → 65d |  | constraint start no earlier than 2010-07-29 → start no earlier than 2010-07-30 |
| 94 | **(USR17) Crear/Transferir Consulta** |  | 2010-08-16 → 2010-07-14 (-33d) | 37d → 14d | -20d → 59d |  |  |
| 97 | **Transferir Consulta** | 2010-08-06 → 2010-07-12 (-25d) | 2010-08-06 → 2010-07-12 (-25d) |  | -16d → 59d |  |  |
| 98 | Localizar a otro operador del mismo perfil | 2010-08-06 → 2010-07-12 (-25d) | 2010-08-06 → 2010-07-12 (-25d) |  | -16d → 59d |  | constraint start no earlier than 2010-08-06 → start no earlier than 2010-07-12; resources Programador Jr 1 → Programador Jr 2 |
| 99 | Testing USR17 | 2010-08-13 → 2010-07-13 (-31d) | 2010-08-16 → 2010-07-14 (-33d) |  | -20d → 59d |  | was named Testing; constraint start no earlier than 2010-08-13 → start no earlier than 2010-07-13 |
| 131 | (ADM04) Mantenimiento de Recursos | 2010-08-24 → 2010-08-23 (-1d) | 2010-08-26 → 2010-08-25 (-1d) |  | 49d → 50d |  |  |
| 138 | **Mantenimiento Indice de Encuestas** | 2010-07-14 → 2010-07-19 (+5d) | 2010-07-20 → 2010-07-21 (+1d) | 5d → 3d | 84d → 83d |  |  |
| 140 | Cierre de ediciones | 2010-07-14 → 2010-07-21 (+7d) | 2010-07-14 → 2010-07-21 (+7d) |  | 88d → 83d |  | constraint start no earlier than 2010-07-14 → start no earlier than 2010-07-21 |
| 143 | **Asignación lista de encuestados** | 2010-07-12 → 2010-07-13 (+1d) |  | 10d → 9d |  |  |  |
| 144 | Alta, baja de encuestados | 2010-07-12 → 2010-07-13 (+1d) | 2010-07-13 → 2010-07-14 (+1d) |  | 89d → 88d |  | constraint start no earlier than 2010-07-12 → start no earlier than 2010-07-13 |
| 153 | Testing ADM 3 al 9 | 2010-08-17 → 2010-08-16 (-1d) | 2010-08-19 → 2010-08-18 (-1d) |  | 62d → 63d |  | constraint start no earlier than 2010-08-17 → start no earlier than 2010-08-16 |
| 168 | Testing Mantenimiento Usuarios | 2010-07-13 → 2010-07-15 (+2d) | 2010-07-13 → 2010-07-15 (+2d) |  | 89d → 87d |  | constraint start no earlier than 2010-07-13 → start no earlier than 2010-07-15 |
| 176 | **(ADM13) Listados de documentos** |  | 2010-09-24 → 2010-09-27 (+3d) | 7d → 8d | 36d → 35d |  |  |
| 177 | Elaboración de listado de configuración | 2010-09-23 → 2010-09-24 (+1d) | 2010-09-23 → 2010-09-24 (+1d) |  | 36d → 35d |  | constraint start no earlier than 2010-09-23 → start no earlier than 2010-09-24 |
| 180 | Testing Listado Docs | 2010-09-24 → 2010-09-27 (+3d) | 2010-09-24 → 2010-09-27 (+3d) |  | 36d → 35d |  |  |
| 191 | **(ADM15) Mantener Asignaciones TSI** | 2010-07-23 → 2010-09-06 (+45d) | 2010-09-20 → 2010-09-22 (+2d) | 42d? → 13d | 0d → 38d |  |  |
| 192 | **Módulo de envío de datos a CatSalut** | 2010-07-23 → 2010-09-06 (+45d) | 2010-09-10 → 2010-09-20 (+10d) | 36d? → 11d | 0d → 38d |  |  |
| 193 | Módulo de envío de datos a CatSalut | 2010-07-23 → 2010-09-17 (+56d) | 2010-07-23 → 2010-09-20 (+59d) | 0d? → 2d | -31d → 38d |  | constraint must start on 2010-07-23 → start no earlier than 2010-09-17; resources none → Programador Jr 1 |
| 196 | Interface de comunicación con CatSalut |  |  |  |  |  | constraint start no earlier than 2010-08-02 → start no earlier than 2010-09-02 |
| 197 | Testing TSI | 2010-09-17 → 2010-09-21 (+4d) | 2010-09-20 → 2010-09-22 (+2d) |  | 40d → 38d |  |  |
| 198 | **(ADM16) Asignar documentos a acciones** |  | 2010-09-22 → 2010-09-23 (+1d) | 5d → 6d | 38d → 37d |  |  |
| 201 | Testing Asignacion Docs a Acciones | 2010-09-22 → 2010-09-23 (+1d) | 2010-09-22 → 2010-09-23 (+1d) |  | 38d → 37d |  | constraint start no earlier than 2010-09-22 → start no earlier than 2010-09-23 |
| 219 | **(ISC03) Informacion encuesta** | 2010-07-21 → 2010-07-22 (+1d) | 2010-07-21 → 2010-07-22 (+1d) |  | 83d → 82d |  |  |
| 220 | Activación actividad de encuesta | 2010-07-21 → 2010-07-22 (+1d) | 2010-07-21 → 2010-07-22 (+1d) |  | 83d → 82d |  | constraint start no earlier than 2010-07-21 → start no earlier than 2010-07-22 |
| 231 | ABM Enfermedades / Centros Salud | 2010-09-20 → 2010-09-21 (+1d) | 2010-09-22 → 2010-09-23 (+1d) |  | 34d → 33d |  | constraint start no earlier than 2010-09-20 → start no earlier than 2010-09-21 |
| 234 | Testing ABMs Varios | 2010-09-27 → 2010-09-28 (+1d) | 2010-09-30 → 2010-10-01 (+1d) |  | 32d → 31d |  | constraint start no earlier than 2010-09-27 → start no earlier than 2010-09-28 |
| 239 | **Tareas IT Sobre Nuestra Empresa** |  | 2010-11-15 → 2010-06-08 (-160d) | 138d → 24d | 0d → 76d |  |  |
| 251 | **Configuracion del Ambiente de Produccion** | 2010-09-13 → 2010-06-09 (-96d) | 2010-10-15 → 2010-10-29 (+14d) | 25d → 103d | 6d → 11d |  |  |
| 252 | Instalar y Configurar APP Server | 2010-09-20 → 2010-06-15 (-97d) | 2010-09-22 → 2010-06-17 (-97d) |  | 18d → 102d |  | constraint start no earlier than 2010-09-20 → start no earlier than 2010-06-15 |
| 253 | Instalar y Configurar DB Server | 2010-09-13 → 2010-06-09 (-96d) | 2010-09-16 → 2010-06-14 (-94d) |  | 22d → 105d |  | constraint start no earlier than 2010-09-13 → start no earlier than 2010-06-09 |
| 254 | Instalar y Configurar Web Server | 2010-09-24 → 2010-08-02 (-53d) | 2010-09-28 → 2010-08-04 (-55d) |  | 14d → 68d |  | constraint start no earlier than 2010-09-24 → start no earlier than 2010-08-02 |
| 255 | Configurar Clusters | 2010-09-29 → 2010-06-28 (-93d) | 2010-10-01 → 2010-06-30 (-93d) |  | 11d → 93d |  | constraint start no earlier than 2010-09-29 → start no earlier than 2010-06-28 |
| 256 | Configurar RAID en NAS | 2010-10-04 → 2010-06-21 (-105d) | 2010-10-05 → 2010-06-22 (-105d) |  | 6d → 96d |  | constraint start no earlier than 2010-10-04 → start no earlier than 2010-06-21 |
| 257 | Configurar Esquema Replicado de Backups Web Site y firewall | 2010-10-06 → 2010-08-09 (-58d) | 2010-10-08 → 2010-08-11 (-58d) |  | 6d → 63d |  | constraint none → start no earlier than 2010-08-09 |
| 258 | Configuracion Total del Entorno | 2010-10-11 → 2010-08-16 (-56d) | 2010-10-15 → 2010-08-20 (-56d) |  | 6d → 61d |  | constraint start no earlier than 2010-10-11 → start no earlier than 2010-08-16 |
| 260 | Puesta en Marcha |  |  |  |  | 251, 235 → 235 |  |
| 263 | **Web Server (Consultas Externas del Cliente)** | 2010-07-14 → 2010-07-16 (+2d) |  | 22d → 20d |  |  |  |
| 267 | Test Web Server | 2010-07-14 → 2010-07-16 (+2d) | 2010-07-15 → 2010-07-19 (+4d) |  | 87d → 85d |  | constraint start no earlier than 2010-07-14 → start no earlier than 2010-07-16 |
| 274 | Mantenimiento de la Infra |  | 2010-08-20 → 2010-08-27 (+7d) |  | 61d → 56d |  |  |

## Version 5 (saved 2010-09-28, file Casos Uso v5 Final.mpp)

Note of the change: bug fixing

Last finish stays 2010-11-15.

Changed:

| ID | Task | Other |
| --- | --- | --- |
| 14 | Capturar la Comunicación | was named Capturar la Comunicación???? |
