# Casos Uso

How a schedule from MS Project changed from version to version. A marks actual dates.

## Version 1 (saved 2010-08-29, file Casos Uso Lole -  SOLO DURACION DE TAREAS.mpp)

| ID | WBS | Task | Duration | Start | Finish | Predecessors | Total float |
| --- | --- | --- | --- | --- | --- | --- | --- |
| 1 |  | Integracion con el Sistema STARS (Lectura Datos) | 5d | 2010-05-06 | 2010-05-12 |  | 3d |
| 2 |  | Modulo Seguridad que Oculta Info Llamado | 3d | 2010-05-06 | 2010-05-10 |  | 5d |
| 3 | 3 | **(GEN01) Identificacion y Autenticacion** | 4d | 2010-05-07 | 2010-05-12 | 199 |  |
| 4 |  | Autenticacion | 1d | 2010-05-07 | 2010-05-07 |  | 3d |
| 5 |  | Interfaz Inicio Sesion | 3d | 2010-05-07 | 2010-05-11 |  | 1d |
| 6 | 4 | **(GEN02) Gestion General de Registros** | 6d | 2010-05-06 | 2010-05-13 |  |  |
| 7 |  | ABM Registro | 1d | 2010-05-06 | 2010-05-06 |  | 5d |
| 8 |  | Buscar registro | 1d | 2010-05-06 | 2010-05-06 |  | 5d |
| 9 |  | Copiar registro | 1d | 2010-05-06 | 2010-05-06 |  | 5d |
| 10 |  | Interfaz ABM Registro | 3d | 2010-05-06 | 2010-05-10 |  | 3d |
| 11 | 5 | **(USR01) Determinacion del servicio de atencion** | 5d | 2010-05-13 | 2010-05-19 | 1, 3 |  |
| 12 |  | Capturar la Comunicación???? | 2d | 2010-05-13 | 2010-05-14 |  | 3d |
| 13 |  | Determinar el tipo de servicio | 1d | 2010-05-13 | 2010-05-13 |  | 4d |
| 14 |  | Lista de Espera | 1d | 2010-05-13 | 2010-05-13 |  | 4d |
| 15 |  | Determinar conjunto de operadores adecuados al tipo de solicitud | 1d | 2010-05-13 | 2010-05-13 |  | 4d |
| 16 | 6 | **(USR02) Agenda** | 7d | 2010-05-13 | 2010-05-21 | 3, 71 |  |
| 17 |  | Selección de una agenda | 0.5h | 2010-05-14 | 2010-05-14 | 18 | 5.94d |
| 18 |  | ABM citas sobre la agenda | 1d | 2010-05-13 | 2010-05-13 |  | 5.94d |
| 19 |  | Interfaz de la Agenda | 2d | 2010-05-13 | 2010-05-14 |  | 5d |
| 20 |  | Integracion con Stars - Llamada desde Agenda | 3d | 2010-05-13 | 2010-05-17 |  | 4d |
| 21 |  | Asignar pacientes a cita | 0.5h | 2010-05-13 | 2010-05-13 |  | 6.94d |
| 22 |  | (USR03) Rellamada | 1d | 2010-05-11 | 2010-05-11 | 31, 56 | 22d |
| 23 | 8 | **(USR04) Consulta** | 6d | 2010-05-20 | 2010-05-27 | 11, 61, 67, 31, 74, 71 |  |
| 24 | 8.1 | **Tratar Consulta** | 1d | 2010-05-20 | 2010-05-20 | 61, 67 |  |
| 25 |  | Ajornar Consulta | 0.5h | 2010-05-20 | 2010-05-20 |  | 0.94d |
| 26 |  | Transferir consulta | 0.5h | 2010-05-20 | 2010-05-20 |  | 0.94d |
| 27 |  | Modulo Envio de Correo | 2d | 2010-05-20 | 2010-05-21 |  | 4d |
| 28 |  | Modulo Envio SMS | 2d | 2010-05-20 | 2010-05-21 |  | 4d |
| 29 |  | Inclusion en Campaña de Seguimiento | 1d | 2010-05-20 | 2010-05-20 |  | 5d |
| 30 |  | (USR05) Consejo Salud | 1d | 2010-05-28 | 2010-05-28 | 61, 67, 23 | 9d |
| 31 | 10 | **(USR06) Gestionar Consulta pendiente** | 1d | 2010-05-06 | 2010-05-06 |  |  |
| 32 |  | Priorizacion de la Lista de Consultas | 1d | 2010-05-06 | 2010-05-06 |  | 0d |
| 33 | 11 | **(USR07) Programacion de cita previa** | 1d | 2010-05-07 | 2010-05-07 | 67, 74 |  |
| 34 |  | Realizar Citación (Interface con Sistema de citación AP) | 1d | 2010-05-07 | 2010-05-07 |  | 0d |
| 35 | 12 | **(USR08) Gestiones sobre la TSI** | 2d | 2010-05-28 | 2010-05-31 | 31, 74, 67, 23 |  |
| 36 |  | Verificacion Documentacion Necesaria | 0.5h | 2010-05-28 | 2010-05-28 |  | 1.94d |
| 37 |  | Enviar Gestion (Interface con sistema RCA) | 0.5h | 2010-05-28 | 2010-05-28 |  | 1.94d |
| 38 |  | Cierre automatico de la consulta por paso de tiempo | 0.5h | 2010-05-28 | 2010-05-28 |  | 1.94d |
| 39 |  | Guardar LOG gestion TSI????? | 0.5h | 2010-05-28 | 2010-05-28 |  | 1.94d |
| 40 | 13 | **(USR09) Servicio de traduccion** | 5d | 2010-05-28 | 2010-06-03 | 23, 67 |  |
| 41 |  | Contactar Servicio Externo de Traduccion | 1d | 2010-05-28 | 2010-05-28 |  | 4d |
| 42 |  | Enlace Comunicacion Multiconferencia | 2d | 2010-05-28 | 2010-05-31 |  | 3d |
| 43 |  | Modulo monitorización de servicio | 2d | 2010-05-28 | 2010-05-31 |  | 3d |
| 44 | 14 | **(USR10) Informacion Sanitaria General** | 1d | 2010-05-28 | 2010-05-28 | 67, 74, 170, 23 |  |
| 45 |  | Guardar Informacion Ciudadano | 1d | 2010-05-28 | 2010-05-28 |  | 0d |
| 46 | 15 | **(USR11) Seguimiento de Patologias** | 2.5d | 2010-05-24 | 2010-05-26 | 16, 31 |  |
| 47 |  | Buscar Campañas Abiertas | 0.5d | 2010-05-24 | 2010-05-24 |  | 2d |
| 48 | 15.2 | **Gestionar Seguimiento** | 1d | 2010-05-24 | 2010-05-24 |  |  |
| 49 |  | Visualizar Historial Pacientes | 0.5h | 2010-05-24 | 2010-05-24 |  | 0.94d |
| 50 |  | Llamada al Paciente | 0.5h | 2010-05-24 | 2010-05-24 |  | 0.94d |
| 51 |  | Desligar paciente de campaña | 1d | 2010-05-24 | 2010-05-24 |  | 1.5d |
| 52 | 16 | **(USR12) Encuestas** | 5d | 2010-05-06 | 2010-05-12 |  |  |
| 53 |  | Interfaz de Encuestas | 3d | 2010-05-06 | 2010-05-10 |  | 2d |
| 54 |  | Contacto con Encuestado | 1d | 2010-05-06 | 2010-05-06 |  | 4d |
| 55 |  | ABM Formulario De Encuesta | 1d | 2010-05-06 | 2010-05-06 |  | 4d |
| 56 | 17 | **(USR13) Buscar Consultas** | 2d | 2010-05-07 | 2010-05-10 | 71 | 0d |
| 57 | 17.1 | **Operativo de Busqueda** | 2d | 2010-05-07 | 2010-05-10 |  |  |
| 58 |  | Buscar según distintos criterios | 1d | 2010-05-07 | 2010-05-07 |  | 1d |
| 59 |  | Filtrar resultados de la busqueda según permisos del usuario | 0.5h | 2010-05-07 | 2010-05-07 |  | 1.94d |
| 60 |  | Acotar resultados si los mismos sobrepasan el parametro configurable "n" | 0.5h | 2010-05-07 | 2010-05-07 |  | 1.94d |
| 61 | 18 | **(USR14) Hacer Uso de Documentos** | 9d | 2010-05-06 | 2010-05-18 |  |  |
| 62 |  | Creación y uso de Guias Interrogatorio | 2d | 2010-05-06 | 2010-05-07 |  | 7d |
| 63 |  | Creación y uso Fichas Tematicas | 2d | 2010-05-06 | 2010-05-07 |  | 7d |
| 64 |  | Creación y uso de Recursos | 2d | 2010-05-06 | 2010-05-07 |  | 7d |
| 65 |  | Búsqueda y selección de documentos | 2d | 2010-05-06 | 2010-05-07 |  | 7d |
| 66 |  | Apertura documentos | 1d | 2010-05-06 | 2010-05-06 |  | 8d |
| 67 | 19 | **(USR15) Cerrar consulta y dar respuesta al ciudadano** | 2d | 2010-05-06 | 2010-05-07 |  |  |
| 68 |  | Clasificar Finalizacion de Consulta | 0.5h | 2010-05-06 | 2010-05-06 |  | 1.94d |
| 69 |  | Adición de motivo de cierre a la consulta | 0.5h | 2010-05-06 | 2010-05-06 |  | 1.94d |
| 70 |  | Creación de clasificaciones ad-hoc | 1d | 2010-05-06 | 2010-05-06 |  | 1d |

| ID | WBS | Task | Duration | Start | Finish | Predecessors | Total float |
| --- | --- | --- | --- | --- | --- | --- | --- |
| 71 | 20 | **(USR16) Visualizar Consulta** | 2d | 2010-05-06 | 2010-05-07 |  |  |
| 72 |  | Mostrar datos generales de la consulta | 1d | 2010-05-06 | 2010-05-06 |  | 1d |
| 73 |  | Mostrar datos según el documento elegido | 1d | 2010-05-06 | 2010-05-06 |  | 1d |
| 74 | 21 | **(USR17) Crear/Transferir Consulta** | 4d | 2010-05-06 | 2010-05-11 |  |  |
| 75 |  | Crear Consulta | 2d | 2010-05-06 | 2010-05-07 |  | 2d |
| 76 |  | Copiar consulta | 1d | 2010-05-06 | 2010-05-06 |  | 3d |
| 77 | 21.3 | **Transferir Consulta** | 1d | 2010-05-06 | 2010-05-06 |  |  |
| 78 |  | Localizar a otro operador del mismo perfil | 1d | 2010-05-06 | 2010-05-06 |  | 0d |
| 79 | 22 | **(ADM01) Mantenimiento del Entorno, clasif y prioridades** | 17d | 2010-05-07 | 2010-05-31 | 193 |  |
| 80 |  | Módulo de edición de parametros grales de la aplicación | 3d | 2010-05-07 | 2010-05-11 |  | 14d |
| 81 |  | Módulo edición listas de clasificaciones (Códigos internos) | 3d | 2010-05-07 | 2010-05-11 |  | 14d |
| 82 | 22.3 | **Módulo mantenimiento de la lista de espera** | 2d | 2010-05-07 | 2010-05-10 |  |  |
| 83 |  | ABM de la lista de espera | 1d | 2010-05-07 | 2010-05-07 |  | 1d |
| 84 |  | Módulo de gestión de prioridades sobre la lista de espera | 1d | 2010-05-07 | 2010-05-07 |  | 1d |
| 85 | 22.4 | **Módulo mantenimiento de lineas de servicio** | 2d | 2010-05-07 | 2010-05-10 |  |  |
| 86 |  | ABM lineas de servicio | 1d | 2010-05-07 | 2010-05-07 |  | 1d |
| 87 |  | ABM servicios para una linea seleccionada | 1d | 2010-05-07 | 2010-05-07 |  | 1d |
| 88 | 22.5 | **Módulo mantenimiento agendas** | 4d | 2010-05-07 | 2010-05-12 |  |  |
| 89 |  | Asignar operadores a agenda | 1d | 2010-05-07 | 2010-05-07 |  | 3d |
| 90 |  | ABM de usuarios de la agenda | 1d | 2010-05-07 | 2010-05-07 |  | 3d |
| 91 |  | ABM citas de la agenda | 1d | 2010-05-07 | 2010-05-07 |  | 3d |
| 92 | 22.6 | **Módulo mantenimiento BBDD** | 3d | 2010-05-07 | 2010-05-11 |  |  |
| 93 |  | Módulo comprobación de formato de archivo | 1d | 2010-05-07 | 2010-05-07 |  | 2d |
| 94 |  | Módulo actualización de BBDD | 2d | 2010-05-07 | 2010-05-10 |  | 1d |
| 95 | 23 | **(ADM02) Extraccion de estadisticas y listados** | 7d | 2010-05-07 | 2010-05-17 | 143, 149, 153, 194 |  |
| 96 |  | Listados De Administración | 2d | 2010-05-07 | 2010-05-10 |  | 5d |
| 97 | 23.2 | **Listados Comunes** | 5d | 2010-05-07 | 2010-05-13 |  |  |
| 98 |  | Detalle de estado de finalización consulta/acción | 1d | 2010-05-07 | 2010-05-07 |  | 4d |
| 99 |  | Listado de clasificaciones | 1d | 2010-05-07 | 2010-05-07 |  | 4d |
| 100 |  | Listados de incidencias en las comunicaciones | 1d | 2010-05-07 | 2010-05-07 |  | 4d |
| 101 |  | Ratios por usuario | 1d | 2010-05-07 | 2010-05-07 |  | 4d |
| 102 |  | Finales de servicio | 1d | 2010-05-07 | 2010-05-07 |  | 4d |
| 103 | 24 | **(ADM03) Mantenimiento de documentos** | 6d | 2010-05-10 | 2010-05-17 | 149, 167, 111 |  |
| 104 |  | Creación y edición de documentos | 2d | 2010-05-13 | 2010-05-14 | 108, 109, 110 | 1d |
| 105 |  | Borrado de documentos | 1d | 2010-05-10 | 2010-05-10 |  | 5d |
| 106 |  | Clasificación de documentos | 1d | 2010-05-10 | 2010-05-10 |  | 5d |
| 107 |  | Búsqueda de documentos | 2d | 2010-05-10 | 2010-05-11 |  | 4d |
| 108 |  | (ADM04) Mantenimiento de Recursos | 2d | 2010-05-11 | 2010-05-12 | 190 | 1d |
| 109 |  | (ADM05) Mantenimiento de guias de interrogatorio | 2d | 2010-05-11 | 2010-05-12 | 111, 190 | 1d |
| 110 |  | (ADM06) Mantenimiento de Fichas tematicas | 2d | 2010-05-11 | 2010-05-12 | 111, 190 | 1d |
| 111 | 28 | **(ADM07) Mantenimiento de relaciones sobre guias de interrogatorio y fichas tematicas** | 2d | 2010-05-07 | 2010-05-10 | 190 |  |
| 112 |  | Adición de documentos a fichas temáticas | 1d | 2010-05-07 | 2010-05-07 |  | 1d |
| 113 |  | Adición de documentos a guias de interrogatorio | 1d | 2010-05-07 | 2010-05-07 |  | 1d |
| 114 | 29 | **(ADM08) Mantenimiento de encuestas** | 7d | 2010-05-06 | 2010-05-14 |  |  |
| 115 | 29.1 | **Mantenimiento Indice de Encuestas** | 2d | 2010-05-06 | 2010-05-07 |  |  |
| 116 |  | Mantener Ediciones | 1d | 2010-05-06 | 2010-05-06 |  | 1d |
| 117 |  | Cierre de ediciones | 1d | 2010-05-06 | 2010-05-06 |  | 1d |
| 118 |  | Asignación de formulario a encuesta | 1d | 2010-05-06 | 2010-05-06 |  | 6d |
| 119 |  | Asignación de operadores a encuesta | 1d | 2010-05-06 | 2010-05-06 |  | 6d |
| 120 | 29.4 | **Asignación lista de encuestados** | 2d | 2010-05-06 | 2010-05-07 |  |  |
| 121 |  | Alta, baja de encuestados | 1d | 2010-05-06 | 2010-05-06 |  | 1d |
| 122 |  | Asignación automática en base a un archivo de texto | 1d | 2010-05-06 | 2010-05-06 |  | 1d |
| 123 |  | Publicar Encuestas | 1d | 2010-05-06 | 2010-05-06 |  | 6d |
| 124 | 30 | **(ADM09) Mantenimiento de seguimiento de patologias** | 3d | 2010-05-06 | 2010-05-10 |  |  |
| 125 |  | Mantenimiento Indice de campañas de seguimiento | 1d | 2010-05-06 | 2010-05-06 |  | 2d |
| 126 |  | Asignación de formulario a campaña de seguimiento | 0.5h | 2010-05-06 | 2010-05-06 |  | 2.94d |
| 127 |  | Asignación de operadores a campaña de seguimiento | 0.5h | 2010-05-06 | 2010-05-06 |  | 2.94d |
| 128 |  | Asignación de listas de pacientes | 0.5h | 2010-05-06 | 2010-05-06 |  | 2.94d |
| 129 |  | Activación/ Desactivación de campañas | 0.5h | 2010-05-06 | 2010-05-06 |  | 2.94d |
| 130 | 31 | **(ADM10) Creacion de formularios de encuesta y seguimiento** | 2d | 2010-05-07 | 2010-05-10 | 191 |  |
| 131 |  | Mantener Indice de Encuesta | 1d | 2010-05-07 | 2010-05-07 |  | 1d |
| 132 |  | Crear y Editar Encuestas | 1d | 2010-05-07 | 2010-05-07 |  | 1d |
| 133 | 32 | **(ADM11) Mantenimiento de usuarios, perfiles y permisos** | 6d | 2010-05-07 | 2010-05-14 | 195 |  |
| 134 |  | Mantenimiento Opciones Funcionales | 1d | 2010-05-07 | 2010-05-07 |  | 5d |
| 135 | 32.2 | **Mantener Perfiles Trabajo** | 2.5d | 2010-05-07 | 2010-05-11 |  |  |
| 136 |  | Alta, modificación de perfiles | 1d | 2010-05-07 | 2010-05-07 |  | 1.5d |
| 137 |  | ABM de opciones funcionales a perfil | 1d | 2010-05-07 | 2010-05-07 |  | 1.5d |
| 138 |  | Adición de responsabilidades a opciones funcionales | 0.5h | 2010-05-07 | 2010-05-07 |  | 2.44d |
| 139 | 32.3 | **Mantener Usuarios** | 2.5d | 2010-05-07 | 2010-05-11 |  |  |
| 140 |  | Creación/gestion de usuarios | 1d | 2010-05-07 | 2010-05-07 |  | 1.5d |

| ID | WBS | Task | Duration | Start | Finish | Predecessors | Total float |
| --- | --- | --- | --- | --- | --- | --- | --- |
| 141 |  | Asiganción de perfil a usuario | 0.5h | 2010-05-07 | 2010-05-07 |  | 2.44d |
| 142 |  | Asignación de agendas a usuario | 1d | 2010-05-07 | 2010-05-07 |  | 1.5d |
| 143 | 33 | **(ADM12) Listado de acciones proactivas** | 10d | 2010-05-06 | 2010-05-19 |  |  |
| 144 |  | Módulo de elaboraciónde informes de estado de campaña de seguimiento | 2d | 2010-05-06 | 2010-05-07 |  | 8d |
| 145 |  | Módulo de elaboración de informes de estado de encuesta | 2d | 2010-05-06 | 2010-05-07 |  | 8d |
| 146 |  | Módulo de elaboración de informes de ediciones de encuestas | 2d | 2010-05-06 | 2010-05-07 |  | 8d |
| 147 |  | Módulo de elaboración de listados de campañas de seguimiento | 2d | 2010-05-06 | 2010-05-07 |  | 8d |
| 148 |  | Módulo de elaboración de listados de información de encuestas | 2d | 2010-05-06 | 2010-05-07 |  | 8d |
| 149 | 34 | **(ADM13) Listados de documentos** | 3d | 2010-05-06 | 2010-05-10 |  |  |
| 150 |  | Elaboración de listado de configuración | 1d | 2010-05-06 | 2010-05-06 |  | 2d |
| 151 |  | Elaboración de listado de uso | 1d | 2010-05-06 | 2010-05-06 |  | 2d |
| 152 |  | Elaboración de listado de asociaciones | 1d | 2010-05-06 | 2010-05-06 |  | 2d |
| 153 | 35 | **(ADM14) Listado sobre consultas** | 8d | 2010-05-06 | 2010-05-17 |  |  |
| 154 |  | Módulo de obtención de listados de consulta por ciudadano | 1d | 2010-05-06 | 2010-05-06 |  | 7d |
| 155 |  | Módulo de obtención de listados de consultas con cierre principal | 1d | 2010-05-06 | 2010-05-06 |  | 7d |
| 156 |  | Módulo de obtención de listados de consulta con cierre secundario | 1d | 2010-05-06 | 2010-05-06 |  | 7d |
| 157 |  | Módulo de obtención de listados de consulta por motivo de cierre | 1d | 2010-05-06 | 2010-05-06 |  | 7d |
| 158 |  | Módulo de obtención de listado de resumen de consultas por servicio | 1d | 2010-05-06 | 2010-05-06 |  | 7d |
| 159 |  | Módulo de obtención de listado de consultas por área geográfica | 1d | 2010-05-06 | 2010-05-06 |  | 7d |
| 160 |  | Módulo de obtención de listado de consultas por usuario | 1d | 2010-05-06 | 2010-05-06 |  | 7d |
| 161 |  | Módulo de obtención de listado de consultas pendientes | 1d | 2010-05-06 | 2010-05-06 |  | 7d |
| 162 | 36 | **(ADM15) Mantener Asignaciones TSI** | 8d | 2010-06-01 | 2010-06-10 | 79 | 0d |
| 163 | 36.1 | **Módulo de envío de datos a CatSalut** | 8d | 2010-06-01 | 2010-06-10 |  |  |
| 164 |  | Recolección de datos de operaciones TSI pendientes | 1d | 2010-06-01 | 2010-06-01 |  | 7d |
| 165 |  | Migración de los datos a archivo TXT | 2d | 2010-06-01 | 2010-06-02 |  | 6d |
| 166 |  | Interface de comunicación con CatSalut | 5d | 2010-06-01 | 2010-06-07 |  | 3d |
| 167 | 37 | **(ADM16) Asignar documentos a acciones** | 2d | 2010-05-06 | 2010-05-07 |  |  |
| 168 |  | Creación/eliminación de asociaciones | 1d | 2010-05-06 | 2010-05-06 |  | 1d |
| 169 |  | Caducidad de asociaciones | 1d | 2010-05-06 | 2010-05-06 |  | 1d |
| 170 | 38 | **(INT01) Direcciones de farmacias, CAP y otra informacion breve** | 2d | 2010-06-01 | 2010-06-02 | 11, 196, 61, 79 | -4d |
| 171 |  | Trabajo con listas de resultados | 2d | 2010-06-01 | 2010-06-02 |  | -4d |
| 172 | 39 | **(SIS01) Trazabilidad y registro de uso** | 13d | 2010-05-06 | 2010-05-24 |  |  |
| 173 |  | Control Acceso a Consultas | 2d | 2010-05-28 | 2010-05-31 | 23 | -5d |
| 174 |  | Control Acceso a Encuestas | 2d | 2010-05-13 | 2010-05-14 | 52 | 6d |
| 175 |  | Control General Acceso al Sistema | 2d | 2010-05-17 | 2010-05-18 | 133 | 4d |
| 176 |  | Control Acceso a Campañas de Seguimiento | 2d | 2010-05-26 | 2010-05-28 | 46 | -3.5d |
| 177 |  | Control Acceso a Documentos | 2d | 2010-05-19 | 2010-05-20 | 61 | 2d |
| 178 |  | Control Acceso a Recursos Internos | 2d | 2010-05-06 | 2010-05-07 |  | 11d |
| 179 |  | Historial de Consultas | 1d | 2010-05-06 | 2010-05-06 |  | 12d |
| 180 | 40 | **(ISC01) Transferir info, comunicacion a STARS** | 3d | 2010-05-06 | 2010-05-10 |  | 23d |
| 181 |  | Recibir información del sistema de comunicaciones | 3d | 2010-05-06 | 2010-05-10 |  | 23d |
| 182 | 41 | **(ISC02) Iniciar llamada desde STARS** | 3d | 2010-05-06 | 2010-05-10 |  | 23d |
| 183 |  | Lanzamiento de petición de comunicación | 3d | 2010-05-06 | 2010-05-10 |  | 23d |
| 184 | 42 | **(ISC03) Informacion encuesta** | 1d | 2010-05-06 | 2010-05-06 |  | 25d |
| 185 |  | Activación actividad de encuesta | 1d | 2010-05-06 | 2010-05-06 |  | 25d |
| 187 |  | ABM Consultas | 1d | 2010-05-06 | 2010-05-06 |  | 25d |
| 188 |  | ABM Usuarios | 1d | 2010-05-06 | 2010-05-06 |  | 22d |
| 189 |  | Proteccion de Acceso | 3d | 2010-05-07 | 2010-05-11 | 188 | 22d |
| 190 |  | ABM Fichas / Guias / Recursos | 3d | 2010-05-06 | 2010-05-10 |  | -1d |
| 191 |  | ABM Cuestionarios | 1d | 2010-05-06 | 2010-05-06 |  | 1d |
| 192 |  | Interfaz General | 10d | 2010-05-06 | 2010-05-19 |  | 16d |
| 193 |  | Interfaz Para Usuario Avanzado | 5d | 2010-05-06 | 2010-05-12 |  | -4d |
| 194 |  | Interfaz de Listados para ADM02 | 5d | 2010-05-06 | 2010-05-12 |  | -4d |
| 195 |  | Interfaz Mantenimiento Usuarios y Perfiles | 5d | 2010-05-06 | 2010-05-12 |  | -4d |
| 196 |  | Interfaz Direcciones INT01 | 5d | 2010-05-06 | 2010-05-12 |  | 9d |
| 197 |  | ABM Enfermedades / Centros Salud | 2d | 2010-05-06 | 2010-05-07 |  | 24d |
| 198 |  | Listados Iniciales | 1d | 2010-05-06 | 2010-05-06 |  | 25d |
| 199 |  | Listado de Usuarios y Perfiles | 1d | 2010-05-06 | 2010-05-06 |  | 1d |
| 200 |  | Interface con sistema de comunicaciones (ISC01, ISC02, ISC03) | 5d | 2010-05-06 | 2010-05-12 |  | 21d |
| 202 |  | Arquitectura General / Configuracion de Ambientes | 15d | 2010-05-06 | 2010-05-26 |  | 11d |
| 203 | 58 | **Tareas IT Sobre Nuestra Empresa** | 19d | 2010-05-06 | 2010-06-01 |  |  |
| 204 |  | Compra Equipos Necesarios | 3d | 2010-05-06 | 2010-05-10 |  | 16d |
| 205 | 58.2 | **Infraestructura** | 8d | 2010-05-06 | 2010-05-17 |  |  |
| 206 |  | Preparacion de ambiente en servidores | 1d | 2010-05-06 | 2010-05-06 |  | 7d |
| 207 |  | Instalacion y configuracion de Servidor Dev | 3d | 2010-05-06 | 2010-05-10 |  | 5d |
| 208 |  | Instalacion y Configuracion de Servidor Usos Multiples | 5d | 2010-05-06 | 2010-05-12 |  | 3d |
| 209 | 58.2.4 | **Redes** | 3d | 2010-05-06 | 2010-05-10 |  | 5d |
| 210 |  | Configuracion del FW | 3d | 2010-05-06 | 2010-05-10 |  | 5d |
| 211 |  | Instalacion de las pcs de usuario | 5d | 2010-05-06 | 2010-05-12 |  | 14d |

## Version 2 (saved 2010-08-29, file Casos Uso Lole -  SOLO DURACION DE TAREAS 2007.mpp)

Note of the change: Version 2007, tener cuidado con las tareas generes ya que al no abher predecesores la suma no es el total del proyecto, sino que hay que sumar las tareitas de adentro

Last finish 2010-06-10 → 2010-05-26 (-15d).

Changed:

| ID | Task | Start | Finish | Duration | Total float | Predecessors |
| --- | --- | --- | --- | --- | --- | --- |
| 3 | **(GEN01) Identificacion y Autenticacion** |  | 2010-05-12 → 2010-05-11 (-1d) | 4d → 3d | none → 5d |  |
| 6 | **(GEN02) Gestion General de Registros** |  | 2010-05-13 → 2010-05-10 (-3d) | 6d → 3d | none → 12d |  |
| 11 | **(USR01) Determinacion del servicio de atencion** |  | 2010-05-19 → 2010-05-14 (-5d) | 5d → 2d | none → 4d |  |
| 16 | **(USR02) Agenda** | 2010-05-13 → 2010-05-12 (-1d) | 2010-05-21 → 2010-05-14 (-7d) | 7d → 3d | none → 5d |  |
| 17 | Selección de una agenda | 2010-05-14 → 2010-05-13 (-1d) | 2010-05-14 → 2010-05-13 (-1d) |  | 5.94d → 17.94d |  |
| 18 | ABM citas sobre la agenda | 2010-05-13 → 2010-05-12 (-1d) | 2010-05-13 → 2010-05-12 (-1d) |  | 5.94d → 17.94d |  |
| 19 | Interfaz de la Agenda | 2010-05-13 → 2010-05-12 (-1d) | 2010-05-14 → 2010-05-13 (-1d) |  | 5d → 17d |  |
| 20 | Integracion con Stars - Llamada desde Agenda | 2010-05-13 → 2010-05-12 (-1d) | 2010-05-17 → 2010-05-14 (-3d) |  | 4d → 16d |  |
| 21 | Asignar pacientes a cita | 2010-05-13 → 2010-05-12 (-1d) | 2010-05-13 → 2010-05-12 (-1d) |  | 6.94d → 18.94d |  |
| 22 | (USR03) Rellamada | 2010-05-11 → 2010-05-10 (-1d) | 2010-05-11 → 2010-05-10 (-1d) |  | 22d → 12d |  |
| 23 | **(USR04) Consulta** | 2010-05-20 → 2010-05-17 (-3d) | 2010-05-27 → 2010-05-18 (-9d) | 6d → 2d | none → 4d |  |
| 24 | **Tratar Consulta** | 2010-05-20 → 2010-05-17 (-3d) | 2010-05-20 → 2010-05-17 (-3d) | 1d → 0.06d | none → 5.94d |  |
| 25 | Ajornar Consulta | 2010-05-20 → 2010-05-17 (-3d) | 2010-05-20 → 2010-05-17 (-3d) |  | 0.94d → 2.94d |  |
| 26 | Transferir consulta | 2010-05-20 → 2010-05-17 (-3d) | 2010-05-20 → 2010-05-17 (-3d) |  | 0.94d → 2.94d |  |
| 27 | Modulo Envio de Correo | 2010-05-20 → 2010-05-17 (-3d) | 2010-05-21 → 2010-05-18 (-3d) |  | 4d → 1d |  |
| 28 | Modulo Envio SMS | 2010-05-20 → 2010-05-17 (-3d) | 2010-05-21 → 2010-05-18 (-3d) |  | 4d → 1d |  |
| 29 | Inclusion en Campaña de Seguimiento | 2010-05-20 → 2010-05-17 (-3d) | 2010-05-20 → 2010-05-17 (-3d) |  | 5d → 2d |  |
| 30 | (USR05) Consejo Salud | 2010-05-28 → 2010-05-10 (-18d) | 2010-05-28 → 2010-05-10 (-18d) |  | 9d → 12d | 61, 67, 23 → 61, 67 |
| 33 | **(USR07) Programacion de cita previa** | 2010-05-07 → 2010-05-10 (+3d) | 2010-05-07 → 2010-05-10 (+3d) |  | none → 12d |  |
| 34 | Realizar Citación (Interface con Sistema de citación AP) | 2010-05-07 → 2010-05-10 (+3d) | 2010-05-07 → 2010-05-10 (+3d) |  | 0d → 23d |  |
| 35 | **(USR08) Gestiones sobre la TSI** | 2010-05-28 → 2010-05-19 (-9d) | 2010-05-31 → 2010-05-19 (-12d) | 2d → 0.06d | none → 5.94d |  |
| 36 | Verificacion Documentacion Necesaria | 2010-05-28 → 2010-05-19 (-9d) | 2010-05-28 → 2010-05-19 (-9d) |  | 1.94d → 16.94d |  |
| 37 | Enviar Gestion (Interface con sistema RCA) | 2010-05-28 → 2010-05-19 (-9d) | 2010-05-28 → 2010-05-19 (-9d) |  | 1.94d → 16.94d |  |
| 38 | Cierre automatico de la consulta por paso de tiempo | 2010-05-28 → 2010-05-19 (-9d) | 2010-05-28 → 2010-05-19 (-9d) |  | 1.94d → 16.94d |  |
| 39 | Guardar LOG gestion TSI????? | 2010-05-28 → 2010-05-19 (-9d) | 2010-05-28 → 2010-05-19 (-9d) |  | 1.94d → 16.94d |  |
| 40 | **(USR09) Servicio de traduccion** | 2010-05-28 → 2010-05-19 (-9d) | 2010-06-03 → 2010-05-20 (-14d) | 5d → 2d | none → 4d |  |
| 41 | Contactar Servicio Externo de Traduccion | 2010-05-28 → 2010-05-19 (-9d) | 2010-05-28 → 2010-05-19 (-9d) |  | 4d → 16d |  |
| 42 | Enlace Comunicacion Multiconferencia | 2010-05-28 → 2010-05-19 (-9d) | 2010-05-31 → 2010-05-20 (-11d) |  | 3d → 15d |  |
| 43 | Modulo monitorización de servicio | 2010-05-28 → 2010-05-19 (-9d) | 2010-05-31 → 2010-05-20 (-11d) |  | 3d → 15d |  |
| 44 | **(USR10) Informacion Sanitaria General** | 2010-05-28 → 2010-05-20 (-8d) | 2010-05-28 → 2010-05-20 (-8d) |  | none → 4d |  |
| 45 | Guardar Informacion Ciudadano | 2010-05-28 → 2010-05-20 (-8d) | 2010-05-28 → 2010-05-20 (-8d) |  | 0d → 15d |  |
| 46 | **(USR11) Seguimiento de Patologias** | 2010-05-24 → 2010-05-17 (-7d) | 2010-05-26 → 2010-05-17 (-9d) | 2.5d → 1d | none → 5d |  |
| 47 | Buscar Campañas Abiertas | 2010-05-24 → 2010-05-17 (-7d) | 2010-05-24 → 2010-05-17 (-7d) |  | 2d → 16.5d |  |
| 48 | **Gestionar Seguimiento** | 2010-05-24 → 2010-05-17 (-7d) | 2010-05-24 → 2010-05-17 (-7d) | 1d → 0.06d | none → 5.94d |  |
| 49 | Visualizar Historial Pacientes | 2010-05-24 → 2010-05-17 (-7d) | 2010-05-24 → 2010-05-17 (-7d) |  | 0.94d → 16.94d |  |
| 50 | Llamada al Paciente | 2010-05-24 → 2010-05-17 (-7d) | 2010-05-24 → 2010-05-17 (-7d) |  | 0.94d → 16.94d |  |
| 51 | Desligar paciente de campaña | 2010-05-24 → 2010-05-17 (-7d) | 2010-05-24 → 2010-05-17 (-7d) |  | 1.5d → 16d |  |
| 52 | **(USR12) Encuestas** |  | 2010-05-12 → 2010-05-10 (-2d) | 5d → 3d | none → 10d |  |
| 56 | **(USR13) Buscar Consultas** |  | 2010-05-10 → 2010-05-07 (-3d) | 2d → 1d | 0d → 12d |  |
| 57 | **Operativo de Busqueda** |  | 2010-05-10 → 2010-05-07 (-3d) | 2d → 1d | none → 12d |  |
| 61 | **(USR14) Hacer Uso de Documentos** |  | 2010-05-18 → 2010-05-07 (-11d) | 9d → 2d | none → 9d |  |
| 67 | **(USR15) Cerrar consulta y dar respuesta al ciudadano** |  | 2010-05-07 → 2010-05-06 (-1d) | 2d → 1d | none → 10d |  |
| 71 | **(USR16) Visualizar Consulta** |  | 2010-05-07 → 2010-05-06 (-1d) | 2d → 1d | none → 8d |  |
| 74 | **(USR17) Crear/Transferir Consulta** |  | 2010-05-11 → 2010-05-07 (-4d) | 4d → 2d | none → 9d |  |
| 79 | **(ADM01) Mantenimiento del Entorno, clasif y prioridades** | 2010-05-07 → 2010-05-13 (+6d) | 2010-05-31 → 2010-05-17 (-14d) | 17d → 3d | none → 2d |  |
| 80 | Módulo de edición de parametros grales de la aplicación | 2010-05-07 → 2010-05-13 (+6d) | 2010-05-11 → 2010-05-17 (+6d) |  | 14d → 13d |  |
| 81 | Módulo edición listas de clasificaciones (Códigos internos) | 2010-05-07 → 2010-05-13 (+6d) | 2010-05-11 → 2010-05-17 (+6d) |  | 14d → 13d |  |
| 82 | **Módulo mantenimiento de la lista de espera** | 2010-05-07 → 2010-05-13 (+6d) | 2010-05-10 → 2010-05-13 (+3d) | 2d → 1d | none → 4d |  |
| 83 | ABM de la lista de espera | 2010-05-07 → 2010-05-13 (+6d) | 2010-05-07 → 2010-05-13 (+6d) |  | 1d → 15d |  |
| 84 | Módulo de gestión de prioridades sobre la lista de espera | 2010-05-07 → 2010-05-13 (+6d) | 2010-05-07 → 2010-05-13 (+6d) |  | 1d → 15d |  |
| 85 | **Módulo mantenimiento de lineas de servicio** | 2010-05-07 → 2010-05-13 (+6d) | 2010-05-10 → 2010-05-13 (+3d) | 2d → 1d | none → 4d |  |
| 86 | ABM lineas de servicio | 2010-05-07 → 2010-05-13 (+6d) | 2010-05-07 → 2010-05-13 (+6d) |  | 1d → 15d |  |
| 87 | ABM servicios para una linea seleccionada | 2010-05-07 → 2010-05-13 (+6d) | 2010-05-07 → 2010-05-13 (+6d) |  | 1d → 15d |  |
| 88 | **Módulo mantenimiento agendas** | 2010-05-07 → 2010-05-13 (+6d) | 2010-05-12 → 2010-05-13 (+1d) | 4d → 1d | none → 4d |  |
| 89 | Asignar operadores a agenda | 2010-05-07 → 2010-05-13 (+6d) | 2010-05-07 → 2010-05-13 (+6d) |  | 3d → 15d |  |
| 90 | ABM de usuarios de la agenda | 2010-05-07 → 2010-05-13 (+6d) | 2010-05-07 → 2010-05-13 (+6d) |  | 3d → 15d |  |
| 91 | ABM citas de la agenda | 2010-05-07 → 2010-05-13 (+6d) | 2010-05-07 → 2010-05-13 (+6d) |  | 3d → 15d |  |
| 92 | **Módulo mantenimiento BBDD** | 2010-05-07 → 2010-05-13 (+6d) | 2010-05-11 → 2010-05-14 (+3d) | 3d → 2d | none → 3d |  |
| 93 | Módulo comprobación de formato de archivo | 2010-05-07 → 2010-05-13 (+6d) | 2010-05-07 → 2010-05-13 (+6d) |  | 2d → 15d |  |
| 94 | Módulo actualización de BBDD | 2010-05-07 → 2010-05-13 (+6d) | 2010-05-10 → 2010-05-14 (+4d) |  | 1d → 14d |  |
| 95 | **(ADM02) Extraccion de estadisticas y listados** | 2010-05-07 → 2010-05-13 (+6d) | 2010-05-17 → 2010-05-14 (-3d) | 7d → 2d | none → 8d |  |
| 96 | Listados De Administración | 2010-05-07 → 2010-05-13 (+6d) | 2010-05-10 → 2010-05-14 (+4d) |  | 5d → 19d |  |
| 97 | **Listados Comunes** | 2010-05-07 → 2010-05-13 (+6d) |  | 5d → 1d | none → 9d |  |
| 98 | Detalle de estado de finalización consulta/acción | 2010-05-07 → 2010-05-13 (+6d) | 2010-05-07 → 2010-05-13 (+6d) |  | 4d → 20d |  |
| 99 | Listado de clasificaciones | 2010-05-07 → 2010-05-13 (+6d) | 2010-05-07 → 2010-05-13 (+6d) |  | 4d → 20d |  |
| 100 | Listados de incidencias en las comunicaciones | 2010-05-07 → 2010-05-13 (+6d) | 2010-05-07 → 2010-05-13 (+6d) |  | 4d → 20d |  |
| 101 | Ratios por usuario | 2010-05-07 → 2010-05-13 (+6d) | 2010-05-07 → 2010-05-13 (+6d) |  | 4d → 20d |  |
| 102 | Finales de servicio | 2010-05-07 → 2010-05-13 (+6d) | 2010-05-07 → 2010-05-13 (+6d) |  | 4d → 20d |  |
| 103 | **(ADM03) Mantenimiento de documentos** | 2010-05-10 → 2010-05-12 (+2d) |  | 6d → 4d | none → 7d |  |
| 104 | Creación y edición de documentos | 2010-05-13 → 2010-05-14 (+1d) | 2010-05-14 → 2010-05-17 (+3d) |  | 1d → 18d |  |

| ID | Task | Start | Finish | Duration | Total float |
| --- | --- | --- | --- | --- | --- |
| 105 | Borrado de documentos | 2010-05-10 → 2010-05-12 (+2d) | 2010-05-10 → 2010-05-12 (+2d) |  | 5d → 21d |
| 106 | Clasificación de documentos | 2010-05-10 → 2010-05-12 (+2d) | 2010-05-10 → 2010-05-12 (+2d) |  | 5d → 21d |
| 107 | Búsqueda de documentos | 2010-05-10 → 2010-05-12 (+2d) | 2010-05-11 → 2010-05-13 (+2d) |  | 4d → 20d |
| 109 | (ADM05) Mantenimiento de guias de interrogatorio | 2010-05-11 → 2010-05-12 (+1d) | 2010-05-12 → 2010-05-13 (+1d) |  | 1d → 7d |
| 110 | (ADM06) Mantenimiento de Fichas tematicas | 2010-05-11 → 2010-05-12 (+1d) | 2010-05-12 → 2010-05-13 (+1d) |  | 1d → 7d |
| 111 | **(ADM07) Mantenimiento de relaciones sobre guias de interrogatorio y fichas tematicas** | 2010-05-07 → 2010-05-11 (+4d) | 2010-05-10 → 2010-05-11 (+1d) | 2d → 1d | none → 7d |
| 112 | Adición de documentos a fichas temáticas | 2010-05-07 → 2010-05-11 (+4d) | 2010-05-07 → 2010-05-11 (+4d) |  | 1d → 18d |
| 113 | Adición de documentos a guias de interrogatorio | 2010-05-07 → 2010-05-11 (+4d) | 2010-05-07 → 2010-05-11 (+4d) |  | 1d → 18d |
| 114 | **(ADM08) Mantenimiento de encuestas** |  | 2010-05-14 → 2010-05-06 (-8d) | 7d → 1d | none → 14d |
| 115 | **Mantenimiento Indice de Encuestas** |  | 2010-05-07 → 2010-05-06 (-1d) | 2d → 1d | none → 14d |
| 120 | **Asignación lista de encuestados** |  | 2010-05-07 → 2010-05-06 (-1d) | 2d → 1d | none → 14d |
| 124 | **(ADM09) Mantenimiento de seguimiento de patologias** |  | 2010-05-10 → 2010-05-06 (-4d) | 3d → 1d | none → 14d |
| 130 | **(ADM10) Creacion de formularios de encuesta y seguimiento** |  | 2010-05-10 → 2010-05-07 (-3d) | 2d → 1d | none → 13d |
| 133 | **(ADM11) Mantenimiento de usuarios, perfiles y permisos** | 2010-05-07 → 2010-05-13 (+6d) | 2010-05-14 → 2010-05-13 (-1d) | 6d → 1d | none → 7d |
| 134 | Mantenimiento Opciones Funcionales | 2010-05-07 → 2010-05-13 (+6d) | 2010-05-07 → 2010-05-13 (+6d) |  | 5d → 18d |
| 135 | **Mantener Perfiles Trabajo** | 2010-05-07 → 2010-05-13 (+6d) | 2010-05-11 → 2010-05-13 (+2d) | 2.5d → 1d | none → 7d |
| 136 | Alta, modificación de perfiles | 2010-05-07 → 2010-05-13 (+6d) | 2010-05-07 → 2010-05-13 (+6d) |  | 1.5d → 18d |
| 137 | ABM de opciones funcionales a perfil | 2010-05-07 → 2010-05-13 (+6d) | 2010-05-07 → 2010-05-13 (+6d) |  | 1.5d → 18d |
| 138 | Adición de responsabilidades a opciones funcionales | 2010-05-07 → 2010-05-13 (+6d) | 2010-05-07 → 2010-05-13 (+6d) |  | 2.44d → 18.94d |
| 139 | **Mantener Usuarios** | 2010-05-07 → 2010-05-13 (+6d) | 2010-05-11 → 2010-05-13 (+2d) | 2.5d → 1d | none → 7d |
| 140 | Creación/gestion de usuarios | 2010-05-07 → 2010-05-13 (+6d) | 2010-05-07 → 2010-05-13 (+6d) |  | 1.5d → 18d |
| 141 | Asiganción de perfil a usuario | 2010-05-07 → 2010-05-13 (+6d) | 2010-05-07 → 2010-05-13 (+6d) |  | 2.44d → 18.94d |
| 142 | Asignación de agendas a usuario | 2010-05-07 → 2010-05-13 (+6d) | 2010-05-07 → 2010-05-13 (+6d) |  | 1.5d → 18d |
| 143 | **(ADM12) Listado de acciones proactivas** |  | 2010-05-19 → 2010-05-07 (-12d) | 10d → 2d | none → 11d |
| 149 | **(ADM13) Listados de documentos** |  | 2010-05-10 → 2010-05-06 (-4d) | 3d → 1d | none → 12d |
| 153 | **(ADM14) Listado sobre consultas** |  | 2010-05-17 → 2010-05-06 (-11d) | 8d → 1d | none → 12d |
| 162 | **(ADM15) Mantener Asignaciones TSI** | 2010-06-01 → 2010-05-18 (-14d) | 2010-06-10 → 2010-05-24 (-17d) | 8d → 5d | 0d → 2d |
| 163 | **Módulo de envío de datos a CatSalut** | 2010-06-01 → 2010-05-18 (-14d) | 2010-06-10 → 2010-05-24 (-17d) | 8d → 5d | none → 2d |
| 164 | Recolección de datos de operaciones TSI pendientes | 2010-06-01 → 2010-05-18 (-14d) | 2010-06-01 → 2010-05-18 (-14d) |  | 7d → 17d |
| 165 | Migración de los datos a archivo TXT | 2010-06-01 → 2010-05-18 (-14d) | 2010-06-02 → 2010-05-19 (-14d) |  | 6d → 16d |
| 166 | Interface de comunicación con CatSalut | 2010-06-01 → 2010-05-18 (-14d) | 2010-06-07 → 2010-05-24 (-14d) |  | 3d → 13d |
| 167 | **(ADM16) Asignar documentos a acciones** |  | 2010-05-07 → 2010-05-06 (-1d) | 2d → 1d | none → 12d |
| 170 | **(INT01) Direcciones de farmacias, CAP y otra informacion breve** | 2010-06-01 → 2010-05-18 (-14d) | 2010-06-02 → 2010-05-19 (-14d) |  | -4d → 4d |
| 171 | Trabajo con listas de resultados | 2010-06-01 → 2010-05-18 (-14d) | 2010-06-02 → 2010-05-19 (-14d) |  | -4d → 15d |
| 172 | **(SIS01) Trazabilidad y registro de uso** |  | 2010-05-24 → 2010-05-20 (-4d) | 13d → 11d | none → 4d |
| 173 | Control Acceso a Consultas | 2010-05-28 → 2010-05-19 (-9d) | 2010-05-31 → 2010-05-20 (-11d) |  | -5d → 15d |
| 174 | Control Acceso a Encuestas | 2010-05-13 → 2010-05-11 (-2d) | 2010-05-14 → 2010-05-12 (-2d) |  | 6d → 21d |
| 175 | Control General Acceso al Sistema | 2010-05-17 → 2010-05-14 (-3d) | 2010-05-18 → 2010-05-17 (-1d) |  | 4d → 18d |
| 176 | Control Acceso a Campañas de Seguimiento | 2010-05-26 → 2010-05-18 (-8d) | 2010-05-28 → 2010-05-19 (-9d) |  | -3.5d → 16d |
| 177 | Control Acceso a Documentos | 2010-05-19 → 2010-05-10 (-9d) | 2010-05-20 → 2010-05-11 (-9d) |  | 2d → 22d |
| 201 | **Tareas IT Sobre Nuestra Empresa** |  | 2010-06-01 → 2010-05-12 (-20d) | 19d → 5d | none → 10d |
| 203 | **Infraestructura** |  | 2010-05-17 → 2010-05-12 (-5d) | 8d → 5d | none → 10d |

## Version 3 (saved 2010-08-29, file Casos Uso Lole Final.mpp)

Note of the change: Casos de uso con tiempo, version lole

Last finish 2010-05-26 → 2010-06-28 (+33d).

Added:

| ID | Task | Duration | Start | Finish | Predecessors |
| --- | --- | --- | --- | --- | --- |
| 199 | Arquitectura General / Configuracion Ambientes | 15d | 2010-05-13 | 2010-06-02 | 200 |
| 203 | Preparacion de Ambientes en servidores | 1d | 2010-05-06 | 2010-05-06 |  |
| 204 | Instalacion y Configuracion de Servidor DEV | 3d | 2010-05-06 | 2010-05-10 |  |
| 205 | Instalacion y Configuracion de Servidores de Usos Multiples | 5d | 2010-05-06 | 2010-05-12 |  |
| 208 | Instalacion de pcs nuevos usuarios | 5d | 2010-05-06 | 2010-05-12 |  |

Removed: 197 Listados Iniciales; 200 Arquitectura General / Configuracion de Ambientes; 204 Preparacion de ambiente en servidores; 205 Instalacion y configuracion de Servidor Dev; 206 Instalacion y Configuracion de Servidor Usos Multiples; 209 Instalacion de las pcs de usuario

Changed:

| ID | Task | Start | Finish | Duration | Total float | Predecessors | Other |
| --- | --- | --- | --- | --- | --- | --- | --- |
| 1 | Integracion con el Sistema STARS (Lectura Datos) | 2010-05-06 → 2010-06-03 (+28d) | 2010-05-12 → 2010-06-09 (+28d) |  | 1d → 0d | none → 199 |  |
| 2 | Modulo Seguridad que Oculta Info Llamado | 2010-05-06 → 2010-06-10 (+35d) | 2010-05-10 → 2010-06-14 (+35d) |  | 23d → 4d | none → 1 |  |
| 3 | **(GEN01) Identificacion y Autenticacion** | 2010-05-07 → 2010-06-10 (+34d) | 2010-05-11 → 2010-06-14 (+34d) |  | 5d → 4d | 197 → 1 |  |
| 4 | Autenticacion | 2010-05-07 → 2010-06-10 (+34d) | 2010-05-07 → 2010-06-10 (+34d) |  | 4d → 6d |  |  |
| 5 | Interfaz Inicio Sesion | 2010-05-07 → 2010-06-10 (+34d) | 2010-05-11 → 2010-06-14 (+34d) |  | 2d → 4d |  |  |
| 6 | **(GEN02) Gestion General de Registros** | 2010-05-06 → 2010-06-10 (+35d) | 2010-05-10 → 2010-06-14 (+35d) |  | 12d → 10d | none → 1 |  |
| 7 | ABM Registro | 2010-05-06 → 2010-06-10 (+35d) | 2010-05-06 → 2010-06-10 (+35d) |  | 25d → 12d |  |  |
| 8 | Buscar registro | 2010-05-06 → 2010-06-10 (+35d) | 2010-05-06 → 2010-06-10 (+35d) |  | 25d → 12d |  |  |
| 9 | Copiar registro | 2010-05-06 → 2010-06-10 (+35d) | 2010-05-06 → 2010-06-10 (+35d) |  | 25d → 12d |  |  |
| 10 | Interfaz ABM Registro | 2010-05-06 → 2010-06-10 (+35d) | 2010-05-10 → 2010-06-14 (+35d) |  | 23d → 10d |  |  |
| 11 | **(USR01) Determinacion del servicio de atencion** | 2010-05-13 → 2010-06-16 (+34d) | 2010-05-14 → 2010-06-17 (+34d) |  | 4d → 0d | 1, 3 → 74, 31 |  |
| 12 | Capturar la Comunicación???? | 2010-05-13 → 2010-06-16 (+34d) | 2010-05-14 → 2010-06-17 (+34d) |  | 1d → 0d |  |  |
| 13 | Determinar el tipod e servicio | 2010-05-13 → 2010-06-16 (+34d) | 2010-05-13 → 2010-06-16 (+34d) |  | 2d → 1d |  | was named Determinar el tipo de servicio |
| 14 | Lista de Espera | 2010-05-13 → 2010-06-16 (+34d) | 2010-05-13 → 2010-06-16 (+34d) |  | 2d → 1d |  |  |
| 15 | Determinar conjunto de operadores adecuados al tipo de solicitud | 2010-05-13 → 2010-06-16 (+34d) | 2010-05-13 → 2010-06-16 (+34d) |  | 2d → 1d |  |  |
| 16 | **(USR02) Agenda** | 2010-05-12 → 2010-06-15 (+34d) | 2010-05-14 → 2010-06-17 (+34d) |  | 5d → 4d |  |  |
| 17 | Selección de una agenda | 2010-05-13 → 2010-06-15 (+33d) | 2010-05-13 → 2010-06-15 (+33d) | 0.5h → 0.5d | 17.94d → 6.5d | 18 → none |  |
| 18 | ABM citas sobre la agenda | 2010-05-12 → 2010-06-15 (+34d) | 2010-05-12 → 2010-06-15 (+34d) |  | 17.94d → 6d |  |  |
| 19 | Interfaz de la Agenda | 2010-05-12 → 2010-06-15 (+34d) | 2010-05-13 → 2010-06-16 (+34d) |  | 17d → 5d |  |  |
| 20 | Integracion con Stars - Llamada desde Agenda | 2010-05-12 → 2010-06-15 (+34d) | 2010-05-14 → 2010-06-17 (+34d) |  | 16d → 4d |  |  |
| 21 | Asignar pacientes a cita | 2010-05-12 → 2010-06-15 (+34d) | 2010-05-12 → 2010-06-15 (+34d) | 0.5h → 0.5d | 18.94d → 6.5d |  |  |
| 22 | (USR03) Rellamada | 2010-05-10 → 2010-06-16 (+37d) | 2010-05-10 → 2010-06-16 (+37d) |  | 12d → 8d |  |  |
| 23 | **(USR04) Consulta** | 2010-05-17 → 2010-06-10 (+24d) | 2010-05-18 → 2010-06-11 (+24d) |  | 4d → 0d | 11, 61, 67, 31, 74, 71 → 1 |  |
| 24 | **Tratar Consulta** | 2010-05-17 → 2010-06-10 (+24d) | 2010-05-17 → 2010-06-10 (+24d) | 0.06d → 0.5d | 5.94d → 1.5d | 61, 67 → none |  |
| 25 | Ajornar Consulta | 2010-05-17 → 2010-06-10 (+24d) | 2010-05-17 → 2010-06-10 (+24d) | 0.5h → 0.5d | 2.94d → 1.5d |  |  |
| 26 | Transferir consulta | 2010-05-17 → 2010-06-10 (+24d) | 2010-05-17 → 2010-06-10 (+24d) | 0.5h → 0.5d | 2.94d → 1.5d |  |  |
| 27 | Modulo Envio de Correo | 2010-05-17 → 2010-06-10 (+24d) | 2010-05-18 → 2010-06-11 (+24d) |  | 1d → 0d |  |  |
| 28 | Modulo Envio SMS | 2010-05-17 → 2010-06-10 (+24d) | 2010-05-18 → 2010-06-11 (+24d) |  | 1d → 0d |  |  |
| 29 | Inclusion en Campaña de Seguimiento | 2010-05-17 → 2010-06-10 (+24d) | 2010-05-17 → 2010-06-10 (+24d) |  | 2d → 1d |  |  |
| 30 | (USR05) Consejo Salud | 2010-05-10 → 2010-06-16 (+37d) | 2010-05-10 → 2010-06-16 (+37d) |  | 12d → 8d |  |  |
| 31 | **(USR06) Gestionar Consulta pendiente** | 2010-05-06 → 2010-06-14 (+39d) | 2010-05-06 → 2010-06-14 (+39d) |  | 10d → 1d | none → 23 |  |
| 32 | Priorizacion de la Lista de Consultas | 2010-05-06 → 2010-06-14 (+39d) | 2010-05-06 → 2010-06-14 (+39d) |  | 7d → 1d |  |  |
| 33 | **(USR07) Programacion de cita previa** | 2010-05-10 → 2010-06-16 (+37d) | 2010-05-10 → 2010-06-16 (+37d) |  | 12d → 8d |  |  |
| 34 | Realizar Citación (Interface con Sistema de citación AP) | 2010-05-10 → 2010-06-16 (+37d) | 2010-05-10 → 2010-06-16 (+37d) |  | 23d → 8d |  |  |
| 35 | **(USR08) Gestiones sobre la TSI** | 2010-05-19 → 2010-06-16 (+28d) | 2010-05-19 → 2010-06-16 (+28d) | 0.06d → 0.5d | 5.94d → 3.5d | 31, 74, 67, 23 → 74, 67, 23, 1 |  |
| 36 | Verificacion Documentacion Necesaria | 2010-05-19 → 2010-06-16 (+28d) | 2010-05-19 → 2010-06-16 (+28d) | 0.5h → 0.5d | 16.94d → 3.5d |  |  |
| 37 | Enviar Gestion (Interface con sistema RCA) | 2010-05-19 → 2010-06-16 (+28d) | 2010-05-19 → 2010-06-16 (+28d) | 0.5h → 0.5d | 16.94d → 3.5d |  |  |
| 38 | Cierre automatico de la consulta por paso de tiempo | 2010-05-19 → 2010-06-16 (+28d) | 2010-05-19 → 2010-06-16 (+28d) | 0.5h → 0.5d | 16.94d → 3.5d |  |  |
| 39 | Guardar LOG gestion TSI????? | 2010-05-19 → 2010-06-16 (+28d) | 2010-05-19 → 2010-06-16 (+28d) | 0.5h → 0.5d | 16.94d → 3.5d |  |  |
| 40 | **(USR09) Servicio de traduccion** | 2010-05-19 → 2010-06-15 (+27d) | 2010-05-20 → 2010-06-16 (+27d) |  | 4d → 8d | 23, 67 → 67 |  |
| 41 | Contactar Servicio Externo de Traduccion | 2010-05-19 → 2010-06-15 (+27d) | 2010-05-19 → 2010-06-15 (+27d) |  | 16d → 9d |  |  |
| 42 | Enlace Comunicacion Multiconferencia | 2010-05-19 → 2010-06-15 (+27d) | 2010-05-20 → 2010-06-16 (+27d) |  | 15d → 8d |  |  |
| 43 | Modulo monitorización de servicio | 2010-05-19 → 2010-06-15 (+27d) | 2010-05-20 → 2010-06-16 (+27d) |  | 15d → 8d |  |  |
| 44 | **(USR10) Informacion Sanitaria General** | 2010-05-20 → 2010-06-22 (+33d) | 2010-05-20 → 2010-06-22 (+33d) |  |  | 67, 74, 170, 23 → 67, 74, 170 |  |
| 45 | Guardar Informacion Ciudadano | 2010-05-20 → 2010-06-22 (+33d) | 2010-05-20 → 2010-06-22 (+33d) |  | 15d → 4d |  |  |
| 46 | **(USR11) Seguimiento de Patologias** | 2010-05-17 → 2010-06-18 (+32d) | 2010-05-17 → 2010-06-18 (+32d) |  | 5d → 4d |  |  |
| 47 | Buscar Campañas Abiertas | 2010-05-17 → 2010-06-18 (+32d) | 2010-05-17 → 2010-06-18 (+32d) |  | 16.5d → 4.5d |  |  |
| 48 | **Gestionar Seguimiento** | 2010-05-17 → 2010-06-18 (+32d) | 2010-05-17 → 2010-06-18 (+32d) | 0.06d → 0.5d | 5.94d → 4.5d |  |  |
| 49 | Visualizar Historial Pacientes | 2010-05-17 → 2010-06-18 (+32d) | 2010-05-17 → 2010-06-18 (+32d) | 0.5h → 0.5d | 16.94d → 4.5d |  |  |
| 50 | Llamada al Paciente | 2010-05-17 → 2010-06-18 (+32d) | 2010-05-17 → 2010-06-18 (+32d) | 0.5h → 0.5d | 16.94d → 4.5d |  |  |
| 51 | Desligar paciente de campaña | 2010-05-17 → 2010-06-18 (+32d) | 2010-05-17 → 2010-06-18 (+32d) |  | 16d → 4d |  |  |
| 52 | **(USR12) Encuestas** | 2010-05-06 → 2010-06-04 (+29d) | 2010-05-10 → 2010-06-08 (+29d) |  | 10d → 12d | none → 130 |  |
| 53 | Interfaz de Encuestas | 2010-05-06 → 2010-06-04 (+29d) | 2010-05-10 → 2010-06-08 (+29d) |  | 21d → 12d |  |  |
| 54 | Contacto con Encuestado | 2010-05-06 → 2010-06-04 (+29d) | 2010-05-06 → 2010-06-04 (+29d) |  | 23d → 14d |  |  |
| 55 | ABM Formulario De Encuesta | 2010-05-06 → 2010-06-04 (+29d) | 2010-05-06 → 2010-06-04 (+29d) |  | 23d → 14d |  |  |
| 56 | **(USR13) Buscar Consultas** | 2010-05-07 → 2010-06-15 (+39d) | 2010-05-07 → 2010-06-15 (+39d) |  | 12d → 8d |  |  |
| 57 | **Operativo de Busqueda** | 2010-05-07 → 2010-06-15 (+39d) | 2010-05-07 → 2010-06-15 (+39d) |  | 12d → 8d |  |  |
| 58 | Buscar según distintos criterios | 2010-05-07 → 2010-06-15 (+39d) | 2010-05-07 → 2010-06-15 (+39d) |  | 23d → 8d |  |  |
| 59 | Filtrar resultados de la busqueda según permisos del usuario | 2010-05-07 → 2010-06-15 (+39d) | 2010-05-07 → 2010-06-15 (+39d) | 0.5h → 0.5d | 23.94d → 8.5d |  |  |
| 60 | Acotar resultados si los mismos sobrepasan el parametro configurable "n" | 2010-05-07 → 2010-06-15 (+39d) | 2010-05-07 → 2010-06-15 (+39d) | 0.5h → 0.5d | 23.94d → 8.5d |  |  |
| 61 | **(USR14) Hacer Uso de Documentos** | 2010-05-06 → 2010-06-14 (+39d) | 2010-05-07 → 2010-06-15 (+39d) |  | 9d → 1d | none → 23 |  |
| 62 | Creación y uso de Guias Interrogatorio | 2010-05-06 → 2010-06-14 (+39d) | 2010-05-07 → 2010-06-15 (+39d) |  | 6d → 1d |  |  |
| 63 | Creación y uso Fichas Tematicas | 2010-05-06 → 2010-06-14 (+39d) | 2010-05-07 → 2010-06-15 (+39d) |  | 6d → 1d |  |  |
| 64 | Creación y uso de Recursos | 2010-05-06 → 2010-06-14 (+39d) | 2010-05-07 → 2010-06-15 (+39d) |  | 6d → 1d |  |  |
| 65 | Búsqueda y selección de documentos | 2010-05-06 → 2010-06-14 (+39d) | 2010-05-07 → 2010-06-15 (+39d) |  | 6d → 1d |  |  |
| 66 | Apertura documentos | 2010-05-06 → 2010-06-14 (+39d) | 2010-05-06 → 2010-06-14 (+39d) |  | 7d → 2d |  |  |
| 67 | **(USR15) Cerrar consulta y dar respuesta al ciudadano** | 2010-05-06 → 2010-06-14 (+39d) | 2010-05-06 → 2010-06-14 (+39d) |  | 10d → 4.5d | none → 23 |  |
| 68 | Clasificar Finalizacion de Consulta | 2010-05-06 → 2010-06-14 (+39d) | 2010-05-06 → 2010-06-14 (+39d) | 0.5h → 0.5d | 7.94d → 5d |  |  |
| 69 | Adición de motivo de cierre a la consulta | 2010-05-06 → 2010-06-14 (+39d) | 2010-05-06 → 2010-06-14 (+39d) | 0.5h → 0.5d | 7.94d → 5d |  |  |
| 70 | Creación de clasificaciones ad-hoc | 2010-05-06 → 2010-06-14 (+39d) | 2010-05-06 → 2010-06-14 (+39d) |  | 7d → 4.5d |  |  |

| ID | Task | Start | Finish | Duration | Total float | Predecessors |
| --- | --- | --- | --- | --- | --- | --- |
| 71 | **(USR16) Visualizar Consulta** | 2010-05-06 → 2010-06-14 (+39d) | 2010-05-06 → 2010-06-14 (+39d) |  | 8d → 4d | none → 23 |
| 72 | Mostrar datos generales de la consulta | 2010-05-06 → 2010-06-14 (+39d) | 2010-05-06 → 2010-06-14 (+39d) |  | 7d → 4d |  |
| 73 | Mostrar datos según el documento elegido | 2010-05-06 → 2010-06-14 (+39d) | 2010-05-06 → 2010-06-14 (+39d) |  | 7d → 4d |  |
| 74 | **(USR17) Crear/Transferir Consulta** | 2010-05-06 → 2010-06-14 (+39d) | 2010-05-07 → 2010-06-15 (+39d) |  | 9d → 0d | none → 23 |
| 75 | Crear Consulta | 2010-05-06 → 2010-06-14 (+39d) | 2010-05-07 → 2010-06-15 (+39d) |  | 6d → 0d |  |
| 76 | Copiar consulta | 2010-05-06 → 2010-06-14 (+39d) | 2010-05-06 → 2010-06-14 (+39d) |  | 7d → 1d |  |
| 77 | **Transferir Consulta** | 2010-05-06 → 2010-06-14 (+39d) | 2010-05-06 → 2010-06-14 (+39d) |  | 10d → 1d |  |
| 78 | Localizar a otro operador del mismo perfil | 2010-05-06 → 2010-06-14 (+39d) | 2010-05-06 → 2010-06-14 (+39d) |  | 7d → 1d |  |
| 79 | **(ADM01) Mantenimiento del Entorno, clasif y prioridades** | 2010-05-13 → 2010-06-03 (+21d) | 2010-05-17 → 2010-06-07 (+21d) |  | 2d → 8d | 192 → 199 |
| 80 | Módulo de edición de parametros grales de la aplicación | 2010-05-13 → 2010-06-03 (+21d) | 2010-05-17 → 2010-06-07 (+21d) |  | 13d → 8d |  |
| 81 | Módulo edición listas de clasificaciones (Códigos internos) | 2010-05-13 → 2010-06-03 (+21d) | 2010-05-17 → 2010-06-07 (+21d) |  | 13d → 8d |  |
| 82 | **Módulo mantenimiento de la lista de espera** | 2010-05-13 → 2010-06-03 (+21d) | 2010-05-13 → 2010-06-03 (+21d) |  | 4d → 10d |  |
| 83 | ABM de la lista de espera | 2010-05-13 → 2010-06-03 (+21d) | 2010-05-13 → 2010-06-03 (+21d) |  | 15d → 10d |  |
| 84 | Módulo de gestión de prioridades sobre la lista de espera | 2010-05-13 → 2010-06-03 (+21d) | 2010-05-13 → 2010-06-03 (+21d) |  | 15d → 10d |  |
| 85 | **Módulo mantenimiento de lineas de servicio** | 2010-05-13 → 2010-06-03 (+21d) | 2010-05-13 → 2010-06-03 (+21d) |  | 4d → 10d |  |
| 86 | ABM lineas de servicio | 2010-05-13 → 2010-06-03 (+21d) | 2010-05-13 → 2010-06-03 (+21d) |  | 15d → 10d |  |
| 87 | ABM servicios para una linea seleccionada | 2010-05-13 → 2010-06-03 (+21d) | 2010-05-13 → 2010-06-03 (+21d) |  | 15d → 10d |  |
| 88 | **Módulo mantenimiento agendas** | 2010-05-13 → 2010-06-03 (+21d) | 2010-05-13 → 2010-06-03 (+21d) |  | 4d → 10d |  |
| 89 | Asignar operadores a agenda | 2010-05-13 → 2010-06-03 (+21d) | 2010-05-13 → 2010-06-03 (+21d) |  | 15d → 10d |  |
| 90 | ABM de usuarios de la agenda | 2010-05-13 → 2010-06-03 (+21d) | 2010-05-13 → 2010-06-03 (+21d) |  | 15d → 10d |  |
| 91 | ABM citas de la agenda | 2010-05-13 → 2010-06-03 (+21d) | 2010-05-13 → 2010-06-03 (+21d) |  | 15d → 10d |  |
| 92 | **Módulo mantenimiento BBDD** | 2010-05-13 → 2010-06-03 (+21d) | 2010-05-14 → 2010-06-04 (+21d) |  | 3d → 9d |  |
| 93 | Módulo comprobación de formato de archivo | 2010-05-13 → 2010-06-03 (+21d) | 2010-05-13 → 2010-06-03 (+21d) |  | 15d → 10d |  |
| 94 | Módulo actualización de BBDD | 2010-05-13 → 2010-06-03 (+21d) | 2010-05-14 → 2010-06-04 (+21d) |  | 14d → 9d |  |
| 95 | **(ADM02) Extraccion de estadisticas y listados** | 2010-05-13 → 2010-06-08 (+26d) | 2010-05-14 → 2010-06-09 (+26d) |  |  | 143, 149, 153, 193 → 79 |
| 96 | Listados De Administración | 2010-05-13 → 2010-06-08 (+26d) | 2010-05-14 → 2010-06-09 (+26d) |  | 19d → 8d |  |
| 97 | **Listados Comunes** | 2010-05-13 → 2010-06-08 (+26d) | 2010-05-13 → 2010-06-08 (+26d) |  |  |  |
| 98 | Detalle de estado de finalización consulta/acción | 2010-05-13 → 2010-06-08 (+26d) | 2010-05-13 → 2010-06-08 (+26d) |  | 20d → 9d |  |
| 99 | Listado de clasificaciones | 2010-05-13 → 2010-06-08 (+26d) | 2010-05-13 → 2010-06-08 (+26d) |  | 20d → 9d |  |
| 100 | Listados de incidencias en las comunicaciones | 2010-05-13 → 2010-06-08 (+26d) | 2010-05-13 → 2010-06-08 (+26d) |  | 20d → 9d |  |
| 101 | Ratios por usuario | 2010-05-13 → 2010-06-08 (+26d) | 2010-05-13 → 2010-06-08 (+26d) |  | 20d → 9d |  |
| 102 | Finales de servicio | 2010-05-13 → 2010-06-08 (+26d) | 2010-05-13 → 2010-06-08 (+26d) |  | 20d → 9d |  |
| 103 | **(ADM03) Mantenimiento de documentos** | 2010-05-12 → 2010-06-21 (+40d) | 2010-05-17 → 2010-06-24 (+38d) |  | 7d → 1d | 149, 167, 111 → 111 |
| 104 | Creación y edición de documentos | 2010-05-14 → 2010-06-23 (+40d) | 2010-05-17 → 2010-06-24 (+38d) |  | 18d → 1d |  |
| 105 | Borrado de documentos | 2010-05-12 → 2010-06-21 (+40d) | 2010-05-12 → 2010-06-21 (+40d) |  | 21d → 4d |  |
| 106 | Clasificación de documentos | 2010-05-12 → 2010-06-21 (+40d) | 2010-05-12 → 2010-06-21 (+40d) |  | 21d → 4d |  |
| 107 | Búsqueda de documentos | 2010-05-12 → 2010-06-21 (+40d) | 2010-05-13 → 2010-06-22 (+40d) |  | 20d → 3d |  |
| 108 | (ADM04) Mantenimiento de Recursos | 2010-05-11 → 2010-06-16 (+36d) | 2010-05-12 → 2010-06-17 (+36d) |  | 19d → 1d | 189 → 61 |
| 109 | (ADM05) Mantenimiento de guias de interrogatorio | 2010-05-12 → 2010-06-21 (+40d) | 2010-05-13 → 2010-06-22 (+40d) |  | 7d → 1d | 111, 189 → 111, 61 |
| 110 | (ADM06) Mantenimiento de Fichas tematicas | 2010-05-12 → 2010-06-21 (+40d) | 2010-05-13 → 2010-06-22 (+40d) |  | 7d → 1d | 111, 189 → 111, 61 |
| 111 | **(ADM07) Mantenimiento de relaciones sobre guias de interrogatorio y fichas tematicas** | 2010-05-11 → 2010-06-18 (+38d) | 2010-05-11 → 2010-06-18 (+38d) |  | 7d → 1d | 189 → 108 |
| 112 | Adición de documentos a fichas temáticas | 2010-05-11 → 2010-06-18 (+38d) | 2010-05-11 → 2010-06-18 (+38d) |  | 18d → 1d |  |
| 113 | Adición de documentos a guias de interrogatorio | 2010-05-11 → 2010-06-18 (+38d) | 2010-05-11 → 2010-06-18 (+38d) |  | 18d → 1d |  |
| 114 | **(ADM08) Mantenimiento de encuestas** | 2010-05-06 → 2010-06-04 (+29d) | 2010-05-06 → 2010-06-04 (+29d) |  | 14d → 16d | none → 130 |
| 115 | **Mantenimiento Indice de Encuestas** | 2010-05-06 → 2010-06-04 (+29d) | 2010-05-06 → 2010-06-04 (+29d) |  | 14d → 16d |  |
| 116 | Mantener Ediciones | 2010-05-06 → 2010-06-04 (+29d) | 2010-05-06 → 2010-06-04 (+29d) |  | 25d → 16d |  |
| 117 | Cierre de ediciones | 2010-05-06 → 2010-06-04 (+29d) | 2010-05-06 → 2010-06-04 (+29d) |  | 25d → 16d |  |
| 118 | Asignación de formulario a encuesta | 2010-05-06 → 2010-06-04 (+29d) | 2010-05-06 → 2010-06-04 (+29d) |  | 25d → 16d |  |
| 119 | Asignación de operadores a encuesta | 2010-05-06 → 2010-06-04 (+29d) | 2010-05-06 → 2010-06-04 (+29d) |  | 25d → 16d |  |
| 120 | **Asignación lista de encuestados** | 2010-05-06 → 2010-06-04 (+29d) | 2010-05-06 → 2010-06-04 (+29d) |  | 14d → 16d |  |
| 121 | Alta, baja de encuestados | 2010-05-06 → 2010-06-04 (+29d) | 2010-05-06 → 2010-06-04 (+29d) |  | 25d → 16d |  |
| 122 | Asignación automática en base a un archivo de texto | 2010-05-06 → 2010-06-04 (+29d) | 2010-05-06 → 2010-06-04 (+29d) |  | 25d → 16d |  |
| 123 | Publicar Encuestas | 2010-05-06 → 2010-06-04 (+29d) | 2010-05-06 → 2010-06-04 (+29d) |  | 25d → 16d |  |
| 124 | **(ADM09) Mantenimiento de seguimiento de patologias** | 2010-05-06 → 2010-06-08 (+33d) | 2010-05-06 → 2010-06-08 (+33d) |  | 14d → 12d | none → 79 |
| 125 | Mantenimiento Indice de campañas de seguimiento | 2010-05-06 → 2010-06-08 (+33d) | 2010-05-06 → 2010-06-08 (+33d) |  | 25d → 12d |  |
| 126 | Asignación de formulario a campaña de seguimiento | 2010-05-06 → 2010-06-08 (+33d) | 2010-05-06 → 2010-06-08 (+33d) | 0.5h → 0.5d | 25.94d → 12.5d |  |
| 127 | Asignación de operadores a campaña de seguimiento | 2010-05-06 → 2010-06-08 (+33d) | 2010-05-06 → 2010-06-08 (+33d) | 0.5h → 0.5d | 25.94d → 12.5d |  |
| 128 | Asignación de listas de pacientes | 2010-05-06 → 2010-06-08 (+33d) | 2010-05-06 → 2010-06-08 (+33d) | 0.5h → 0.5d | 25.94d → 12.5d |  |
| 129 | Activación/ Desactivación de campañas | 2010-05-06 → 2010-06-08 (+33d) | 2010-05-06 → 2010-06-08 (+33d) | 0.5h → 0.5d | 25.94d → 12.5d |  |
| 130 | **(ADM10) Creacion de formularios de encuesta y seguimiento** | 2010-05-07 → 2010-06-03 (+27d) | 2010-05-07 → 2010-06-03 (+27d) |  | 13d → 12d | 190 → 199 |
| 131 | Mantener Indice de Encuesta | 2010-05-07 → 2010-06-03 (+27d) | 2010-05-07 → 2010-06-03 (+27d) |  | 24d → 12d |  |
| 132 | Crear y Editar Encuestas | 2010-05-07 → 2010-06-03 (+27d) | 2010-05-07 → 2010-06-03 (+27d) |  | 24d → 12d |  |
| 133 | **(ADM11) Mantenimiento de usuarios, perfiles y permisos** | 2010-05-13 → 2010-06-10 (+28d) | 2010-05-13 → 2010-06-10 (+28d) |  |  | 194 → 1 |
| 134 | Mantenimiento Opciones Funcionales | 2010-05-13 → 2010-06-10 (+28d) | 2010-05-13 → 2010-06-10 (+28d) |  | 18d → 7d |  |
| 135 | **Mantener Perfiles Trabajo** | 2010-05-13 → 2010-06-10 (+28d) | 2010-05-13 → 2010-06-10 (+28d) |  |  |  |
| 136 | Alta, modificación de perfiles | 2010-05-13 → 2010-06-10 (+28d) | 2010-05-13 → 2010-06-10 (+28d) |  | 18d → 7d |  |
| 137 | ABM de opciones funcionales a perfil | 2010-05-13 → 2010-06-10 (+28d) | 2010-05-13 → 2010-06-10 (+28d) |  | 18d → 7d |  |
| 138 | Adición de responsabilidades a opciones funcionales | 2010-05-13 → 2010-06-10 (+28d) | 2010-05-13 → 2010-06-10 (+28d) | 0.5h → 0.5d | 18.94d → 7.5d |  |
| 139 | **Mantener Usuarios** | 2010-05-13 → 2010-06-10 (+28d) | 2010-05-13 → 2010-06-10 (+28d) |  |  |  |
| 140 | Creación/gestion de usuarios | 2010-05-13 → 2010-06-10 (+28d) | 2010-05-13 → 2010-06-10 (+28d) |  | 18d → 7d |  |

| ID | Task | Start | Finish | Duration | Total float | Predecessors | Other |
| --- | --- | --- | --- | --- | --- | --- | --- |
| 141 | Asiganción de perfil a usuario | 2010-05-13 → 2010-06-10 (+28d) | 2010-05-13 → 2010-06-10 (+28d) | 0.5h → 0.5d | 18.94d → 7.5d |  |  |
| 142 | Asignación de agendas a usuario | 2010-05-13 → 2010-06-10 (+28d) | 2010-05-13 → 2010-06-10 (+28d) |  | 18d → 7d |  |  |
| 143 | **(ADM12) Listado de acciones proactivas** | 2010-05-06 → 2010-06-10 (+35d) | 2010-05-07 → 2010-06-11 (+35d) |  |  | none → 95, 124 |  |
| 144 | Módulo de elaboraciónde informes de estado de campaña de seguimiento | 2010-05-06 → 2010-06-10 (+35d) | 2010-05-07 → 2010-06-11 (+35d) |  | 22d → 11d |  |  |
| 145 | Módulo de elaboración de informes de estado de encuesta | 2010-05-06 → 2010-06-10 (+35d) | 2010-05-07 → 2010-06-11 (+35d) |  | 22d → 11d |  |  |
| 146 | Módulo de elaboración de informes de ediciones de encuestas | 2010-05-06 → 2010-06-10 (+35d) | 2010-05-07 → 2010-06-11 (+35d) |  | 22d → 11d |  |  |
| 147 | Módulo de elaboración de listados de campañas de seguimiento | 2010-05-06 → 2010-06-10 (+35d) | 2010-05-07 → 2010-06-11 (+35d) |  | 22d → 11d |  |  |
| 148 | Módulo de elaboración de listados de información de encuestas | 2010-05-06 → 2010-06-10 (+35d) | 2010-05-07 → 2010-06-11 (+35d) |  | 22d → 11d |  |  |
| 149 | **(ADM13) Listados de documentos** | 2010-05-06 → 2010-06-25 (+50d) | 2010-05-06 → 2010-06-25 (+50d) |  | 12d → 1d | none → 95, 103 |  |
| 150 | Elaboración de listado de configuración | 2010-05-06 → 2010-06-25 (+50d) | 2010-05-06 → 2010-06-25 (+50d) |  | 23d → 1d |  |  |
| 151 | Elaboración de listado de uso | 2010-05-06 → 2010-06-25 (+50d) | 2010-05-06 → 2010-06-25 (+50d) |  | 23d → 1d |  |  |
| 152 | Elaboración de listado de asociaciones | 2010-05-06 → 2010-06-25 (+50d) | 2010-05-06 → 2010-06-25 (+50d) |  | 23d → 1d |  |  |
| 153 | **(ADM14) Listado sobre consultas** | 2010-05-06 → 2010-06-14 (+39d) | 2010-05-06 → 2010-06-14 (+39d) |  | 12d → 10d | none → 95, 23 |  |
| 154 | Módulo de obtención de listados de consulta por ciudadano | 2010-05-06 → 2010-06-14 (+39d) | 2010-05-06 → 2010-06-14 (+39d) |  | 23d → 10d |  |  |
| 155 | Módulo de obtención de listados de consultas con cierre principal | 2010-05-06 → 2010-06-14 (+39d) | 2010-05-06 → 2010-06-14 (+39d) |  | 23d → 10d |  |  |
| 156 | Módulo de obtención de listados de consulta con cierre secundario | 2010-05-06 → 2010-06-14 (+39d) | 2010-05-06 → 2010-06-14 (+39d) |  | 23d → 10d |  |  |
| 157 | Módulo de obtención de listados de consulta por motivo de cierre | 2010-05-06 → 2010-06-14 (+39d) | 2010-05-06 → 2010-06-14 (+39d) |  | 23d → 10d |  |  |
| 158 | Módulo de obtención de listado de resumen de consultas por servicio | 2010-05-06 → 2010-06-14 (+39d) | 2010-05-06 → 2010-06-14 (+39d) |  | 23d → 10d |  |  |
| 159 | Módulo de obtención de listado de consultas por área geográfica | 2010-05-06 → 2010-06-14 (+39d) | 2010-05-06 → 2010-06-14 (+39d) |  | 23d → 10d |  |  |
| 160 | Módulo de obtención de listado de consultas por usuario | 2010-05-06 → 2010-06-14 (+39d) | 2010-05-06 → 2010-06-14 (+39d) |  | 23d → 10d |  |  |
| 161 | Módulo de obtención de listado de consultas pendientes | 2010-05-06 → 2010-06-14 (+39d) | 2010-05-06 → 2010-06-14 (+39d) |  | 23d → 10d |  |  |
| 162 | **(ADM15) Mantener Asignaciones TSI** | 2010-05-18 → 2010-06-16 (+29d) | 2010-05-24 → 2010-06-23 (+30d) |  | 2d → 3.5d | 79 → 79, 35 |  |
| 163 | **Módulo de envío de datos a CatSalut** | 2010-05-18 → 2010-06-16 (+29d) | 2010-05-24 → 2010-06-23 (+30d) |  | 2d → 3.5d |  |  |
| 164 | Recolección de datos de operaciones TSI pendientes | 2010-05-18 → 2010-06-16 (+29d) | 2010-05-18 → 2010-06-17 (+30d) |  | 17d → 7.5d |  |  |
| 165 | Migración de los datos a archivo TXT | 2010-05-18 → 2010-06-16 (+29d) | 2010-05-19 → 2010-06-18 (+30d) |  | 16d → 6.5d |  |  |
| 166 | Interface de comunicación con CatSalut | 2010-05-18 → 2010-06-16 (+29d) | 2010-05-24 → 2010-06-23 (+30d) |  | 13d → 3.5d |  |  |
| 167 | **(ADM16) Asignar documentos a acciones** | 2010-05-06 → 2010-06-25 (+50d) | 2010-05-06 → 2010-06-25 (+50d) |  | 12d → 1d | none → 103 |  |
| 168 | Creación/eliminación de asociaciones | 2010-05-06 → 2010-06-25 (+50d) | 2010-05-06 → 2010-06-25 (+50d) |  | 23d → 1d |  |  |
| 169 | Cadicidad de asociaciones | 2010-05-06 → 2010-06-25 (+50d) | 2010-05-06 → 2010-06-25 (+50d) |  | 23d → 1d |  | was named Caducidad de asociaciones |
| 170 | **(INT01) Direcciones de farmacias, CAP y otra informacion breve** | 2010-05-18 → 2010-06-18 (+31d) | 2010-05-19 → 2010-06-21 (+33d) |  | 4d → 0d | 11, 195, 61, 79 → 11, 61, 79 |  |
| 171 | Trabajo con listas de resultados | 2010-05-18 → 2010-06-18 (+31d) | 2010-05-19 → 2010-06-21 (+33d) |  | 15d → 0d |  |  |
| 172 | **(SIS01) Trazabilidad y registro de uso** | 2010-05-06 → 2010-06-10 (+35d) | 2010-05-20 → 2010-06-22 (+33d) | 11d → 9d |  | none → 1 |  |
| 173 | Control Acceso a Consultas | 2010-05-19 → 2010-06-14 (+26d) | 2010-05-20 → 2010-06-15 (+26d) |  | 15d → 9d |  |  |
| 174 | Control Acceso a Encuestas | 2010-05-11 → 2010-06-10 (+30d) | 2010-05-12 → 2010-06-11 (+30d) |  | 21d → 11d |  |  |
| 175 | Control General Acceso al Sistema | 2010-05-14 → 2010-06-11 (+28d) | 2010-05-17 → 2010-06-14 (+28d) |  | 18d → 10d |  |  |
| 176 | Control Acceso a Campañas de Seguimiento | 2010-05-18 → 2010-06-21 (+34d) | 2010-05-19 → 2010-06-22 (+34d) |  | 16d → 4d |  |  |
| 177 | Control Acceso a Documentos | 2010-05-10 → 2010-06-16 (+37d) | 2010-05-11 → 2010-06-17 (+37d) |  | 22d → 7d |  |  |
| 178 | Control Acceso a Recursos Internos | 2010-05-06 → 2010-06-10 (+35d) | 2010-05-07 → 2010-06-11 (+35d) |  | 24d → 11d |  |  |
| 179 | Historial de Consultas | 2010-05-06 → 2010-06-10 (+35d) | 2010-05-06 → 2010-06-10 (+35d) |  | 25d → 12d |  |  |
| 180 | **(ISC01) Transferir info, comunicacion a STARS** | 2010-05-06 → 2010-06-10 (+35d) | 2010-05-10 → 2010-06-14 (+35d) |  | 12d → 10d | none → 1 |  |
| 181 | Recibir información del sistema de comunicaciones | 2010-05-06 → 2010-06-10 (+35d) | 2010-05-10 → 2010-06-14 (+35d) |  | 23d → 10d |  |  |
| 182 | **(ISC02) Iniciar llamada desde STARS** | 2010-05-06 → 2010-06-10 (+35d) | 2010-05-10 → 2010-06-14 (+35d) |  | 12d → 10d | none → 1 |  |
| 183 | Lanzamiento de petición de comunicación | 2010-05-06 → 2010-06-10 (+35d) | 2010-05-10 → 2010-06-14 (+35d) |  | 23d → 10d |  |  |
| 184 | **(ISC03) Informacion encuesta** | 2010-05-06 → 2010-06-04 (+29d) | 2010-05-06 → 2010-06-04 (+29d) |  | 14d → 16d | none → 130 |  |
| 185 | Activación actividad de encuesta | 2010-05-06 → 2010-06-04 (+29d) | 2010-05-06 → 2010-06-04 (+29d) |  | 25d → 16d |  |  |
| 186 | ABM Consultas | 2010-05-06 → 2010-06-14 (+39d) | 2010-05-06 → 2010-06-14 (+39d) |  | 25d → 10d | none → 23 |  |
| 187 | ABM Usuarios | 2010-05-06 → 2010-06-15 (+40d) | 2010-05-06 → 2010-06-15 (+40d) |  | 22d → 6d | none → 3 |  |
| 188 | Proteccion de Acceso | 2010-05-07 → 2010-06-16 (+40d) | 2010-05-11 → 2010-06-18 (+38d) |  | 22d → 6d |  |  |
| 189 | ABM Fichas / Guias / Recursos | 2010-05-06 → 2010-06-18 (+43d) | 2010-05-10 → 2010-06-22 (+43d) |  | 18d → 4d | none → 108 |  |
| 190 | ABM Cuestionarios | 2010-05-06 → 2010-06-04 (+29d) | 2010-05-06 → 2010-06-04 (+29d) |  | 24d → 16d | none → 130 |  |
| 191 | Interfaz General | 2010-05-06 → 2010-06-10 (+35d) | 2010-05-19 → 2010-06-23 (+35d) |  | 16d → 3d | none → 1 |  |
| 192 | Interfaz Para Usuario Avanzado | 2010-05-06 → 2010-06-08 (+33d) | 2010-05-12 → 2010-06-14 (+33d) |  | 13d → 10d | none → 79 |  |
| 193 | Interfaz de Listados para ADM02 | 2010-05-06 → 2010-06-10 (+35d) | 2010-05-12 → 2010-06-16 (+35d) |  | 19d → 8d | none → 95 |  |
| 194 | Interfaz Mantenimiento Usuarios y Perfiles | 2010-05-06 → 2010-06-11 (+36d) | 2010-05-12 → 2010-06-17 (+36d) |  | 18d → 7d | none → 133 |  |
| 195 | Interfaz Direcciones INT01 | 2010-05-06 → 2010-06-22 (+47d) | 2010-05-12 → 2010-06-28 (+47d) |  | 18d → 0d | none → 170 |  |
| 196 | ABM Enfermedades / Centros Salud | 2010-05-06 → 2010-06-22 (+47d) | 2010-05-07 → 2010-06-23 (+47d) |  | 24d → 3d | none → 170 |  |
| 197 | Listado de Usuarios y Perfiles | 2010-05-06 → 2010-06-11 (+36d) | 2010-05-06 → 2010-06-11 (+36d) |  | 2d → 11d | none → 133 |  |
| 198 | Interface con sistema de comunicaciones (ISC01, ISC02, ISC03) | 2010-05-06 → 2010-06-10 (+35d) | 2010-05-12 → 2010-06-16 (+35d) |  | 21d → 8d | none → 1 |  |

## Version 4 (saved 2010-08-30, file CasosUsoHorasMartin.mpp)

Note of the change: aca subo mi version del project con la estimacion de horas

Last finish stays 2010-06-28.

Changed:

| ID | Task | Start | Finish | Duration | Total float | Other |
| --- | --- | --- | --- | --- | --- | --- |
| 3 | **(GEN01) Identificacion y Autenticacion** |  | 2010-06-14 → 2010-06-11 (-3d) | 3d → 2d |  |  |
| 4 | Autenticacion |  | 2010-06-10 → 2010-06-11 (+1d) | 1d → 2d | 6d → 4d |  |
| 5 | Interfaz Inicio Sesion |  | 2010-06-14 → 2010-06-10 (-4d) | 3d → 1d | 4d → 5d |  |
| 6 | **(GEN02) Gestion General de Registros** |  | 2010-06-14 → 2010-06-11 (-3d) | 3d → 2d | 10d → 11d |  |
| 10 | Interfaz ABM Registro |  | 2010-06-14 → 2010-06-11 (-3d) | 3d → 2d | 10d → 11d |  |
| 11 | **(USR01) Determinacion del servicio de atencion** |  | 2010-06-17 → 2010-06-16 (-1d) | 2d → 1d | 0d → 4d |  |
| 12 | Capturar la Comunicación???? |  | 2010-06-17 → 2010-06-16 (-1d) | 2d → 1d | 0d → 4d |  |
| 13 | Determinar el tipo de servicio |  |  |  | 1d → 4d | was named Determinar el tipod e servicio |
| 16 | **(USR02) Agenda** | 2010-06-15 → 2010-06-17 (+2d) | 2010-06-17 → 2010-06-18 (+1d) | 3d → 2d | 4d → 1d |  |
| 17 | Selección de una agenda | 2010-06-15 → 2010-06-17 (+2d) | 2010-06-15 → 2010-06-17 (+2d) | 0.5d → 1d | 6.5d → 2d |  |
| 18 | ABM citas sobre la agenda | 2010-06-15 → 2010-06-17 (+2d) | 2010-06-15 → 2010-06-17 (+2d) |  | 6d → 2d |  |
| 19 | Interfaz de la Agenda | 2010-06-15 → 2010-06-17 (+2d) | 2010-06-16 → 2010-06-18 (+2d) |  | 5d → 1d |  |
| 20 | Integracion con Stars - Llamada desde Agenda | 2010-06-15 → 2010-06-17 (+2d) | 2010-06-17 → 2010-06-18 (+1d) | 3d → 2d | 4d → 1d |  |
| 21 | Asignar pacientes a cita | 2010-06-15 → 2010-06-17 (+2d) | 2010-06-15 → 2010-06-17 (+2d) | 0.5d → 1d | 6.5d → 2d |  |
| 22 | (USR03) Rellamada | 2010-06-16 → 2010-06-23 (+7d) | 2010-06-16 → 2010-06-24 (+8d) | 1d → 2d | 8d → 2d |  |
| 24 | **Tratar Consulta** |  |  | 0.5d → 1d | 1.5d → 1d |  |
| 25 | Ajornar Consulta |  |  | 0.5d → 1d | 1.5d → 1d |  |
| 26 | Transferir consulta |  |  | 0.5d → 1d | 1.5d → 1d |  |
| 29 | Inclusion en Campaña de Seguimiento |  | 2010-06-10 → 2010-06-11 (+1d) | 1d → 2d | 1d → 0d |  |
| 30 | (USR05) Consejo Salud | 2010-06-16 → 2010-06-17 (+1d) | 2010-06-16 → 2010-06-18 (+2d) | 1d → 2d | 8d → 6d |  |
| 31 | **(USR06) Gestionar Consulta pendiente** |  | 2010-06-14 → 2010-06-15 (+1d) | 1d → 2d | 1d → 4d |  |
| 32 | Priorizacion de la Lista de Consultas |  | 2010-06-14 → 2010-06-15 (+1d) | 1d → 2d | 1d → 4d |  |
| 33 | **(USR07) Programacion de cita previa** | 2010-06-16 → 2010-06-17 (+1d) | 2010-06-16 → 2010-06-18 (+2d) | 1d → 2d | 8d → 6d |  |
| 34 | Realizar Citación (Interface con Sistema de citación AP) | 2010-06-16 → 2010-06-17 (+1d) | 2010-06-16 → 2010-06-18 (+2d) | 1d → 2d | 8d → 6d |  |
| 35 | **(USR08) Gestiones sobre la TSI** | 2010-06-16 → 2010-06-17 (+1d) | 2010-06-16 → 2010-06-18 (+2d) | 0.5d → 2d | 3.5d → 4d |  |
| 36 | Verificacion Documentacion Necesaria | 2010-06-16 → 2010-06-17 (+1d) | 2010-06-16 → 2010-06-17 (+1d) | 0.5d → 1d | 3.5d → 5d |  |
| 37 | Enviar Gestion (Interface con sistema RCA) | 2010-06-16 → 2010-06-17 (+1d) | 2010-06-16 → 2010-06-18 (+2d) | 0.5d → 2d | 3.5d → 4d |  |
| 38 | Cierre automatico de la consulta por paso de tiempo | 2010-06-16 → 2010-06-17 (+1d) | 2010-06-16 → 2010-06-17 (+1d) | 0.5d → 1d | 3.5d → 5d |  |
| 39 | Guardar LOG gestion TSI????? | 2010-06-16 → 2010-06-17 (+1d) | 2010-06-16 → 2010-06-17 (+1d) | 0.5d → 1d | 3.5d → 5d |  |
| 40 | **(USR09) Servicio de traduccion** | 2010-06-15 → 2010-06-17 (+2d) | 2010-06-16 → 2010-06-21 (+5d) | 2d → 3d | 8d → 5d |  |
| 41 | Contactar Servicio Externo de Traduccion | 2010-06-15 → 2010-06-17 (+2d) | 2010-06-15 → 2010-06-18 (+3d) | 1d → 2d | 9d → 6d |  |
| 42 | Enlace Comunicacion Multiconferencia | 2010-06-15 → 2010-06-17 (+2d) | 2010-06-16 → 2010-06-21 (+5d) | 2d → 3d | 8d → 5d |  |
| 43 | Modulo monitorización de servicio | 2010-06-15 → 2010-06-17 (+2d) | 2010-06-16 → 2010-06-18 (+2d) |  | 8d → 6d |  |
| 44 | **(USR10) Informacion Sanitaria General** | 2010-06-22 → 2010-06-21 (-1d) |  | 1d → 2d |  |  |
| 45 | Guardar Informacion Ciudadano | 2010-06-22 → 2010-06-21 (-1d) |  | 1d → 2d |  |  |
| 46 | **(USR11) Seguimiento de Patologias** | 2010-06-18 → 2010-06-21 (+3d) | 2010-06-18 → 2010-06-23 (+5d) | 1d → 3d | 4d → 1d |  |
| 47 | Buscar Campañas Abiertas | 2010-06-18 → 2010-06-21 (+3d) | 2010-06-18 → 2010-06-22 (+4d) | 0.5d → 2d | 4.5d → 2d |  |
| 48 | **Gestionar Seguimiento** | 2010-06-18 → 2010-06-21 (+3d) | 2010-06-18 → 2010-06-23 (+5d) | 0.5d → 3d | 4.5d → 1d |  |
| 49 | Visualizar Historial Pacientes | 2010-06-18 → 2010-06-21 (+3d) | 2010-06-18 → 2010-06-23 (+5d) | 0.5d → 3d | 4.5d → 1d |  |
| 50 | Llamada al Paciente | 2010-06-18 → 2010-06-21 (+3d) | 2010-06-18 → 2010-06-22 (+4d) | 0.5d → 2d | 4.5d → 2d |  |
| 51 | Desligar paciente de campaña | 2010-06-18 → 2010-06-21 (+3d) | 2010-06-18 → 2010-06-21 (+3d) |  | 4d → 3d |  |
| 52 | **(USR12) Encuestas** | 2010-06-04 → 2010-06-07 (+3d) |  | 3d → 2d |  |  |
| 53 | Interfaz de Encuestas | 2010-06-04 → 2010-06-07 (+3d) |  | 3d → 2d |  |  |
| 54 | Contacto con Encuestado | 2010-06-04 → 2010-06-07 (+3d) | 2010-06-04 → 2010-06-08 (+4d) | 1d → 2d | 14d → 12d |  |
| 55 | ABM Formulario De Encuesta | 2010-06-04 → 2010-06-07 (+3d) | 2010-06-04 → 2010-06-07 (+3d) |  | 14d → 13d |  |
| 56 | **(USR13) Buscar Consultas** | 2010-06-15 → 2010-06-17 (+2d) | 2010-06-15 → 2010-06-22 (+7d) | 1d → 4d | 8d → 2d |  |
| 57 | **Operativo de Busqueda** | 2010-06-15 → 2010-06-17 (+2d) | 2010-06-15 → 2010-06-22 (+7d) | 1d → 4d | 8d → 2d |  |
| 58 | Buscar según distintos criterios | 2010-06-15 → 2010-06-17 (+2d) | 2010-06-15 → 2010-06-22 (+7d) | 1d → 4d | 8d → 2d |  |
| 59 | Filtrar resultados de la busqueda según permisos del usuario | 2010-06-15 → 2010-06-17 (+2d) | 2010-06-15 → 2010-06-17 (+2d) | 0.5d → 1d | 8.5d → 5d |  |
| 60 | Acotar resultados si los mismos sobrepasan el parametro configurable "n" | 2010-06-15 → 2010-06-17 (+2d) | 2010-06-15 → 2010-06-17 (+2d) | 0.5d → 1d | 8.5d → 5d |  |
| 67 | **(USR15) Cerrar consulta y dar respuesta al ciudadano** |  | 2010-06-14 → 2010-06-16 (+2d) | 1d → 3d | 4.5d → 4d |  |
| 68 | Clasificar Finalizacion de Consulta |  | 2010-06-14 → 2010-06-16 (+2d) | 0.5d → 3d | 5d → 4d |  |
| 69 | Adición de motivo de cierre a la consulta |  |  | 0.5d → 1d | 5d → 6d |  |
| 70 | Creación de clasificaciones ad-hoc |  | 2010-06-14 → 2010-06-15 (+1d) | 1d → 2d | 4.5d → 5d |  |
| 71 | **(USR16) Visualizar Consulta** |  | 2010-06-14 → 2010-06-16 (+2d) | 1d → 3d | 4d → 1d |  |
| 72 | Mostrar datos generales de la consulta |  | 2010-06-14 → 2010-06-16 (+2d) | 1d → 3d | 4d → 1d |  |
| 73 | Mostrar datos según el documento elegido |  | 2010-06-14 → 2010-06-16 (+2d) | 1d → 3d | 4d → 1d |  |
| 81 | Módulo edición listas de clasificaciones (Códigos internos) |  | 2010-06-07 → 2010-06-04 (-3d) | 3d → 2d | 8d → 11d |  |
| 82 | **Módulo mantenimiento de la lista de espera** |  | 2010-06-03 → 2010-06-04 (+1d) | 1d → 2d | 10d → 11d |  |
| 84 | Módulo de gestión de prioridades sobre la lista de espera |  | 2010-06-03 → 2010-06-04 (+1d) | 1d → 2d | 10d → 11d |  |
| 95 | **(ADM02) Extraccion de estadisticas y listados** |  | 2010-06-09 → 2010-06-08 (-1d) | 2d → 1d | 8d → 12d |  |
| 96 | Listados De Administración |  | 2010-06-09 → 2010-06-08 (-1d) | 2d → 1d | 8d → 12d |  |
| 114 | **(ADM08) Mantenimiento de encuestas** | 2010-06-04 → 2010-06-07 (+3d) | 2010-06-04 → 2010-06-07 (+3d) |  | 16d → 15d |  |
| 115 | **Mantenimiento Indice de Encuestas** | 2010-06-04 → 2010-06-07 (+3d) | 2010-06-04 → 2010-06-07 (+3d) |  | 16d → 15d |  |
| 116 | Mantener Ediciones | 2010-06-04 → 2010-06-07 (+3d) | 2010-06-04 → 2010-06-07 (+3d) |  | 16d → 15d |  |
| 117 | Cierre de ediciones | 2010-06-04 → 2010-06-07 (+3d) | 2010-06-04 → 2010-06-07 (+3d) |  | 16d → 15d |  |
| 118 | Asignación de formulario a encuesta | 2010-06-04 → 2010-06-07 (+3d) | 2010-06-04 → 2010-06-07 (+3d) |  | 16d → 15d |  |
| 119 | Asignación de operadores a encuesta | 2010-06-04 → 2010-06-07 (+3d) | 2010-06-04 → 2010-06-07 (+3d) |  | 16d → 15d |  |
| 120 | **Asignación lista de encuestados** | 2010-06-04 → 2010-06-07 (+3d) | 2010-06-04 → 2010-06-07 (+3d) |  | 16d → 15d |  |
| 121 | Alta, baja de encuestados | 2010-06-04 → 2010-06-07 (+3d) | 2010-06-04 → 2010-06-07 (+3d) |  | 16d → 15d |  |

| ID | Task | Start | Finish | Duration | Total float |
| --- | --- | --- | --- | --- | --- |
| 122 | Asignación automática en base a un archivo de texto | 2010-06-04 → 2010-06-07 (+3d) | 2010-06-04 → 2010-06-07 (+3d) |  | 16d → 15d |
| 123 | Publicar Encuestas | 2010-06-04 → 2010-06-07 (+3d) | 2010-06-04 → 2010-06-07 (+3d) |  | 16d → 15d |
| 124 | **(ADM09) Mantenimiento de seguimiento de patologias** |  | 2010-06-08 → 2010-06-09 (+1d) | 1d → 2d | 12d → 11d |
| 125 | Mantenimiento Indice de campañas de seguimiento |  | 2010-06-08 → 2010-06-09 (+1d) | 1d → 2d | 12d → 11d |
| 126 | Asignación de formulario a campaña de seguimiento |  |  | 0.5d → 1d | 12.5d → 12d |
| 127 | Asignación de operadores a campaña de seguimiento |  |  | 0.5d → 1d | 12.5d → 12d |
| 128 | Asignación de listas de pacientes |  |  | 0.5d → 1d | 12.5d → 12d |
| 129 | Activación/ Desactivación de campañas |  |  | 0.5d → 1d | 12.5d → 12d |
| 130 | **(ADM10) Creacion de formularios de encuesta y seguimiento** |  | 2010-06-03 → 2010-06-04 (+1d) | 1d → 2d |  |
| 131 | Mantener Indice de Encuesta |  | 2010-06-03 → 2010-06-04 (+1d) | 1d → 2d |  |
| 133 | **(ADM11) Mantenimiento de usuarios, perfiles y permisos** |  | 2010-06-10 → 2010-06-11 (+1d) | 1d → 2d | 7d → 8d |
| 134 | Mantenimiento Opciones Funcionales |  | 2010-06-10 → 2010-06-11 (+1d) | 1d → 2d | 7d → 8d |
| 138 | Adición de responsabilidades a opciones funcionales |  |  | 0.5d → 1d | 7.5d → 9d |
| 141 | Asiganción de perfil a usuario |  |  | 0.5d → 1d | 7.5d → 9d |
| 149 | **(ADM13) Listados de documentos** |  | 2010-06-25 → 2010-06-28 (+3d) | 1d → 2d | 1d → 0d |
| 150 | Elaboración de listado de configuración |  | 2010-06-25 → 2010-06-28 (+3d) | 1d → 2d | 1d → 0d |
| 151 | Elaboración de listado de uso |  | 2010-06-25 → 2010-06-28 (+3d) | 1d → 2d | 1d → 0d |
| 152 | Elaboración de listado de asociaciones |  | 2010-06-25 → 2010-06-28 (+3d) | 1d → 2d | 1d → 0d |
| 153 | **(ADM14) Listado sobre consultas** |  | 2010-06-14 → 2010-06-15 (+1d) | 1d → 2d | 10d → 9d |
| 154 | Módulo de obtención de listados de consulta por ciudadano |  | 2010-06-14 → 2010-06-15 (+1d) | 1d → 2d | 10d → 9d |
| 155 | Módulo de obtención de listados de consultas con cierre principal |  | 2010-06-14 → 2010-06-15 (+1d) | 1d → 2d | 10d → 9d |
| 156 | Módulo de obtención de listados de consulta con cierre secundario |  | 2010-06-14 → 2010-06-15 (+1d) | 1d → 2d | 10d → 9d |
| 157 | Módulo de obtención de listados de consulta por motivo de cierre |  | 2010-06-14 → 2010-06-15 (+1d) | 1d → 2d | 10d → 9d |
| 158 | Módulo de obtención de listado de resumen de consultas por servicio |  | 2010-06-14 → 2010-06-15 (+1d) | 1d → 2d | 10d → 9d |
| 159 | Módulo de obtención de listado de consultas por área geográfica |  | 2010-06-14 → 2010-06-15 (+1d) | 1d → 2d | 10d → 9d |
| 160 | Módulo de obtención de listado de consultas por usuario |  | 2010-06-14 → 2010-06-15 (+1d) | 1d → 2d | 10d → 9d |
| 161 | Módulo de obtención de listado de consultas pendientes |  | 2010-06-14 → 2010-06-15 (+1d) | 1d → 2d | 10d → 9d |
| 162 | **(ADM15) Mantener Asignaciones TSI** | 2010-06-16 → 2010-06-21 (+5d) | 2010-06-23 → 2010-06-22 (-1d) | 5d → 2d | 3.5d → 4d |
| 163 | **Módulo de envío de datos a CatSalut** | 2010-06-16 → 2010-06-21 (+5d) | 2010-06-23 → 2010-06-22 (-1d) | 5d → 2d | 3.5d → 4d |
| 164 | Recolección de datos de operaciones TSI pendientes | 2010-06-16 → 2010-06-21 (+5d) | 2010-06-17 → 2010-06-22 (+5d) | 1d → 2d | 7.5d → 4d |
| 165 | Migración de los datos a archivo TXT | 2010-06-16 → 2010-06-21 (+5d) | 2010-06-18 → 2010-06-22 (+4d) |  | 6.5d → 4d |
| 166 | Interface de comunicación con CatSalut | 2010-06-16 → 2010-06-21 (+5d) | 2010-06-23 → 2010-06-22 (-1d) | 5d → 2d | 3.5d → 4d |
| 167 | **(ADM16) Asignar documentos a acciones** |  | 2010-06-25 → 2010-06-28 (+3d) | 1d → 2d | 1d → 0d |
| 168 | Creación/eliminación de asociaciones |  | 2010-06-25 → 2010-06-28 (+3d) | 1d → 2d | 1d → 0d |
| 170 | **(INT01) Direcciones de farmacias, CAP y otra informacion breve** | 2010-06-18 → 2010-06-17 (-1d) | 2010-06-21 → 2010-06-18 (-3d) |  | 0d → 4d |
| 171 | Trabajo con listas de resultados | 2010-06-18 → 2010-06-17 (-1d) | 2010-06-21 → 2010-06-18 (-3d) |  | 0d → 4d |
| 172 | **(SIS01) Trazabilidad y registro de uso** |  | 2010-06-22 → 2010-06-25 (+3d) | 9d → 12d | 4d → 1d |
| 175 | Control General Acceso al Sistema | 2010-06-11 → 2010-06-14 (+3d) | 2010-06-14 → 2010-06-15 (+1d) |  | 10d → 9d |
| 176 | Control Acceso a Campañas de Seguimiento | 2010-06-21 → 2010-06-24 (+3d) | 2010-06-22 → 2010-06-25 (+3d) |  | 4d → 1d |
| 179 | Historial de Consultas |  | 2010-06-10 → 2010-06-11 (+1d) | 1d → 2d | 12d → 11d |
| 180 | **(ISC01) Transferir info, comunicacion a STARS** |  | 2010-06-14 → 2010-06-11 (-3d) | 3d → 2d | 10d → 11d |
| 181 | Recibir información del sistema de comunicaciones |  | 2010-06-14 → 2010-06-11 (-3d) | 3d → 2d | 10d → 11d |
| 182 | **(ISC02) Iniciar llamada desde STARS** |  | 2010-06-14 → 2010-06-10 (-4d) | 3d → 1d | 10d → 12d |
| 183 | Lanzamiento de petición de comunicación |  | 2010-06-14 → 2010-06-10 (-4d) | 3d → 1d | 10d → 12d |
| 184 | **(ISC03) Informacion encuesta** | 2010-06-04 → 2010-06-07 (+3d) | 2010-06-04 → 2010-06-07 (+3d) |  | 16d → 15d |
| 185 | Activación actividad de encuesta | 2010-06-04 → 2010-06-07 (+3d) | 2010-06-04 → 2010-06-07 (+3d) |  | 16d → 15d |
| 187 | ABM Usuarios | 2010-06-15 → 2010-06-14 (-1d) | 2010-06-15 → 2010-06-14 (-1d) |  | 6d → 9d |
| 188 | Proteccion de Acceso | 2010-06-16 → 2010-06-15 (-1d) | 2010-06-18 → 2010-06-15 (-3d) | 3d → 1d | 6d → 9d |
| 189 | ABM Fichas / Guias / Recursos |  | 2010-06-22 → 2010-06-18 (-4d) | 3d → 1d | 4d → 6d |
| 190 | ABM Cuestionarios | 2010-06-04 → 2010-06-07 (+3d) | 2010-06-04 → 2010-06-07 (+3d) |  | 16d → 15d |
| 191 | Interfaz General |  | 2010-06-23 → 2010-06-16 (-7d) | 10d → 5d | 3d → 8d |
| 193 | Interfaz de Listados para ADM02 | 2010-06-10 → 2010-06-09 (-1d) | 2010-06-16 → 2010-06-10 (-6d) | 5d → 2d | 8d → 12d |
| 194 | Interfaz Mantenimiento Usuarios y Perfiles | 2010-06-11 → 2010-06-14 (+3d) | 2010-06-17 → 2010-06-16 (-1d) | 5d → 3d | 7d → 8d |
| 195 | Interfaz Direcciones INT01 | 2010-06-22 → 2010-06-21 (-1d) | 2010-06-28 → 2010-06-22 (-6d) | 5d → 2d | 0d → 4d |
| 196 | ABM Enfermedades / Centros Salud | 2010-06-22 → 2010-06-21 (-1d) | 2010-06-23 → 2010-06-21 (-2d) | 2d → 1d | 3d → 5d |
| 197 | Listado de Usuarios y Perfiles | 2010-06-11 → 2010-06-14 (+3d) | 2010-06-11 → 2010-06-15 (+4d) | 1d → 2d | 11d → 9d |
| 198 | Interface con sistema de comunicaciones (ISC01, ISC02, ISC03) |  | 2010-06-16 → 2010-06-14 (-2d) | 5d → 3d | 8d → 10d |

## Version 5 (saved 2010-08-30, file Casos.Uso.Juan.Cruz.xml)

Note of the change: empezadas las horas

Last finish 2010-06-28 → 2010-05-21 (-38d).

Added:

| ID | Task | Duration | Start | Finish |
| --- | --- | --- | --- | --- |
| 198 | Listados Iniciales | 1d | 2010-05-06 | 2010-05-06 |

Removed: 199 Arquitectura General / Configuracion Ambientes; 200 Tareas IT Sobre Nuestra Empresa; 201 Compra Equipos Necesarios; 202 Infraestructura; 203 Preparacion de Ambientes en servidores; 204 Instalacion y Configuracion de Servidor DEV; 205 Instalacion y Configuracion de Servidores de Usos Multiples; 206 Redes; 207 Configuracion del FW; 208 Instalacion de pcs nuevos usuarios

Changed:

| ID | Task | Start | Finish | Duration | Total float | Predecessors |
| --- | --- | --- | --- | --- | --- | --- |
| 1 | Integracion con el Sistema STARS (Lectura Datos) | 2010-06-03 → 2010-05-06 (-28d) | 2010-06-09 → 2010-05-06 (-34d) | 5d → 1d | 0d → 300d | Arquitectura General / Configuracion Ambientes → none |
| 2 | Modulo Seguridad que Oculta Info Llamado | 2010-06-10 → 2010-05-06 (-35d) | 2010-06-14 → 2010-05-06 (-39d) | 3d → 1d | 4d → 1100d | 1 → none |
| 3 | **(GEN01) Identificacion y Autenticacion** | 2010-06-10 → 2010-05-07 (-34d) | 2010-06-11 → 2010-05-11 (-31d) | 2d → 3d | 4d → 0d | 1 → 199 |
| 4 | Autenticacion | 2010-06-10 → 2010-05-07 (-34d) | 2010-06-11 → 2010-05-10 (-32d) |  | 4d → 100d |  |
| 5 | Interfaz Inicio Sesion | 2010-06-10 → 2010-05-07 (-34d) | 2010-06-10 → 2010-05-11 (-30d) | 1d → 3d | 5d → 0d |  |
| 6 | **(GEN02) Gestion General de Registros** | 2010-06-10 → 2010-05-06 (-35d) | 2010-06-11 → 2010-05-11 (-31d) | 2d → 4d | 11d → 800d | 1 → none |
| 7 | ABM Registro | 2010-06-10 → 2010-05-06 (-35d) | 2010-06-10 → 2010-05-06 (-35d) |  | 12d → 800d |  |
| 8 | Buscar registro | 2010-06-10 → 2010-05-07 (-34d) | 2010-06-10 → 2010-05-07 (-34d) |  | 12d → 800d | none → 7 |
| 9 | Copiar registro | 2010-06-10 → 2010-05-07 (-34d) | 2010-06-10 → 2010-05-07 (-34d) |  | 12d → 1000d | none → 7 |
| 10 | Interfaz ABM Registro | 2010-06-10 → 2010-05-10 (-31d) | 2010-06-11 → 2010-05-11 (-31d) |  | 11d → 800d | none → 8 |
| 11 | **(USR01) Determinacion del servicio de atencion** | 2010-06-16 → 2010-05-12 (-35d) | 2010-06-16 → 2010-05-13 (-34d) | 1d → 2d | 4d → 0d | 74, 31 → 1, 3 |
| 12 | Capturar la Comunicación???? | 2010-06-16 → 2010-05-12 (-35d) | 2010-06-16 → 2010-05-12 (-35d) |  | 4d → 0d |  |
| 13 | Determinar el tipo de servicio | 2010-06-16 → 2010-05-13 (-34d) | 2010-06-16 → 2010-05-13 (-34d) |  | 4d → 0d | none → 12 |
| 14 | Lista de Espera | 2010-06-16 → 2010-05-13 (-34d) | 2010-06-16 → 2010-05-13 (-34d) |  | 4d → 0d | none → 12 |
| 15 | Determinar conjunto de operadores adecuados al tipo de solicitud | 2010-06-16 → 2010-05-12 (-35d) | 2010-06-16 → 2010-05-12 (-35d) |  | 4d → 100d |  |
| 16 | **(USR02) Agenda** | 2010-06-17 → 2010-05-12 (-36d) | 2010-06-18 → 2010-05-19 (-30d) | 2d → 6d | 1d → 0d |  |
| 17 | Selección de una agenda | 2010-06-17 → 2010-05-13 (-35d) | 2010-06-17 → 2010-05-13 (-35d) |  | 2d → 0d | none → 18 |
| 18 | ABM citas sobre la agenda | 2010-06-17 → 2010-05-12 (-36d) | 2010-06-17 → 2010-05-12 (-36d) |  | 2d → 0d |  |
| 19 | Interfaz de la Agenda | 2010-06-17 → 2010-05-14 (-34d) | 2010-06-18 → 2010-05-19 (-30d) | 2d → 4d | 1d → 0d | none → 17, 18, 20, 21 |
| 20 | Integracion con Stars - Llamada desde Agenda | 2010-06-17 → 2010-05-12 (-36d) | 2010-06-18 → 2010-05-12 (-37d) | 2d → 1d | 1d → 100d |  |
| 21 | Asignar pacientes a cita | 2010-06-17 → 2010-05-12 (-36d) | 2010-06-17 → 2010-05-12 (-36d) |  | 2d → 100d |  |
| 22 | (USR03) Rellamada | 2010-06-23 → 2010-05-12 (-42d) | 2010-06-24 → 2010-05-13 (-42d) |  | 2d → 600d |  |
| 23 | **(USR04) Consulta** | 2010-06-10 → 2010-05-14 (-27d) | 2010-06-11 → 2010-05-18 (-24d) | 2d → 3d |  | 1 → 11, 61, 67, 31, 74, 71 |
| 24 | **Tratar Consulta** | 2010-06-10 → 2010-05-14 (-27d) | 2010-06-10 → 2010-05-18 (-23d) | 1d → 3d | 1d → 0d | none → 61, 67 |
| 25 | Ajornar Consulta | 2010-06-10 → 2010-05-14 (-27d) | 2010-06-10 → 2010-05-17 (-24d) | 1d → 2d | 1d → 0d |  |
| 26 | Transferir consulta | 2010-06-10 → 2010-05-18 (-23d) | 2010-06-10 → 2010-05-18 (-23d) |  | 1d → 0d | none → 25 |
| 27 | Modulo Envio de Correo | 2010-06-10 → 2010-05-14 (-27d) | 2010-06-11 → 2010-05-14 (-28d) | 2d → 1d | 0d → 200d |  |
| 28 | Modulo Envio SMS | 2010-06-10 → 2010-05-14 (-27d) | 2010-06-11 → 2010-05-14 (-28d) | 2d → 1d | 0d → 200d |  |
| 29 | Inclusion en Campaña de Seguimiento | 2010-06-10 → 2010-05-14 (-27d) | 2010-06-11 → 2010-05-14 (-28d) | 2d → 1d | 0d → 200d |  |
| 30 | (USR05) Consejo Salud | 2010-06-17 → 2010-05-19 (-29d) | 2010-06-18 → 2010-05-21 (-28d) | 2d → 3d | 6d → 0d | 61, 67 → 61, 67, 23 |
| 31 | **(USR06) Gestionar Consulta pendiente** | 2010-06-14 → 2010-05-06 (-39d) | 2010-06-15 → 2010-05-11 (-35d) | 2d → 4d | 4d → 200d | 23 → none |
| 32 | Priorizacion de la Lista de Consultas | 2010-06-14 → 2010-05-06 (-39d) | 2010-06-15 → 2010-05-11 (-35d) | 2d → 4d | 4d → 200d |  |
| 33 | **(USR07) Programacion de cita previa** | 2010-06-17 → 2010-05-07 (-41d) | 2010-06-18 → 2010-05-10 (-39d) |  | 6d → 900d |  |
| 34 | Realizar Citación (Interface con Sistema de citación AP) | 2010-06-17 → 2010-05-07 (-41d) | 2010-06-18 → 2010-05-10 (-39d) |  | 6d → 900d |  |
| 35 | **(USR08) Gestiones sobre la TSI** | 2010-06-17 → 2010-05-19 (-29d) | 2010-06-18 → 2010-05-19 (-30d) | 2d → 1d | 4d → 200d | 74, 67, 23, 1 → 31, 74, 67, 23 |
| 36 | Verificacion Documentacion Necesaria | 2010-06-17 → 2010-05-19 (-29d) | 2010-06-17 → 2010-05-19 (-29d) |  | 5d → 200d |  |
| 37 | Enviar Gestion (Interface con sistema RCA) | 2010-06-17 → 2010-05-19 (-29d) | 2010-06-18 → 2010-05-19 (-30d) | 2d → 1d | 4d → 200d |  |
| 38 | Cierre automatico de la consulta por paso de tiempo | 2010-06-17 → 2010-05-19 (-29d) | 2010-06-17 → 2010-05-19 (-29d) |  | 5d → 200d |  |
| 39 | Guardar LOG gestion TSI????? | 2010-06-17 → 2010-05-19 (-29d) | 2010-06-17 → 2010-05-19 (-29d) |  | 5d → 200d |  |
| 40 | **(USR09) Servicio de traduccion** | 2010-06-17 → 2010-05-19 (-29d) | 2010-06-21 → 2010-05-19 (-33d) | 3d → 1d | 5d → 200d | 67 → 23, 67 |
| 41 | Contactar Servicio Externo de Traduccion | 2010-06-17 → 2010-05-19 (-29d) | 2010-06-18 → 2010-05-19 (-30d) | 2d → 1d | 6d → 200d |  |
| 42 | Enlace Comunicacion Multiconferencia | 2010-06-17 → 2010-05-19 (-29d) | 2010-06-21 → 2010-05-19 (-33d) | 3d → 1d | 5d → 200d |  |
| 43 | Modulo monitorización de servicio | 2010-06-17 → 2010-05-19 (-29d) | 2010-06-18 → 2010-05-19 (-30d) | 2d → 1d | 6d → 200d |  |
| 44 | **(USR10) Informacion Sanitaria General** | 2010-06-21 → 2010-05-19 (-33d) | 2010-06-22 → 2010-05-19 (-34d) | 2d → 1d | 4d → 200d | 67, 74, 170 → 67, 74, 170, 23 |
| 45 | Guardar Informacion Ciudadano | 2010-06-21 → 2010-05-19 (-33d) | 2010-06-22 → 2010-05-19 (-34d) | 2d → 1d | 4d → 200d |  |
| 46 | **(USR11) Seguimiento de Patologias** | 2010-06-21 → 2010-05-20 (-32d) | 2010-06-23 → 2010-05-20 (-34d) | 3d → 1d | 1d → 0d |  |
| 47 | Buscar Campañas Abiertas | 2010-06-21 → 2010-05-20 (-32d) | 2010-06-22 → 2010-05-20 (-33d) | 2d → 1d | 2d → 0d |  |
| 48 | **Gestionar Seguimiento** | 2010-06-21 → 2010-05-20 (-32d) | 2010-06-23 → 2010-05-20 (-34d) | 3d → 1d | 1d → 0d |  |
| 49 | Visualizar Historial Pacientes | 2010-06-21 → 2010-05-20 (-32d) | 2010-06-23 → 2010-05-20 (-34d) | 3d → 1d | 1d → 0d |  |
| 50 | Llamada al Paciente | 2010-06-21 → 2010-05-20 (-32d) | 2010-06-22 → 2010-05-20 (-33d) | 2d → 1d | 2d → 0d |  |
| 51 | Desligar paciente de campaña | 2010-06-21 → 2010-05-20 (-32d) | 2010-06-21 → 2010-05-20 (-32d) |  | 3d → 0d |  |
| 52 | **(USR12) Encuestas** | 2010-06-07 → 2010-05-06 (-32d) | 2010-06-08 → 2010-05-06 (-33d) | 2d → 1d | 12d → 1000d | 130 → none |
| 53 | Interfaz de Encuestas | 2010-06-07 → 2010-05-06 (-32d) | 2010-06-08 → 2010-05-06 (-33d) | 2d → 1d | 12d → 1000d |  |
| 54 | Contacto con Encuestado | 2010-06-07 → 2010-05-06 (-32d) | 2010-06-08 → 2010-05-06 (-33d) | 2d → 1d | 12d → 1000d |  |
| 55 | ABM Formulario De Encuesta | 2010-06-07 → 2010-05-06 (-32d) | 2010-06-07 → 2010-05-06 (-32d) |  | 13d → 1000d |  |
| 56 | **(USR13) Buscar Consultas** | 2010-06-17 → 2010-05-07 (-41d) | 2010-06-22 → 2010-05-07 (-46d) | 4d → 1d | 2d → 800d |  |
| 57 | **Operativo de Busqueda** | 2010-06-17 → 2010-05-07 (-41d) | 2010-06-22 → 2010-05-07 (-46d) | 4d → 1d | 2d → 800d |  |
| 58 | Buscar según distintos criterios | 2010-06-17 → 2010-05-07 (-41d) | 2010-06-22 → 2010-05-07 (-46d) | 4d → 1d | 2d → 800d |  |
| 59 | Filtrar resultados de la busqueda según permisos del usuario | 2010-06-17 → 2010-05-07 (-41d) | 2010-06-17 → 2010-05-07 (-41d) |  | 5d → 800d |  |
| 60 | Acotar resultados si los mismos sobrepasan el parametro configurable "n" | 2010-06-17 → 2010-05-07 (-41d) | 2010-06-17 → 2010-05-07 (-41d) |  | 5d → 800d |  |
| 61 | **(USR14) Hacer Uso de Documentos** | 2010-06-14 → 2010-05-06 (-39d) | 2010-06-15 → 2010-05-06 (-40d) | 2d → 1d | 0d → 500d | 23 → none |
| 62 | Creación y uso de Guias Interrogatorio | 2010-06-14 → 2010-05-06 (-39d) | 2010-06-15 → 2010-05-06 (-40d) | 2d → 1d | 0d → 500d |  |
| 63 | Creación y uso Fichas Tematicas | 2010-06-14 → 2010-05-06 (-39d) | 2010-06-15 → 2010-05-06 (-40d) | 2d → 1d | 0d → 500d |  |
| 64 | Creación y uso de Recursos | 2010-06-14 → 2010-05-06 (-39d) | 2010-06-15 → 2010-05-06 (-40d) | 2d → 1d | 0d → 500d |  |
| 65 | Búsqueda y selección de documentos | 2010-06-14 → 2010-05-06 (-39d) | 2010-06-15 → 2010-05-06 (-40d) | 2d → 1d | 0d → 500d |  |
| 66 | Apertura documentos | 2010-06-14 → 2010-05-06 (-39d) | 2010-06-14 → 2010-05-06 (-39d) |  | 1d → 500d |  |
| 67 | **(USR15) Cerrar consulta y dar respuesta al ciudadano** | 2010-06-14 → 2010-05-06 (-39d) | 2010-06-16 → 2010-05-06 (-41d) | 3d → 1d | 4d → 500d | 23 → none |
| 68 | Clasificar Finalizacion de Consulta | 2010-06-14 → 2010-05-06 (-39d) | 2010-06-16 → 2010-05-06 (-41d) | 3d → 1d | 4d → 500d |  |
| 69 | Adición de motivo de cierre a la consulta | 2010-06-14 → 2010-05-06 (-39d) | 2010-06-14 → 2010-05-06 (-39d) |  | 6d → 500d |  |
| 70 | Creación de clasificaciones ad-hoc | 2010-06-14 → 2010-05-06 (-39d) | 2010-06-15 → 2010-05-06 (-40d) | 2d → 1d | 5d → 500d |  |

| ID | Task | Start | Finish | Duration | Total float | Predecessors |
| --- | --- | --- | --- | --- | --- | --- |
| 71 | **(USR16) Visualizar Consulta** | 2010-06-14 → 2010-05-06 (-39d) | 2010-06-16 → 2010-05-06 (-41d) | 3d → 1d | 1d → 300d | 23 → none |
| 72 | Mostrar datos generales de la consulta | 2010-06-14 → 2010-05-06 (-39d) | 2010-06-16 → 2010-05-06 (-41d) | 3d → 1d | 1d → 300d |  |
| 73 | Mostrar datos según el documento elegido | 2010-06-14 → 2010-05-06 (-39d) | 2010-06-16 → 2010-05-06 (-41d) | 3d → 1d | 1d → 300d |  |
| 74 | **(USR17) Crear/Transferir Consulta** | 2010-06-14 → 2010-05-06 (-39d) | 2010-06-15 → 2010-05-06 (-40d) | 2d → 1d | 4d → 500d | 23 → none |
| 75 | Crear Consulta | 2010-06-14 → 2010-05-06 (-39d) | 2010-06-15 → 2010-05-06 (-40d) | 2d → 1d | 4d → 500d |  |
| 76 | Copiar consulta | 2010-06-14 → 2010-05-06 (-39d) | 2010-06-14 → 2010-05-06 (-39d) |  | 5d → 500d |  |
| 77 | **Transferir Consulta** | 2010-06-14 → 2010-05-06 (-39d) | 2010-06-14 → 2010-05-06 (-39d) |  | 5d → 500d |  |
| 78 | Localizar a otro operador del mismo perfil | 2010-06-14 → 2010-05-06 (-39d) | 2010-06-14 → 2010-05-06 (-39d) |  | 5d → 500d |  |
| 79 | **(ADM01) Mantenimiento del Entorno, clasif y prioridades** | 2010-06-03 → 2010-05-07 (-27d) | 2010-06-07 → 2010-05-07 (-31d) | 3d → 1d | 10d → 800d | Arquitectura General / Configuracion Ambientes → 193 |
| 80 | Módulo de edición de parametros grales de la aplicación | 2010-06-03 → 2010-05-07 (-27d) | 2010-06-07 → 2010-05-07 (-31d) | 3d → 1d | 10d → 800d |  |
| 81 | Módulo edición listas de clasificaciones (Códigos internos) | 2010-06-03 → 2010-05-07 (-27d) | 2010-06-04 → 2010-05-07 (-28d) | 2d → 1d | 11d → 800d |  |
| 82 | **Módulo mantenimiento de la lista de espera** | 2010-06-03 → 2010-05-07 (-27d) | 2010-06-04 → 2010-05-07 (-28d) | 2d → 1d | 11d → 800d |  |
| 83 | ABM de la lista de espera | 2010-06-03 → 2010-05-07 (-27d) | 2010-06-03 → 2010-05-07 (-27d) |  | 12d → 800d |  |
| 84 | Módulo de gestión de prioridades sobre la lista de espera | 2010-06-03 → 2010-05-07 (-27d) | 2010-06-04 → 2010-05-07 (-28d) | 2d → 1d | 11d → 800d |  |
| 85 | **Módulo mantenimiento de lineas de servicio** | 2010-06-03 → 2010-05-07 (-27d) | 2010-06-03 → 2010-05-07 (-27d) |  | 12d → 800d |  |
| 86 | ABM lineas de servicio | 2010-06-03 → 2010-05-07 (-27d) | 2010-06-03 → 2010-05-07 (-27d) |  | 12d → 800d |  |
| 87 | ABM servicios para una linea seleccionada | 2010-06-03 → 2010-05-07 (-27d) | 2010-06-03 → 2010-05-07 (-27d) |  | 12d → 800d |  |
| 88 | **Módulo mantenimiento agendas** | 2010-06-03 → 2010-05-07 (-27d) | 2010-06-03 → 2010-05-07 (-27d) |  | 12d → 800d |  |
| 89 | Asignar operadores a agenda | 2010-06-03 → 2010-05-07 (-27d) | 2010-06-03 → 2010-05-07 (-27d) |  | 12d → 800d |  |
| 90 | ABM de usuarios de la agenda | 2010-06-03 → 2010-05-07 (-27d) | 2010-06-03 → 2010-05-07 (-27d) |  | 12d → 800d |  |
| 91 | ABM citas de la agenda | 2010-06-03 → 2010-05-07 (-27d) | 2010-06-03 → 2010-05-07 (-27d) |  | 12d → 800d |  |
| 92 | **Módulo mantenimiento BBDD** | 2010-06-03 → 2010-05-07 (-27d) | 2010-06-04 → 2010-05-07 (-28d) | 2d → 1d | 11d → 800d |  |
| 93 | Módulo comprobación de formato de archivo | 2010-06-03 → 2010-05-07 (-27d) | 2010-06-03 → 2010-05-07 (-27d) |  | 12d → 800d |  |
| 94 | Módulo actualización de BBDD | 2010-06-03 → 2010-05-07 (-27d) | 2010-06-04 → 2010-05-07 (-28d) | 2d → 1d | 11d → 800d |  |
| 95 | **(ADM02) Extraccion de estadisticas y listados** | 2010-06-08 → 2010-05-07 (-32d) | 2010-06-08 → 2010-05-07 (-32d) |  | 12d → 1000d | 79 → 143, 149, 153, 194 |
| 96 | Listados De Administración | 2010-06-08 → 2010-05-07 (-32d) | 2010-06-08 → 2010-05-07 (-32d) |  | 12d → 1000d |  |
| 97 | **Listados Comunes** | 2010-06-08 → 2010-05-07 (-32d) | 2010-06-08 → 2010-05-07 (-32d) |  | 12d → 1000d |  |
| 98 | Detalle de estado de finalización consulta/acción | 2010-06-08 → 2010-05-07 (-32d) | 2010-06-08 → 2010-05-07 (-32d) |  | 12d → 1000d |  |
| 99 | Listado de clasificaciones | 2010-06-08 → 2010-05-07 (-32d) | 2010-06-08 → 2010-05-07 (-32d) |  | 12d → 1000d |  |
| 100 | Listados de incidencias en las comunicaciones | 2010-06-08 → 2010-05-07 (-32d) | 2010-06-08 → 2010-05-07 (-32d) |  | 12d → 1000d |  |
| 101 | Ratios por usuario | 2010-06-08 → 2010-05-07 (-32d) | 2010-06-08 → 2010-05-07 (-32d) |  | 12d → 1000d |  |
| 102 | Finales de servicio | 2010-06-08 → 2010-05-07 (-32d) | 2010-06-08 → 2010-05-07 (-32d) |  | 12d → 1000d |  |
| 103 | **(ADM03) Mantenimiento de documentos** | 2010-06-21 → 2010-05-10 (-42d) | 2010-06-24 → 2010-05-11 (-44d) | 4d → 2d | 0d → 800d | 111 → 149, 167, 111 |
| 104 | Creación y edición de documentos | 2010-06-23 → 2010-05-11 (-43d) | 2010-06-24 → 2010-05-11 (-44d) | 2d → 1d | 0d → 800d |  |
| 105 | Borrado de documentos | 2010-06-21 → 2010-05-10 (-42d) | 2010-06-21 → 2010-05-10 (-42d) |  | 3d → 900d |  |
| 106 | Clasificación de documentos | 2010-06-21 → 2010-05-10 (-42d) | 2010-06-21 → 2010-05-10 (-42d) |  | 3d → 900d |  |
| 107 | Búsqueda de documentos | 2010-06-21 → 2010-05-10 (-42d) | 2010-06-22 → 2010-05-10 (-43d) | 2d → 1d | 2d → 900d |  |
| 108 | (ADM04) Mantenimiento de Recursos | 2010-06-16 → 2010-05-07 (-40d) | 2010-06-17 → 2010-05-07 (-41d) | 2d → 1d | 0d → 900d | 61 → 190 |
| 109 | (ADM05) Mantenimiento de guias de interrogatorio | 2010-06-21 → 2010-05-10 (-42d) | 2010-06-22 → 2010-05-10 (-43d) | 2d → 1d | 0d → 800d | 111, 61 → 111, 190 |
| 110 | (ADM06) Mantenimiento de Fichas tematicas | 2010-06-21 → 2010-05-10 (-42d) | 2010-06-22 → 2010-05-10 (-43d) | 2d → 1d | 0d → 800d | 111, 61 → 111, 190 |
| 111 | **(ADM07) Mantenimiento de relaciones sobre guias de interrogatorio y fichas tematicas** | 2010-06-18 → 2010-05-07 (-42d) | 2010-06-18 → 2010-05-07 (-42d) |  | 0d → 800d | 108 → 190 |
| 112 | Adición de documentos a fichas temáticas | 2010-06-18 → 2010-05-07 (-42d) | 2010-06-18 → 2010-05-07 (-42d) |  | 0d → 800d |  |
| 113 | Adición de documentos a guias de interrogatorio | 2010-06-18 → 2010-05-07 (-42d) | 2010-06-18 → 2010-05-07 (-42d) |  | 0d → 800d |  |
| 114 | **(ADM08) Mantenimiento de encuestas** | 2010-06-07 → 2010-05-06 (-32d) | 2010-06-07 → 2010-05-06 (-32d) |  | 15d → 1100d | 130 → none |
| 115 | **Mantenimiento Indice de Encuestas** | 2010-06-07 → 2010-05-06 (-32d) | 2010-06-07 → 2010-05-06 (-32d) |  | 15d → 1100d |  |
| 116 | Mantener Ediciones | 2010-06-07 → 2010-05-06 (-32d) | 2010-06-07 → 2010-05-06 (-32d) |  | 15d → 1100d |  |
| 117 | Cierre de ediciones | 2010-06-07 → 2010-05-06 (-32d) | 2010-06-07 → 2010-05-06 (-32d) |  | 15d → 1100d |  |
| 118 | Asignación de formulario a encuesta | 2010-06-07 → 2010-05-06 (-32d) | 2010-06-07 → 2010-05-06 (-32d) |  | 15d → 1100d |  |
| 119 | Asignación de operadores a encuesta | 2010-06-07 → 2010-05-06 (-32d) | 2010-06-07 → 2010-05-06 (-32d) |  | 15d → 1100d |  |
| 120 | **Asignación lista de encuestados** | 2010-06-07 → 2010-05-06 (-32d) | 2010-06-07 → 2010-05-06 (-32d) |  | 15d → 1100d |  |
| 121 | Alta, baja de encuestados | 2010-06-07 → 2010-05-06 (-32d) | 2010-06-07 → 2010-05-06 (-32d) |  | 15d → 1100d |  |
| 122 | Asignación automática en base a un archivo de texto | 2010-06-07 → 2010-05-06 (-32d) | 2010-06-07 → 2010-05-06 (-32d) |  | 15d → 1100d |  |
| 123 | Publicar Encuestas | 2010-06-07 → 2010-05-06 (-32d) | 2010-06-07 → 2010-05-06 (-32d) |  | 15d → 1100d |  |
| 124 | **(ADM09) Mantenimiento de seguimiento de patologias** | 2010-06-08 → 2010-05-06 (-33d) | 2010-06-09 → 2010-05-06 (-34d) | 2d → 1d | 11d → 1100d | 79 → none |
| 125 | Mantenimiento Indice de campañas de seguimiento | 2010-06-08 → 2010-05-06 (-33d) | 2010-06-09 → 2010-05-06 (-34d) | 2d → 1d | 11d → 1100d |  |
| 126 | Asignación de formulario a campaña de seguimiento | 2010-06-08 → 2010-05-06 (-33d) | 2010-06-08 → 2010-05-06 (-33d) |  | 12d → 1100d |  |
| 127 | Asignación de operadores a campaña de seguimiento | 2010-06-08 → 2010-05-06 (-33d) | 2010-06-08 → 2010-05-06 (-33d) |  | 12d → 1100d |  |
| 128 | Asignación de listas de pacientes | 2010-06-08 → 2010-05-06 (-33d) | 2010-06-08 → 2010-05-06 (-33d) |  | 12d → 1100d |  |
| 129 | Activación/ Desactivación de campañas | 2010-06-08 → 2010-05-06 (-33d) | 2010-06-08 → 2010-05-06 (-33d) |  | 12d → 1100d |  |
| 130 | **(ADM10) Creacion de formularios de encuesta y seguimiento** | 2010-06-03 → 2010-05-07 (-27d) | 2010-06-04 → 2010-05-07 (-28d) | 2d → 1d | 12d → 1000d | Arquitectura General / Configuracion Ambientes → 191 |
| 131 | Mantener Indice de Encuesta | 2010-06-03 → 2010-05-07 (-27d) | 2010-06-04 → 2010-05-07 (-28d) | 2d → 1d | 12d → 1000d |  |
| 132 | Crear y Editar Encuestas | 2010-06-03 → 2010-05-07 (-27d) | 2010-06-03 → 2010-05-07 (-27d) |  | 13d → 1000d |  |
| 133 | **(ADM11) Mantenimiento de usuarios, perfiles y permisos** | 2010-06-10 → 2010-05-07 (-34d) | 2010-06-11 → 2010-05-07 (-35d) | 2d → 1d | 8d → 900d | 1 → 195 |
| 134 | Mantenimiento Opciones Funcionales | 2010-06-10 → 2010-05-07 (-34d) | 2010-06-11 → 2010-05-07 (-35d) | 2d → 1d | 8d → 900d |  |
| 135 | **Mantener Perfiles Trabajo** | 2010-06-10 → 2010-05-07 (-34d) | 2010-06-10 → 2010-05-07 (-34d) |  | 9d → 900d |  |
| 136 | Alta, modificación de perfiles | 2010-06-10 → 2010-05-07 (-34d) | 2010-06-10 → 2010-05-07 (-34d) |  | 9d → 900d |  |
| 137 | ABM de opciones funcionales a perfil | 2010-06-10 → 2010-05-07 (-34d) | 2010-06-10 → 2010-05-07 (-34d) |  | 9d → 900d |  |
| 138 | Adición de responsabilidades a opciones funcionales | 2010-06-10 → 2010-05-07 (-34d) | 2010-06-10 → 2010-05-07 (-34d) |  | 9d → 900d |  |
| 139 | **Mantener Usuarios** | 2010-06-10 → 2010-05-07 (-34d) | 2010-06-10 → 2010-05-07 (-34d) |  | 9d → 900d |  |
| 140 | Creación/gestion de usuarios | 2010-06-10 → 2010-05-07 (-34d) | 2010-06-10 → 2010-05-07 (-34d) |  | 9d → 900d |  |

| ID | Task | Start | Finish | Duration | Total float | Predecessors |
| --- | --- | --- | --- | --- | --- | --- |
| 141 | Asiganción de perfil a usuario | 2010-06-10 → 2010-05-07 (-34d) | 2010-06-10 → 2010-05-07 (-34d) |  | 9d → 900d |  |
| 142 | Asignación de agendas a usuario | 2010-06-10 → 2010-05-07 (-34d) | 2010-06-10 → 2010-05-07 (-34d) |  | 9d → 900d |  |
| 143 | **(ADM12) Listado de acciones proactivas** | 2010-06-10 → 2010-05-06 (-35d) | 2010-06-11 → 2010-05-06 (-36d) | 2d → 1d | 11d → 1000d | 95, 124 → none |
| 144 | Módulo de elaboraciónde informes de estado de campaña de seguimiento | 2010-06-10 → 2010-05-06 (-35d) | 2010-06-11 → 2010-05-06 (-36d) | 2d → 1d | 11d → 1000d |  |
| 145 | Módulo de elaboración de informes de estado de encuesta | 2010-06-10 → 2010-05-06 (-35d) | 2010-06-11 → 2010-05-06 (-36d) | 2d → 1d | 11d → 1000d |  |
| 146 | Módulo de elaboración de informes de ediciones de encuestas | 2010-06-10 → 2010-05-06 (-35d) | 2010-06-11 → 2010-05-06 (-36d) | 2d → 1d | 11d → 1000d |  |
| 147 | Módulo de elaboración de listados de campañas de seguimiento | 2010-06-10 → 2010-05-06 (-35d) | 2010-06-11 → 2010-05-06 (-36d) | 2d → 1d | 11d → 1000d |  |
| 148 | Módulo de elaboración de listados de información de encuestas | 2010-06-10 → 2010-05-06 (-35d) | 2010-06-11 → 2010-05-06 (-36d) | 2d → 1d | 11d → 1000d |  |
| 149 | **(ADM13) Listados de documentos** | 2010-06-25 → 2010-05-06 (-50d) | 2010-06-28 → 2010-05-06 (-53d) | 2d → 1d | 0d → 1000d | 95, 103 → none |
| 150 | Elaboración de listado de configuración | 2010-06-25 → 2010-05-06 (-50d) | 2010-06-28 → 2010-05-06 (-53d) | 2d → 1d | 0d → 1000d |  |
| 151 | Elaboración de listado de uso | 2010-06-25 → 2010-05-06 (-50d) | 2010-06-28 → 2010-05-06 (-53d) | 2d → 1d | 0d → 1000d |  |
| 152 | Elaboración de listado de asociaciones | 2010-06-25 → 2010-05-06 (-50d) | 2010-06-28 → 2010-05-06 (-53d) | 2d → 1d | 0d → 1000d |  |
| 153 | **(ADM14) Listado sobre consultas** | 2010-06-14 → 2010-05-06 (-39d) | 2010-06-15 → 2010-05-06 (-40d) | 2d → 1d | 9d → 1000d | 95, 23 → none |
| 154 | Módulo de obtención de listados de consulta por ciudadano | 2010-06-14 → 2010-05-06 (-39d) | 2010-06-15 → 2010-05-06 (-40d) | 2d → 1d | 9d → 1000d |  |
| 155 | Módulo de obtención de listados de consultas con cierre principal | 2010-06-14 → 2010-05-06 (-39d) | 2010-06-15 → 2010-05-06 (-40d) | 2d → 1d | 9d → 1000d |  |
| 156 | Módulo de obtención de listados de consulta con cierre secundario | 2010-06-14 → 2010-05-06 (-39d) | 2010-06-15 → 2010-05-06 (-40d) | 2d → 1d | 9d → 1000d |  |
| 157 | Módulo de obtención de listados de consulta por motivo de cierre | 2010-06-14 → 2010-05-06 (-39d) | 2010-06-15 → 2010-05-06 (-40d) | 2d → 1d | 9d → 1000d |  |
| 158 | Módulo de obtención de listado de resumen de consultas por servicio | 2010-06-14 → 2010-05-06 (-39d) | 2010-06-15 → 2010-05-06 (-40d) | 2d → 1d | 9d → 1000d |  |
| 159 | Módulo de obtención de listado de consultas por área geográfica | 2010-06-14 → 2010-05-06 (-39d) | 2010-06-15 → 2010-05-06 (-40d) | 2d → 1d | 9d → 1000d |  |
| 160 | Módulo de obtención de listado de consultas por usuario | 2010-06-14 → 2010-05-06 (-39d) | 2010-06-15 → 2010-05-06 (-40d) | 2d → 1d | 9d → 1000d |  |
| 161 | Módulo de obtención de listado de consultas pendientes | 2010-06-14 → 2010-05-06 (-39d) | 2010-06-15 → 2010-05-06 (-40d) | 2d → 1d | 9d → 1000d |  |
| 162 | **(ADM15) Mantener Asignaciones TSI** | 2010-06-21 → 2010-05-10 (-42d) | 2010-06-22 → 2010-05-10 (-43d) | 2d → 1d | 4d → 900d | 79, 35 → 79 |
| 163 | **Módulo de envío de datos a CatSalut** | 2010-06-21 → 2010-05-10 (-42d) | 2010-06-22 → 2010-05-10 (-43d) | 2d → 1d | 4d → 900d |  |
| 164 | Recolección de datos de operaciones TSI pendientes | 2010-06-21 → 2010-05-10 (-42d) | 2010-06-22 → 2010-05-10 (-43d) | 2d → 1d | 4d → 900d |  |
| 165 | Migración de los datos a archivo TXT | 2010-06-21 → 2010-05-10 (-42d) | 2010-06-22 → 2010-05-10 (-43d) | 2d → 1d | 4d → 900d |  |
| 166 | Interface de comunicación con CatSalut | 2010-06-21 → 2010-05-10 (-42d) | 2010-06-22 → 2010-05-10 (-43d) | 2d → 1d | 4d → 900d |  |
| 167 | **(ADM16) Asignar documentos a acciones** | 2010-06-25 → 2010-05-06 (-50d) | 2010-06-28 → 2010-05-06 (-53d) | 2d → 1d | 0d → 1000d | 103 → none |
| 168 | Creación/eliminación de asociaciones | 2010-06-25 → 2010-05-06 (-50d) | 2010-06-28 → 2010-05-06 (-53d) | 2d → 1d | 0d → 1000d |  |
| 169 | Cadicidad de asociaciones | 2010-06-25 → 2010-05-06 (-50d) | 2010-06-25 → 2010-05-06 (-50d) |  | 1d → 1000d |  |
| 170 | **(INT01) Direcciones de farmacias, CAP y otra informacion breve** | 2010-06-17 → 2010-05-14 (-34d) | 2010-06-18 → 2010-05-14 (-35d) | 2d → 1d | 4d → 400d | 11, 61, 79 → 11, 196, 61, 79 |
| 171 | Trabajo con listas de resultados | 2010-06-17 → 2010-05-14 (-34d) | 2010-06-18 → 2010-05-14 (-35d) | 2d → 1d | 4d → 400d |  |
| 172 | **(SIS01) Trazabilidad y registro de uso** | 2010-06-10 → 2010-05-06 (-35d) | 2010-06-25 → 2010-05-21 (-35d) |  | 1d → 0d | 1 → none |
| 173 | Control Acceso a Consultas | 2010-06-14 → 2010-05-19 (-26d) | 2010-06-15 → 2010-05-19 (-27d) | 2d → 1d | 9d → 200d |  |
| 174 | Control Acceso a Encuestas | 2010-06-10 → 2010-05-07 (-34d) | 2010-06-11 → 2010-05-07 (-35d) | 2d → 1d | 11d → 1000d |  |
| 175 | Control General Acceso al Sistema | 2010-06-14 → 2010-05-10 (-35d) | 2010-06-15 → 2010-05-10 (-36d) | 2d → 1d | 9d → 900d |  |
| 176 | Control Acceso a Campañas de Seguimiento | 2010-06-24 → 2010-05-21 (-34d) | 2010-06-25 → 2010-05-21 (-35d) | 2d → 1d | 1d → 0d |  |
| 177 | Control Acceso a Documentos | 2010-06-16 → 2010-05-07 (-40d) | 2010-06-17 → 2010-05-07 (-41d) | 2d → 1d | 7d → 1000d |  |
| 178 | Control Acceso a Recursos Internos | 2010-06-10 → 2010-05-06 (-35d) | 2010-06-11 → 2010-05-06 (-36d) | 2d → 1d | 11d → 1100d |  |
| 179 | Historial de Consultas | 2010-06-10 → 2010-05-06 (-35d) | 2010-06-11 → 2010-05-06 (-36d) | 2d → 1d | 11d → 1100d |  |
| 180 | **(ISC01) Transferir info, comunicacion a STARS** | 2010-06-10 → 2010-05-06 (-35d) | 2010-06-11 → 2010-05-06 (-36d) | 2d → 1d | 11d → 1100d | 1 → none |
| 181 | Recibir información del sistema de comunicaciones | 2010-06-10 → 2010-05-06 (-35d) | 2010-06-11 → 2010-05-06 (-36d) | 2d → 1d | 11d → 1100d |  |
| 182 | **(ISC02) Iniciar llamada desde STARS** | 2010-06-10 → 2010-05-06 (-35d) | 2010-06-10 → 2010-05-06 (-35d) |  | 12d → 1100d | 1 → none |
| 183 | Lanzamiento de petición de comunicación | 2010-06-10 → 2010-05-06 (-35d) | 2010-06-10 → 2010-05-06 (-35d) |  | 12d → 1100d |  |
| 184 | **(ISC03) Informacion encuesta** | 2010-06-07 → 2010-05-06 (-32d) | 2010-06-07 → 2010-05-06 (-32d) |  | 15d → 1100d | 130 → none |
| 185 | Activación actividad de encuesta | 2010-06-07 → 2010-05-06 (-32d) | 2010-06-07 → 2010-05-06 (-32d) |  | 15d → 1100d |  |
| 187 | ABM Consultas | 2010-06-14 → 2010-05-06 (-39d) | 2010-06-14 → 2010-05-06 (-39d) |  | 10d → 1100d | 23 → none |
| 188 | ABM Usuarios | 2010-06-14 → 2010-05-06 (-39d) | 2010-06-14 → 2010-05-06 (-39d) |  | 9d → 1000d | 3 → none |
| 189 | Proteccion de Acceso | 2010-06-15 → 2010-05-07 (-39d) | 2010-06-15 → 2010-05-07 (-39d) |  | 9d → 1000d |  |
| 190 | ABM Fichas / Guias / Recursos | 2010-06-18 → 2010-05-06 (-43d) | 2010-06-18 → 2010-05-06 (-43d) |  | 6d → 800d | 108 → none |
| 191 | ABM Cuestionarios | 2010-06-07 → 2010-05-06 (-32d) | 2010-06-07 → 2010-05-06 (-32d) |  | 15d → 1000d | 130 → none |
| 192 | Interfaz General | 2010-06-10 → 2010-05-06 (-35d) | 2010-06-16 → 2010-05-06 (-41d) | 5d → 1d | 8d → 1100d | 1 → none |
| 193 | Interfaz Para Usuario Avanzado | 2010-06-08 → 2010-05-06 (-33d) | 2010-06-14 → 2010-05-06 (-39d) | 5d → 1d | 10d → 800d | 79 → none |
| 194 | Interfaz de Listados para ADM02 | 2010-06-09 → 2010-05-06 (-34d) | 2010-06-10 → 2010-05-06 (-35d) | 2d → 1d | 12d → 1000d | 95 → none |
| 195 | Interfaz Mantenimiento Usuarios y Perfiles | 2010-06-14 → 2010-05-06 (-39d) | 2010-06-16 → 2010-05-06 (-41d) | 3d → 1d | 8d → 900d | 133 → none |
| 196 | Interfaz Direcciones INT01 | 2010-06-21 → 2010-05-06 (-46d) | 2010-06-22 → 2010-05-06 (-47d) | 2d → 1d | 4d → 900d | 170 → none |
| 197 | ABM Enfermedades / Centros Salud | 2010-06-21 → 2010-05-06 (-46d) | 2010-06-21 → 2010-05-06 (-46d) |  | 5d → 1100d | 170 → none |
| 199 | Listado de Usuarios y Perfiles | 2010-06-14 → 2010-05-06 (-39d) | 2010-06-15 → 2010-05-06 (-40d) | 2d → 1d | 9d → 0d | 133 → none |
| 200 | Interface con sistema de comunicaciones (ISC01, ISC02, ISC03) | 2010-06-10 → 2010-05-06 (-35d) | 2010-06-14 → 2010-05-06 (-39d) | 3d → 1d | 10d → 1100d | 1 → none |

## Version 6 (saved 2010-09-01, file Casos Uso Lole Con Recursos 2010 Version Previa.mpp)

Note of the change: Version no final

Last finish 2010-05-21 → 2010-08-04 (+75d).

Added:

| ID | Task | Duration | Start | Finish | Predecessors | Constraint | Resources |
| --- | --- | --- | --- | --- | --- | --- | --- |
| 200 | Arquitectura General / Configuracion Ambientes | 15d | 2010-05-12 | 2010-06-01 | 205 |  | Arquitecto |
| 201 | **Tareas IT Sobre Nuestra Empresa** | 24d | 2010-05-06 | 2010-06-08 |  |  |  |
| 202 | Compra Equipos Necesarios | 1.5d | 2010-05-06 | 2010-05-07 |  | start no earlier than 2010-05-06 | Programador Jr 1; Programador Jr 2 |
| 203 | **Infraestructura** | 9d | 2010-05-06 | 2010-05-18 |  |  |  |
| 204 | Preparacion de Ambientes en servidores | 1d | 2010-05-06 | 2010-05-06 |  | start no earlier than 2010-05-06 | IT 1 |
| 205 | Instalacion y Configuracion de Servidor DEV | 3d | 2010-05-07 | 2010-05-11 |  |  | IT 1 |
| 206 | Instalacion y Configuracion de Servidores de Usos Multiples | 5d | 2010-05-12 | 2010-05-18 |  | start no earlier than 2010-05-11 | IT 1 |
| 207 | **Redes** | 3d | 2010-06-04 | 2010-06-08 | 203 |  |  |
| 208 | Configuracion del FW | 3d | 2010-06-04 | 2010-06-08 |  | start no earlier than 2010-06-04 | IT 1 |
| 209 | Instalacion de pcs nuevos usuarios | 2.5d | 2010-05-07 | 2010-05-11 | 202 | start no earlier than 2010-05-07 | Programador Jr 1; Programador Jr 2 |

Removed: 198 Listados Iniciales

Changed:

| ID | Task | Start | Finish | Duration | Total float | Predecessors | Other |
| --- | --- | --- | --- | --- | --- | --- | --- |
| 1 | Integracion con el Sistema STARS (Lectura Datos) | 2010-05-06 → 2010-06-02 (+27d) | 2010-05-06 → 2010-06-07 (+32d) | 1d → 4d | 300d → 18d | none → 200 | resources none → Programador Sr 1; Programador Sr 2 |
| 2 | Modulo Seguridad que Oculta Info Llamado | 2010-05-06 → 2010-06-08 (+33d) | 2010-05-06 → 2010-06-09 (+34d) | 1d → 1.5d | 1100d → 36.5d | none → 1 | resources none → Programador Sr 2; Programador Sr 1 |
| 3 | **(GEN01) Identificacion y Autenticacion** | 2010-05-07 → 2010-06-08 (+32d) | 2010-05-11 → 2010-06-10 (+30d) |  | 0d → 31.5d | 197 → 1 |  |
| 4 | Autenticacion | 2010-05-07 → 2010-06-08 (+32d) | 2010-05-10 → 2010-06-09 (+30d) |  | 100d → 29d |  | resources none → Prog SSr 1 |
| 5 | Interfaz Inicio Sesion | 2010-05-07 → 2010-06-08 (+32d) | 2010-05-11 → 2010-06-10 (+30d) |  | 0d → 28d |  | resources none → Prog SSr 2 |
| 6 | **(GEN02) Gestion General de Registros** | 2010-05-06 → 2010-06-09 (+34d) | 2010-05-11 → 2010-06-17 (+37d) | 4d → 6.5d | 800d → 33.5d | none → 1 |  |
| 7 | ABM Registro | 2010-05-06 → 2010-06-10 (+35d) | 2010-05-06 → 2010-06-14 (+39d) |  | 800d → 33.5d |  | constraint none → finish no earlier than 2010-06-10; resources none → Programador Jr 1 |
| 8 | Buscar registro | 2010-05-07 → 2010-06-11 (+35d) | 2010-05-07 → 2010-06-11 (+35d) |  | 800d → 34d | 7 → none | constraint none → start no earlier than 2010-06-09; resources none → Programador Jr 1 |
| 9 | Copiar registro | 2010-05-07 → 2010-06-09 (+33d) | 2010-05-07 → 2010-06-10 (+34d) |  | 1000d → 35.5d | 7 → none | constraint none → start no earlier than 2010-06-09; resources none → Programador Jr 1 |
| 10 | Interfaz ABM Registro | 2010-05-10 → 2010-06-15 (+36d) | 2010-05-11 → 2010-06-17 (+37d) | 2d → 3d | 800d → 30d | 8 → none | resources none → Prog SSr 2 |
| 11 | **(USR01) Determinacion del servicio de atencion** | 2010-05-12 → 2010-07-20 (+69d) | 2010-05-13 → 2010-07-21 (+69d) |  | 0d → 2.5d | 1, 3 → 74, 31 |  |
| 12 | Capturar la Comunicación???? | 2010-05-12 → 2010-07-21 (+70d) | 2010-05-12 → 2010-07-21 (+70d) |  | 0d → 2.5d |  | constraint none → start no earlier than 2010-07-21; resources none → Programador Jr 1 |
| 13 | Determinar el tipo de servicio | 2010-05-13 → 2010-07-20 (+68d) | 2010-05-13 → 2010-07-20 (+68d) |  | 0d → 3.5d | 12 → none | constraint none → start no earlier than 2010-06-28; resources none → Programador Jr 2 |
| 14 | Lista de Espera | 2010-05-13 → 2010-07-20 (+68d) | 2010-05-13 → 2010-07-20 (+68d) |  | 0d → 3.5d | 12 → none | constraint none → start no earlier than 2010-06-29; resources none → Programador Jr 1 |
| 15 | Determinar conjunto de operadores adecuados al tipo de solicitud | 2010-05-12 → 2010-07-21 (+70d) | 2010-05-12 → 2010-07-21 (+70d) |  | 100d → 2.5d |  | constraint none → start no earlier than 2010-07-21; resources none → Programador Jr 2 |
| 16 | **(USR02) Agenda** | 2010-05-12 → 2010-06-17 (+36d) | 2010-05-19 → 2010-07-16 (+58d) | 6d → 22d | 0d → 8.5d |  |  |
| 17 | Selección de una agenda | 2010-05-13 → 2010-06-22 (+40d) | 2010-05-13 → 2010-06-23 (+41d) |  | 0d → 22.5d | 18 → none | constraint none → start no earlier than 2010-06-17; resources none → Programador Jr 1 |
| 18 | ABM citas sobre la agenda | 2010-05-12 → 2010-06-21 (+40d) | 2010-05-12 → 2010-06-22 (+41d) |  | 0d → 23.5d |  | constraint none → start no earlier than 2010-06-16; resources none → Programador Jr 1 |
| 19 | Interfaz de la Agenda | 2010-05-14 → 2010-06-18 (+35d) | 2010-05-19 → 2010-06-21 (+33d) | 4d → 2d | 0d → 24d | 17, 18, 20, 21 → none | resources none → Programador Jr 2 |
| 20 | Integracion con Stars - Llamada desde Agenda | 2010-05-12 → 2010-07-14 (+63d) | 2010-05-12 → 2010-07-16 (+65d) | 1d → 3d | 100d → 8.5d |  | resources none → Prog SSr 1; Prog SSr 2 |
| 21 | Asignar pacientes a cita | 2010-05-12 → 2010-06-17 (+36d) | 2010-05-12 → 2010-06-17 (+36d) |  | 100d → 26d |  | resources none → Programador Jr 2 |
| 22 | (USR03) Rellamada | 2010-05-12 → 2010-07-28 (+77d) | 2010-05-13 → 2010-07-29 (+77d) |  | 600d → 3.5d |  |  |
| 23 | **(USR04) Consulta** | 2010-05-14 → 2010-06-08 (+25d) | 2010-05-18 → 2010-06-14 (+27d) | 3d → 5d | 0d → 11.5d | 11, 61, 67, 31, 74, 71 → 1 |  |
| 24 | **Tratar Consulta** | 2010-05-14 → 2010-06-08 (+25d) | 2010-05-18 → 2010-06-08 (+21d) | 3d → 0.5d | 0d → 16d | 61, 67 → none |  |
| 25 | Ajornar Consulta | 2010-05-14 → 2010-06-08 (+25d) | 2010-05-17 → 2010-06-08 (+22d) | 2d → 0.5d | 0d → 24.5d |  | resources none → Programador Jr 1 |
| 26 | Transferir consulta | 2010-05-18 → 2010-06-08 (+21d) | 2010-05-18 → 2010-06-08 (+21d) | 1d → 0.5d | 0d → 24.5d | 25 → none | resources none → Programador Jr 2 |
| 27 | Modulo Envio de Correo | 2010-05-14 → 2010-06-10 (+27d) | 2010-05-14 → 2010-06-11 (+28d) | 1d → 2d | 200d → 21d |  | resources none → Prog SSr 1 |
| 28 | Modulo Envio SMS | 2010-05-14 → 2010-06-11 (+28d) | 2010-05-14 → 2010-06-14 (+31d) | 1d → 2d | 200d → 20d |  | resources none → Prog SSr 2 |
| 29 | Inclusion en Campaña de Seguimiento | 2010-05-14 → 2010-06-08 (+25d) | 2010-05-14 → 2010-06-09 (+26d) |  | 200d → 23.5d |  | resources none → Programador Jr 1 |
| 30 | (USR05) Consejo Salud | 2010-05-19 → 2010-07-13 (+55d) | 2010-05-21 → 2010-07-19 (+59d) | 3d → 2d | 0d → 13.5d | 61, 67, 23 → 61, 67 | resources none → Prog SSr 1 |
| 31 | **(USR06) Gestionar Consulta pendiente** | 2010-05-06 → 2010-07-19 (+74d) | 2010-05-11 → 2010-07-19 (+69d) | 4d → 1d | 200d → 3.5d | none → 23 |  |
| 32 | Priorizacion de la Lista de Consultas | 2010-05-06 → 2010-07-19 (+74d) | 2010-05-11 → 2010-07-19 (+69d) | 4d → 1d | 200d → 3.5d |  | resources none → Prog SSr 2 |
| 33 | **(USR07) Programacion de cita previa** | 2010-05-07 → 2010-07-20 (+74d) | 2010-05-10 → 2010-07-21 (+72d) |  | 900d → 9.5d |  |  |
| 34 | Realizar Citación (Interface con Sistema de citación AP) | 2010-05-07 → 2010-07-20 (+74d) | 2010-05-10 → 2010-07-21 (+72d) |  | 900d → 9.5d |  | resources none → Prog SSr 1 |
| 35 | **(USR08) Gestiones sobre la TSI** | 2010-05-19 → 2010-06-29 (+41d) | 2010-05-19 → 2010-07-05 (+47d) | 1d → 4d | 200d → 11.5d | 31, 74, 67, 23 → 74, 67, 23, 1 |  |
| 36 | Verificacion Documentacion Necesaria | 2010-05-19 → 2010-06-29 (+41d) | 2010-05-19 → 2010-06-30 (+42d) |  | 200d → 14.5d |  | constraint none → start no earlier than 2010-06-29; resources none → Programador Jr 1 |
| 37 | Enviar Gestion (Interface con sistema RCA) | 2010-05-19 → 2010-06-30 (+42d) | 2010-05-19 → 2010-07-01 (+43d) |  | 200d → 13.5d |  | resources none → Programador Jr 1 |
| 38 | Cierre automatico de la consulta por paso de tiempo | 2010-05-19 → 2010-07-01 (+43d) | 2010-05-19 → 2010-07-02 (+44d) |  | 200d → 12.5d |  | resources none → Programador Jr 1 |
| 39 | Guardar LOG gestion TSI????? | 2010-05-19 → 2010-07-02 (+44d) | 2010-05-19 → 2010-07-05 (+47d) |  | 200d → 11.5d |  | resources none → Programador Jr 1 |
| 40 | **(USR09) Servicio de traduccion** | 2010-05-19 → 2010-06-22 (+34d) | 2010-05-19 → 2010-06-30 (+42d) | 1d → 7d | 200d → 24.5d | 23, 67 → 67 |  |
| 41 | Contactar Servicio Externo de Traduccion | 2010-05-19 → 2010-06-22 (+34d) | 2010-05-19 → 2010-06-23 (+35d) | 1d → 2d | 200d → 29.5d |  | resources none → Programador Jr 2 |
| 42 | Enlace Comunicacion Multiconferencia | 2010-05-19 → 2010-06-24 (+36d) | 2010-05-19 → 2010-06-28 (+40d) | 1d → 3d | 200d → 26.5d |  | resources none → Programador Jr 2 |
| 43 | Modulo monitorización de servicio | 2010-05-19 → 2010-06-29 (+41d) | 2010-05-19 → 2010-06-30 (+42d) | 1d → 2d | 200d → 24.5d |  | resources none → Programador Jr 2 |
| 44 | **(USR10) Informacion Sanitaria General** | 2010-05-19 → 2010-07-26 (+68d) | 2010-05-19 → 2010-07-26 (+68d) |  | 200d → 6.5d | 67, 74, 170, 23 → 67, 74, 170 |  |
| 45 | Guardar Informacion Ciudadano | 2010-05-19 → 2010-07-26 (+68d) | 2010-05-19 → 2010-07-26 (+68d) |  | 200d → 6.5d |  |  |
| 46 | **(USR11) Seguimiento de Patologias** | 2010-05-20 → 2010-07-20 (+61d) | 2010-05-20 → 2010-07-21 (+62d) | 1d → 2d | 0d → 7.5d |  |  |
| 47 | Buscar Campañas Abiertas | 2010-05-20 → 2010-07-20 (+61d) | 2010-05-20 → 2010-07-20 (+61d) |  | 0d → 10.5d |  |  |
| 48 | **Gestionar Seguimiento** | 2010-05-20 → 2010-07-20 (+61d) | 2010-05-20 → 2010-07-21 (+62d) | 1d → 2d | 0d → 7.5d |  |  |
| 49 | Visualizar Historial Pacientes | 2010-05-20 → 2010-07-20 (+61d) | 2010-05-20 → 2010-07-21 (+62d) | 1d → 2d | 0d → 9.5d |  |  |
| 50 | Llamada al Paciente | 2010-05-20 → 2010-07-20 (+61d) | 2010-05-20 → 2010-07-20 (+61d) |  | 0d → 10.5d |  |  |
| 51 | Desligar paciente de campaña | 2010-05-20 → 2010-07-20 (+61d) | 2010-05-20 → 2010-07-20 (+61d) |  | 0d → 10.5d |  |  |
| 52 | **(USR12) Encuestas** | 2010-05-06 → 2010-06-07 (+32d) | 2010-05-06 → 2010-07-20 (+75d) | 1d → 32d | 1000d → 0d | none → 130 |  |
| 53 | Interfaz de Encuestas | 2010-05-06 → 2010-06-24 (+49d) | 2010-05-06 → 2010-06-29 (+54d) | 1d → 3d | 1000d → 15.5d |  | constraint none → start no earlier than 2010-06-24; resources none → Programador Jr 1 |
| 54 | Contacto con Encuestado | 2010-05-06 → 2010-06-07 (+32d) | 2010-05-06 → 2010-07-20 (+75d) | 1d → 2d | 1000d → 0d |  | resources none → Prog SSr 2 |
| 55 | ABM Formulario De Encuesta | 2010-05-06 → 2010-06-07 (+32d) | 2010-05-06 → 2010-06-07 (+32d) |  | 1000d → 33d |  | resources none → Programador Jr 2 |
| 56 | **(USR13) Buscar Consultas** | 2010-05-07 → 2010-06-17 (+41d) | 2010-05-07 → 2010-06-21 (+45d) | 1d → 3d | 800d → 24d |  |  |
| 57 | **Operativo de Busqueda** | 2010-05-07 → 2010-06-17 (+41d) | 2010-05-07 → 2010-06-21 (+45d) | 1d → 3d | 800d → 24d |  |  |
| 58 | Buscar según distintos criterios | 2010-05-07 → 2010-06-17 (+41d) | 2010-05-07 → 2010-06-21 (+45d) | 1d → 3d | 800d → 25.5d |  |  |
| 59 | Filtrar resultados de la busqueda según permisos del usuario | 2010-05-07 → 2010-06-17 (+41d) | 2010-05-07 → 2010-06-17 (+41d) |  | 800d → 22d |  |  |
| 60 | Acotar resultados si los mismos sobrepasan el parametro configurable "n" | 2010-05-07 → 2010-06-17 (+41d) | 2010-05-07 → 2010-06-17 (+41d) |  | 800d → 22d |  |  |
| 61 | **(USR14) Hacer Uso de Documentos** | 2010-05-06 → 2010-06-15 (+40d) | 2010-05-06 → 2010-06-16 (+41d) | 1d → 2d | 500d → 11.5d | none → 23 |  |
| 62 | Creación y uso de Guias Interrogatorio | 2010-05-06 → 2010-06-15 (+40d) | 2010-05-06 → 2010-06-16 (+41d) | 1d → 2d | 500d → 23d |  |  |
| 63 | Creación y uso Fichas Tematicas | 2010-05-06 → 2010-06-15 (+40d) | 2010-05-06 → 2010-06-16 (+41d) | 1d → 2d | 500d → 23d |  |  |
| 64 | Creación y uso de Recursos | 2010-05-06 → 2010-06-15 (+40d) | 2010-05-06 → 2010-06-16 (+41d) | 1d → 2d | 500d → 23d |  |  |
| 65 | Búsqueda y selección de documentos | 2010-05-06 → 2010-06-15 (+40d) | 2010-05-06 → 2010-06-16 (+41d) | 1d → 2d | 500d → 23d |  |  |
| 66 | Apertura documentos | 2010-05-06 → 2010-06-15 (+40d) | 2010-05-06 → 2010-06-15 (+40d) |  | 500d → 24d |  |  |
| 67 | **(USR15) Cerrar consulta y dar respuesta al ciudadano** | 2010-05-06 → 2010-06-15 (+40d) | 2010-05-06 → 2010-06-16 (+41d) | 1d → 2d | 500d → 11.5d | none → 23 |  |
| 68 | Clasificar Finalizacion de Consulta | 2010-05-06 → 2010-06-15 (+40d) | 2010-05-06 → 2010-06-16 (+41d) | 1d → 2d | 500d → 23d |  |  |
| 69 | Adición de motivo de cierre a la consulta | 2010-05-06 → 2010-06-15 (+40d) | 2010-05-06 → 2010-06-15 (+40d) |  | 500d → 24d |  |  |
| 70 | Creación de clasificaciones ad-hoc | 2010-05-06 → 2010-06-15 (+40d) | 2010-05-06 → 2010-06-15 (+40d) |  | 500d → 24d |  |  |

| ID | Task | Start | Finish | Duration | Total float | Predecessors | Other |
| --- | --- | --- | --- | --- | --- | --- | --- |
| 71 | **(USR16) Visualizar Consulta** | 2010-05-06 → 2010-06-15 (+40d) | 2010-05-06 → 2010-06-16 (+41d) | 1d → 2d | 300d → 24d | none → 23 |  |
| 72 | Mostrar datos generales de la consulta | 2010-05-06 → 2010-06-15 (+40d) | 2010-05-06 → 2010-06-16 (+41d) | 1d → 2d | 300d → 20d |  |  |
| 73 | Mostrar datos según el documento elegido | 2010-05-06 → 2010-06-15 (+40d) | 2010-05-06 → 2010-06-16 (+41d) | 1d → 2d | 300d → 20d |  |  |
| 74 | **(USR17) Crear/Transferir Consulta** | 2010-05-06 → 2010-06-15 (+40d) | 2010-05-06 → 2010-06-16 (+41d) | 1d → 2d | 500d → 23d | none → 23 |  |
| 75 | Crear Consulta | 2010-05-06 → 2010-06-15 (+40d) | 2010-05-06 → 2010-06-16 (+41d) | 1d → 2d | 500d → 23d |  |  |
| 76 | Copiar consulta | 2010-05-06 → 2010-06-15 (+40d) | 2010-05-06 → 2010-06-15 (+40d) |  | 500d → 24d |  |  |
| 77 | **Transferir Consulta** | 2010-05-06 → 2010-06-15 (+40d) | 2010-05-06 → 2010-06-15 (+40d) |  | 500d → 24d |  |  |
| 78 | Localizar a otro operador del mismo perfil | 2010-05-06 → 2010-06-15 (+40d) | 2010-05-06 → 2010-06-15 (+40d) |  | 500d → 24d |  |  |
| 79 | **(ADM01) Mantenimiento del Entorno, clasif y prioridades** | 2010-05-07 → 2010-06-02 (+26d) | 2010-05-07 → 2010-06-24 (+48d) | 1d → 16.5d | 800d → 18.5d | 192 → 200 |  |
| 80 | Módulo de edición de parametros grales de la aplicación | 2010-05-07 → 2010-06-11 (+35d) | 2010-05-07 → 2010-06-23 (+47d) | 1d → 4d | 800d → 19.5d |  | resources none → Programador Sr 2 |
| 81 | Módulo edición listas de clasificaciones (Códigos internos) | 2010-05-07 → 2010-06-10 (+34d) | 2010-05-07 → 2010-06-15 (+39d) | 1d → 3d | 800d → 25.5d |  | resources none → Programador Sr 1 |
| 82 | **Módulo mantenimiento de la lista de espera** | 2010-05-07 → 2010-06-04 (+28d) | 2010-05-07 → 2010-06-07 (+31d) | 1d → 2d | 800d → 31d |  |  |
| 83 | ABM de la lista de espera | 2010-05-07 → 2010-06-07 (+31d) | 2010-05-07 → 2010-06-07 (+31d) |  | 800d → 31d |  | resources none → Programador Jr 1 |
| 84 | Módulo de gestión de prioridades sobre la lista de espera | 2010-05-07 → 2010-06-04 (+28d) | 2010-05-07 → 2010-06-04 (+28d) |  | 800d → 32d |  | resources none → Prog SSr 2 |
| 85 | **Módulo mantenimiento de lineas de servicio** | 2010-05-07 → 2010-06-02 (+26d) | 2010-05-07 → 2010-06-03 (+27d) | 1d → 2d | 800d → 33d |  |  |
| 86 | ABM lineas de servicio | 2010-05-07 → 2010-06-02 (+26d) | 2010-05-07 → 2010-06-02 (+26d) |  | 800d → 34d |  | resources none → Programador Jr 2 |
| 87 | ABM servicios para una linea seleccionada | 2010-05-07 → 2010-06-03 (+27d) | 2010-05-07 → 2010-06-03 (+27d) |  | 800d → 33d |  | resources none → Programador Jr 2 |
| 88 | **Módulo mantenimiento agendas** | 2010-05-07 → 2010-06-02 (+26d) | 2010-05-07 → 2010-06-24 (+48d) | 1d → 16.5d | 800d → 18.5d |  |  |
| 89 | Asignar operadores a agenda | 2010-05-07 → 2010-06-04 (+28d) | 2010-05-07 → 2010-06-04 (+28d) |  | 800d → 32d |  | resources none → Prog SSr 1 |
| 90 | ABM de usuarios de la agenda | 2010-05-07 → 2010-06-23 (+47d) | 2010-05-07 → 2010-06-24 (+48d) |  | 800d → 18.5d |  | constraint none → start no earlier than 2010-06-23; resources none → Programador Jr 1 |
| 91 | ABM citas de la agenda | 2010-05-07 → 2010-06-02 (+26d) | 2010-05-07 → 2010-06-02 (+26d) |  | 800d → 34d |  | resources none → Programador Jr 1 |
| 92 | **Módulo mantenimiento BBDD** | 2010-05-07 → 2010-06-09 (+33d) | 2010-05-07 → 2010-06-11 (+35d) | 1d → 2d | 800d → 27.5d |  |  |
| 93 | Módulo comprobación de formato de archivo | 2010-05-07 → 2010-06-09 (+33d) | 2010-05-07 → 2010-06-10 (+34d) |  | 800d → 28.5d |  | resources none → Programador Sr 1 |
| 94 | Módulo actualización de BBDD | 2010-05-07 → 2010-06-09 (+33d) | 2010-05-07 → 2010-06-11 (+35d) | 1d → 2d | 800d → 27.5d |  | resources none → Programador Sr 2 |
| 95 | **(ADM02) Extraccion de estadisticas y listados** | 2010-05-07 → 2010-07-01 (+55d) | 2010-05-07 → 2010-07-23 (+77d) | 1d → 17d | 1000d → 2.5d | 143, 149, 153, 193 → 79 |  |
| 96 | Listados De Administración | 2010-05-07 → 2010-07-22 (+76d) | 2010-05-07 → 2010-07-23 (+77d) | 1d → 2d | 1000d → 2.5d |  | resources none → Prog SSr 1 |
| 97 | **Listados Comunes** | 2010-05-07 → 2010-07-01 (+55d) | 2010-05-07 → 2010-07-07 (+61d) | 1d → 5d | 1000d → 14.5d |  |  |
| 98 | Detalle de estado de finalización consulta/acción | 2010-05-07 → 2010-07-05 (+59d) | 2010-05-07 → 2010-07-05 (+59d) |  | 1000d → 16.5d |  | constraint none → start no earlier than 2010-07-01; resources none → Programador Sr 1 |
| 99 | Listado de clasificaciones | 2010-05-07 → 2010-07-02 (+56d) | 2010-05-07 → 2010-07-02 (+56d) |  | 1000d → 17.5d |  | constraint none → start no earlier than 2010-07-01; resources none → Programador Sr 1 |
| 100 | Listados de incidencias en las comunicaciones | 2010-05-07 → 2010-07-06 (+60d) | 2010-05-07 → 2010-07-06 (+60d) |  | 1000d → 15.5d |  | constraint none → start no earlier than 2010-07-01; resources none → Programador Sr 1 |
| 101 | Ratios por usuario | 2010-05-07 → 2010-07-07 (+61d) | 2010-05-07 → 2010-07-07 (+61d) |  | 1000d → 14.5d |  | constraint none → start no earlier than 2010-07-01; resources none → Programador Sr 1 |
| 102 | Finales de servicio | 2010-05-07 → 2010-07-01 (+55d) | 2010-05-07 → 2010-07-01 (+55d) |  | 1000d → 18.5d |  | constraint none → start no earlier than 2010-07-01; resources none → Programador Sr 1 |
| 103 | **(ADM03) Mantenimiento de documentos** | 2010-05-10 → 2010-06-23 (+44d) | 2010-05-11 → 2010-07-05 (+55d) | 2d → 8d | 800d → 21d | 149, 167, 111 → 111 |  |
| 104 | Creación y edición de documentos | 2010-05-11 → 2010-06-24 (+44d) | 2010-05-11 → 2010-06-29 (+49d) | 1d → 2d | 800d → 24.5d |  | resources none → Programador Sr 2 |
| 105 | Borrado de documentos | 2010-05-10 → 2010-06-30 (+51d) | 2010-05-10 → 2010-06-30 (+51d) |  | 900d → 23.5d |  | resources none → Programador Sr 2 |
| 106 | Clasificación de documentos | 2010-05-10 → 2010-07-01 (+52d) | 2010-05-10 → 2010-07-01 (+52d) |  | 900d → 22.5d |  | resources none → Programador Sr 2 |
| 107 | Búsqueda de documentos | 2010-05-10 → 2010-06-23 (+44d) | 2010-05-10 → 2010-07-05 (+56d) | 1d → 2d | 900d → 21d |  | resources none → Programador Sr 2 |
| 108 | (ADM04) Mantenimiento de Recursos | 2010-05-07 → 2010-06-17 (+41d) | 2010-05-07 → 2010-06-18 (+42d) | 1d → 2d | 900d → 23d | 189 → 61 |  |
| 109 | (ADM05) Mantenimiento de guias de interrogatorio | 2010-05-10 → 2010-06-22 (+43d) | 2010-05-10 → 2010-06-23 (+44d) | 1d → 2d | 800d → 23d | 111, 189 → 111, 61 |  |
| 110 | (ADM06) Mantenimiento de Fichas tematicas | 2010-05-10 → 2010-06-22 (+43d) | 2010-05-10 → 2010-06-23 (+44d) | 1d → 2d | 800d → 23d | 111, 189 → 111, 61 |  |
| 111 | **(ADM07) Mantenimiento de relaciones sobre guias de interrogatorio y fichas tematicas** | 2010-05-07 → 2010-06-21 (+45d) | 2010-05-07 → 2010-06-21 (+45d) |  | 800d → 22.5d | 189 → 108 |  |
| 112 | Adición de documentos a fichas temáticas | 2010-05-07 → 2010-06-21 (+45d) | 2010-05-07 → 2010-06-21 (+45d) |  | 800d → 23d |  |  |
| 113 | Adición de documentos a guias de interrogatorio | 2010-05-07 → 2010-06-21 (+45d) | 2010-05-07 → 2010-06-21 (+45d) |  | 800d → 23d |  |  |
| 114 | **(ADM08) Mantenimiento de encuestas** | 2010-05-06 → 2010-06-04 (+29d) | 2010-05-06 → 2010-06-04 (+29d) |  | 1100d → 42.5d | none → 130 |  |
| 115 | **Mantenimiento Indice de Encuestas** | 2010-05-06 → 2010-06-04 (+29d) | 2010-05-06 → 2010-06-04 (+29d) |  | 1100d → 42.5d |  |  |
| 116 | Mantener Ediciones | 2010-05-06 → 2010-06-04 (+29d) | 2010-05-06 → 2010-06-04 (+29d) |  | 1100d → 39d |  |  |
| 117 | Cierre de ediciones | 2010-05-06 → 2010-06-04 (+29d) | 2010-05-06 → 2010-06-04 (+29d) |  | 1100d → 39d |  |  |
| 118 | Asignación de formulario a encuesta | 2010-05-06 → 2010-06-04 (+29d) | 2010-05-06 → 2010-06-04 (+29d) |  | 1100d → 39d |  |  |
| 119 | Asignación de operadores a encuesta | 2010-05-06 → 2010-06-04 (+29d) | 2010-05-06 → 2010-06-04 (+29d) |  | 1100d → 39d |  |  |
| 120 | **Asignación lista de encuestados** | 2010-05-06 → 2010-06-04 (+29d) | 2010-05-06 → 2010-06-04 (+29d) |  | 1100d → 42.5d |  |  |
| 121 | Alta, baja de encuestados | 2010-05-06 → 2010-06-04 (+29d) | 2010-05-06 → 2010-06-04 (+29d) |  | 1100d → 39d |  |  |
| 122 | Asignación automática en base a un archivo de texto | 2010-05-06 → 2010-06-04 (+29d) | 2010-05-06 → 2010-06-04 (+29d) |  | 1100d → 39d |  |  |
| 123 | Publicar Encuestas | 2010-05-06 → 2010-06-04 (+29d) | 2010-05-06 → 2010-06-04 (+29d) |  | 1100d → 39d |  |  |
| 124 | **(ADM09) Mantenimiento de seguimiento de patologias** | 2010-05-06 → 2010-06-24 (+49d) | 2010-05-06 → 2010-06-29 (+54d) | 1d → 3d | 1100d → 24d | none → 79 |  |
| 125 | Mantenimiento Indice de campañas de seguimiento | 2010-05-06 → 2010-06-24 (+49d) | 2010-05-06 → 2010-06-25 (+50d) |  | 1100d → 26d |  | constraint none → start no earlier than 2010-06-21; resources none → Programador Sr 1 |
| 126 | Asignación de formulario a campaña de seguimiento | 2010-05-06 → 2010-06-25 (+50d) | 2010-05-06 → 2010-06-28 (+53d) |  | 1100d → 25d |  | constraint none → start no earlier than 2010-06-25; resources none → Programador Sr 1 |
| 127 | Asignación de operadores a campaña de seguimiento | 2010-05-06 → 2010-06-28 (+53d) | 2010-05-06 → 2010-06-29 (+54d) |  | 1100d → 24d |  | constraint none → start no earlier than 2010-06-28; resources none → Programador Sr 1 |
| 128 | Asignación de listas de pacientes | 2010-05-06 → 2010-06-24 (+49d) | 2010-05-06 → 2010-06-25 (+50d) |  | 1100d → 26d |  | constraint none → start no earlier than 2010-06-23; resources none → Programador Sr 2 |
| 129 | Activación/ Desactivación de campañas | 2010-05-06 → 2010-06-25 (+50d) | 2010-05-06 → 2010-06-28 (+53d) |  | 1100d → 25d |  | constraint none → start no earlier than 2010-06-25; resources none → Programador Sr 2 |
| 130 | **(ADM10) Creacion de formularios de encuesta y seguimiento** | 2010-05-07 → 2010-06-02 (+26d) | 2010-05-07 → 2010-06-03 (+27d) | 1d → 2d | 1000d → 1d | 190 → 200 |  |
| 131 | Mantener Indice de Encuesta | 2010-05-07 → 2010-06-02 (+26d) | 2010-05-07 → 2010-06-03 (+27d) | 1d → 2d | 1000d → 35d |  | resources none → Prog SSr 2 |
| 132 | Crear y Editar Encuestas | 2010-05-07 → 2010-06-02 (+26d) | 2010-05-07 → 2010-06-03 (+27d) | 1d → 2d | 1000d → 35d |  | resources none → Prog SSr 1 |
| 133 | **(ADM11) Mantenimiento de usuarios, perfiles y permisos** | 2010-05-07 → 2010-06-10 (+34d) | 2010-05-07 → 2010-06-16 (+40d) | 1d → 4d | 900d → 17.5d | 194 → 1 |  |
| 134 | Mantenimiento Opciones Funcionales | 2010-05-07 → 2010-06-14 (+38d) | 2010-05-07 → 2010-06-15 (+39d) | 1d → 2d | 900d → 13d |  |  |
| 135 | **Mantener Perfiles Trabajo** | 2010-05-07 → 2010-06-10 (+34d) | 2010-05-07 → 2010-06-15 (+39d) | 1d → 3d | 900d → 18.5d |  |  |
| 136 | Alta, modificación de perfiles | 2010-05-07 → 2010-06-14 (+38d) | 2010-05-07 → 2010-06-15 (+39d) |  | 900d → 13.5d |  |  |
| 137 | ABM de opciones funcionales a perfil | 2010-05-07 → 2010-06-10 (+34d) | 2010-05-07 → 2010-06-11 (+35d) |  | 900d → 15.5d |  |  |
| 138 | Adición de responsabilidades a opciones funcionales | 2010-05-07 → 2010-06-11 (+35d) | 2010-05-07 → 2010-06-14 (+38d) |  | 900d → 14.5d |  |  |
| 139 | **Mantener Usuarios** | 2010-05-07 → 2010-06-11 (+35d) | 2010-05-07 → 2010-06-16 (+40d) | 1d → 3d | 900d → 17.5d |  |  |
| 140 | Creación/gestion de usuarios | 2010-05-07 → 2010-06-11 (+35d) | 2010-05-07 → 2010-06-14 (+38d) |  | 900d → 14.5d |  |  |

| ID | Task | Start | Finish | Duration | Total float | Predecessors | Other |
| --- | --- | --- | --- | --- | --- | --- | --- |
| 141 | Asiganción de perfil a usuario | 2010-05-07 → 2010-06-14 (+38d) | 2010-05-07 → 2010-06-15 (+39d) |  | 900d → 13.5d |  |  |
| 142 | Asignación de agendas a usuario | 2010-05-07 → 2010-06-15 (+39d) | 2010-05-07 → 2010-06-16 (+40d) |  | 900d → 12.5d |  |  |
| 143 | **(ADM12) Listado de acciones proactivas** | 2010-05-06 → 2010-07-26 (+81d) | 2010-05-06 → 2010-07-27 (+82d) | 1d → 2d | 1000d → 5.5d | none → 95, 124 |  |
| 144 | Módulo de elaboraciónde informes de estado de campaña de seguimiento | 2010-05-06 → 2010-07-26 (+81d) | 2010-05-06 → 2010-07-27 (+82d) | 1d → 2d | 1000d → 5.5d |  |  |
| 145 | Módulo de elaboración de informes de estado de encuesta | 2010-05-06 → 2010-07-26 (+81d) | 2010-05-06 → 2010-07-27 (+82d) | 1d → 2d | 1000d → 5.5d |  |  |
| 146 | Módulo de elaboración de informes de ediciones de encuestas | 2010-05-06 → 2010-07-26 (+81d) | 2010-05-06 → 2010-07-27 (+82d) | 1d → 2d | 1000d → 5.5d |  |  |
| 147 | Módulo de elaboración de listados de campañas de seguimiento | 2010-05-06 → 2010-07-26 (+81d) | 2010-05-06 → 2010-07-27 (+82d) | 1d → 2d | 1000d → 5.5d |  |  |
| 148 | Módulo de elaboración de listados de información de encuestas | 2010-05-06 → 2010-07-26 (+81d) | 2010-05-06 → 2010-07-27 (+82d) | 1d → 2d | 1000d → 5.5d |  |  |
| 149 | **(ADM13) Listados de documentos** | 2010-05-06 → 2010-07-26 (+81d) | 2010-05-06 → 2010-07-26 (+81d) |  | 1000d → 6.5d | none → 95, 103 |  |
| 150 | Elaboración de listado de configuración | 2010-05-06 → 2010-07-26 (+81d) | 2010-05-06 → 2010-07-26 (+81d) |  | 1000d → 6.5d |  |  |
| 151 | Elaboración de listado de uso | 2010-05-06 → 2010-07-26 (+81d) | 2010-05-06 → 2010-07-26 (+81d) |  | 1000d → 6.5d |  |  |
| 152 | Elaboración de listado de asociaciones | 2010-05-06 → 2010-07-26 (+81d) | 2010-05-06 → 2010-07-26 (+81d) |  | 1000d → 6.5d |  |  |
| 153 | **(ADM14) Listado sobre consultas** | 2010-05-06 → 2010-07-26 (+81d) | 2010-05-06 → 2010-07-26 (+81d) |  | 1000d → 6.5d | none → 95, 23 |  |
| 154 | Módulo de obtención de listados de consulta por ciudadano | 2010-05-06 → 2010-07-26 (+81d) | 2010-05-06 → 2010-07-26 (+81d) |  | 1000d → 6.5d |  |  |
| 155 | Módulo de obtención de listados de consultas con cierre principal | 2010-05-06 → 2010-07-26 (+81d) | 2010-05-06 → 2010-07-26 (+81d) |  | 1000d → 6.5d |  |  |
| 156 | Módulo de obtención de listados de consulta con cierre secundario | 2010-05-06 → 2010-07-26 (+81d) | 2010-05-06 → 2010-07-26 (+81d) |  | 1000d → 6.5d |  |  |
| 157 | Módulo de obtención de listados de consulta por motivo de cierre | 2010-05-06 → 2010-07-26 (+81d) | 2010-05-06 → 2010-07-26 (+81d) |  | 1000d → 6.5d |  |  |
| 158 | Módulo de obtención de listado de resumen de consultas por servicio | 2010-05-06 → 2010-07-26 (+81d) | 2010-05-06 → 2010-07-26 (+81d) |  | 1000d → 6.5d |  |  |
| 159 | Módulo de obtención de listado de consultas por área geográfica | 2010-05-06 → 2010-07-26 (+81d) | 2010-05-06 → 2010-07-26 (+81d) |  | 1000d → 6.5d |  |  |
| 160 | Módulo de obtención de listado de consultas por usuario | 2010-05-06 → 2010-07-26 (+81d) | 2010-05-06 → 2010-07-26 (+81d) |  | 1000d → 6.5d |  |  |
| 161 | Módulo de obtención de listado de consultas pendientes | 2010-05-06 → 2010-07-26 (+81d) | 2010-05-06 → 2010-07-26 (+81d) |  | 1000d → 6.5d |  |  |
| 162 | **(ADM15) Mantener Asignaciones TSI** | 2010-05-10 → 2010-07-23 (+74d) | 2010-05-10 → 2010-07-29 (+80d) | 1d → 5d | 900d → -2d | 79 → 79, 35 |  |
| 163 | **Módulo de envío de datos a CatSalut** | 2010-05-10 → 2010-07-23 (+74d) | 2010-05-10 → 2010-07-27 (+78d) | 1d → 3d | 900d → none |  |  |
| 164 | Recolección de datos de operaciones TSI pendientes | 2010-05-10 → 2010-07-23 (+74d) | 2010-05-10 → 2010-07-23 (+74d) |  | 900d → 2d |  |  |
| 165 | Migración de los datos a archivo TXT | 2010-05-10 → 2010-07-23 (+74d) | 2010-05-10 → 2010-07-26 (+77d) | 1d → 2d | 900d → 1d |  |  |
| 166 | Interface de comunicación con CatSalut | 2010-05-10 → 2010-07-23 (+74d) | 2010-05-10 → 2010-07-29 (+80d) | 1d → 5d | 900d → -2d |  |  |
| 167 | **(ADM16) Asignar documentos a acciones** | 2010-05-06 → 2010-07-05 (+60d) | 2010-05-06 → 2010-07-06 (+61d) |  | 1000d → 21d | none → 103 |  |
| 168 | Creación/eliminación de asociaciones | 2010-05-06 → 2010-07-05 (+60d) | 2010-05-06 → 2010-07-06 (+61d) |  | 1000d → 21d |  |  |
| 169 | Cadicidad de asociaciones | 2010-05-06 → 2010-07-05 (+60d) | 2010-05-06 → 2010-07-06 (+61d) |  | 1000d → 21d |  |  |
| 170 | **(INT01) Direcciones de farmacias, CAP y otra informacion breve** | 2010-05-14 → 2010-07-22 (+69d) | 2010-05-14 → 2010-07-23 (+70d) | 1d → 2d | 400d → 2.5d | 11, 195, 61, 79 → 11, 61, 79 |  |
| 171 | Trabajo con listas de resultados | 2010-05-14 → 2010-07-22 (+69d) | 2010-05-14 → 2010-07-23 (+70d) | 1d → 2d | 400d → 2.5d |  |  |
| 172 | **(SIS01) Trazabilidad y registro de uso** | 2010-05-06 → 2010-06-14 (+39d) | 2010-05-21 → 2010-08-04 (+75d) | 12d → 37.5d |  | none → 1 |  |
| 173 | Control Acceso a Consultas | 2010-05-19 → 2010-06-15 (+27d) | 2010-05-19 → 2010-06-21 (+33d) | 1d → 2d | 200d → 28.5d |  | resources none → Programador Sr 1 |
| 174 | Control Acceso a Encuestas | 2010-05-07 → 2010-08-02 (+87d) | 2010-05-07 → 2010-08-04 (+89d) | 1d → 2d | 1000d → 0d |  | resources none → Programador Sr 1 |
| 175 | Control General Acceso al Sistema | 2010-05-10 → 2010-06-16 (+37d) | 2010-05-10 → 2010-06-18 (+39d) | 1d → 2d | 900d → 29.5d |  | resources none → Programador Sr 1 |
| 176 | Control Acceso a Campañas de Seguimiento | 2010-05-21 → 2010-07-22 (+62d) | 2010-05-21 → 2010-07-23 (+63d) | 1d → 2d | 0d → 7.5d |  | resources none → Programador Sr 2 |
| 177 | Control Acceso a Documentos | 2010-05-07 → 2010-06-17 (+41d) | 2010-05-07 → 2010-06-18 (+42d) | 1d → 2d | 1000d → 29d |  | resources none → Programador Sr 2 |
| 178 | Control Acceso a Recursos Internos | 2010-05-06 → 2010-06-16 (+41d) | 2010-05-06 → 2010-06-22 (+47d) | 1d → 2d | 1100d → 27.5d |  | resources none → Programador Sr 2 |
| 179 | Historial de Consultas | 2010-05-06 → 2010-06-14 (+39d) | 2010-05-06 → 2010-06-14 (+39d) |  | 1100d → 36.5d |  | constraint none → start no earlier than 2010-06-14; resources none → Prog SSr 1 |
| 180 | **(ISC01) Transferir info, comunicacion a STARS** | 2010-05-06 → 2010-06-21 (+46d) | 2010-05-06 → 2010-06-23 (+48d) | 1d → 3d | 1100d → 29.5d | none → 1 |  |
| 181 | Recibir información del sistema de comunicaciones | 2010-05-06 → 2010-06-21 (+46d) | 2010-05-06 → 2010-06-23 (+48d) | 1d → 3d | 1100d → 26d |  | resources none → Prog SSr 1; Prog SSr 2 |
| 182 | **(ISC02) Iniciar llamada desde STARS** | 2010-05-06 → 2010-06-28 (+53d) | 2010-05-06 → 2010-06-30 (+55d) | 1d → 3d | 1100d → 24.5d | none → 1 |  |
| 183 | Lanzamiento de petición de comunicación | 2010-05-06 → 2010-06-28 (+53d) | 2010-05-06 → 2010-06-30 (+55d) | 1d → 3d | 1100d → 21d |  | resources none → Prog SSr 1; Prog SSr 2 |
| 184 | **(ISC03) Informacion encuesta** | 2010-05-06 → 2010-06-04 (+29d) | 2010-05-06 → 2010-06-04 (+29d) |  | 1100d → 42.5d | none → 130 |  |
| 185 | Activación actividad de encuesta | 2010-05-06 → 2010-06-04 (+29d) | 2010-05-06 → 2010-06-04 (+29d) |  | 1100d → 39d |  |  |
| 186 | ABM Consultas | 2010-05-06 → 2010-06-29 (+54d) | 2010-05-06 → 2010-06-29 (+54d) |  | 1100d → 22d | none → 23 |  |
| 187 | ABM Usuarios | 2010-05-06 → 2010-06-11 (+36d) | 2010-05-06 → 2010-06-11 (+36d) |  | 1000d → 31d | none → 3 |  |
| 188 | Proteccion de Acceso | 2010-05-07 → 2010-06-14 (+38d) | 2010-05-07 → 2010-06-16 (+40d) | 1d → 3d | 1000d → 31d |  |  |
| 189 | ABM Fichas / Guias / Recursos | 2010-05-06 → 2010-06-21 (+46d) | 2010-05-06 → 2010-06-23 (+48d) | 1d → 3d | 800d → 26d | none → 108 |  |
| 190 | ABM Cuestionarios | 2010-05-06 → 2010-06-04 (+29d) | 2010-05-06 → 2010-06-04 (+29d) |  | 1000d → 39d | none → 130 |  |
| 191 | Interfaz General | 2010-05-06 → 2010-06-17 (+42d) | 2010-05-06 → 2010-07-13 (+68d) | 1d → 13d | 1100d → 15.5d | none → 1 | resources none → Prog SSr 1; Prog SSr 2 |
| 192 | Interfaz Para Usuario Avanzado | 2010-05-06 → 2010-06-24 (+49d) | 2010-05-06 → 2010-07-01 (+56d) | 1d → 5d | 800d → 24d | none → 79 |  |
| 193 | Interfaz de Listados para ADM02 | 2010-05-06 → 2010-07-26 (+81d) | 2010-05-06 → 2010-07-30 (+85d) | 1d → 5d | 1000d → 2.5d | none → 95 |  |
| 194 | Interfaz Mantenimiento Usuarios y Perfiles | 2010-05-06 → 2010-06-16 (+41d) | 2010-05-06 → 2010-06-23 (+48d) | 1d → 5d | 900d → 26.5d | none → 133 |  |
| 195 | Interfaz Direcciones INT01 | 2010-05-06 → 2010-07-26 (+81d) | 2010-05-06 → 2010-07-30 (+85d) | 1d → 5d | 900d → 2.5d | none → 170 |  |
| 196 | ABM Enfermedades / Centros Salud | 2010-05-06 → 2010-07-26 (+81d) | 2010-05-06 → 2010-07-27 (+82d) | 1d → 2d | 1100d → 5.5d | none → 170 |  |
| 197 | Listado de Usuarios y Perfiles | 2010-05-06 → 2010-07-12 (+67d) | 2010-05-06 → 2010-07-12 (+67d) |  | 0d → 13d | none → 133 |  |
| 198 | Interface con sistema de comunicaciones (ISC01, ISC02, ISC03) | 2010-05-06 → 2010-06-08 (+33d) | 2010-05-06 → 2010-06-21 (+46d) | 1d → 9d | 1100d → 28.5d | none → 1 | resources none → Programador Jr 1; Programador Jr 2 |

## Version 7 (saved 2010-09-02, file Casos Uso Lole Con Recursos 2010 Version Previa - 5 RECURSOS.mpp)

Note of the change: Dos versiones hechas en clase. una con 6 recursos temrianda q da 4 meses y la otra con 5 que por ahora da 5 meeses. falta agregarle config del entorno de produccion

Last finish 2010-08-04 → 2010-10-01 (+58d).

Added:

| ID | Task | Duration | Start | Finish | Predecessors | Constraint | Resources |
| --- | --- | --- | --- | --- | --- | --- | --- |
| 6 | Testing Id y Aut | 1d | 2010-06-16 | 2010-06-16 | 5, 4 |  | Tester |
| 12 | Testing Registros | 2d | 2010-07-05 | 2010-07-06 | 11, 9, 8, 10 | start no earlier than 2010-07-05 | Tester |
| 18 | Testing Servicio Atencion | 1d | 2010-09-01 | 2010-09-01 | 14, 15, 16, 17 | start no earlier than 2010-09-01 | Tester |
| 25 | Testing Agenda | 2d | 2010-07-27 | 2010-07-28 | 20, 21, 22, 23, 24 | start no earlier than 2010-07-27 | Tester |
| 27 | Rellamada | 2d | 2010-08-16 | 2010-08-17 |  | start no earlier than 2010-08-16 | Prog SSr 1 |
| 28 | Testing Rellamada | 1d | 2010-08-25 | 2010-08-25 | 27 | start no earlier than 2010-08-25 | Tester |
| 36 | Testing Consulta | 3d | 2010-06-22 | 2010-06-24 | 30, 33, 34, 35 |  | Tester |
| 38 | Consejo Salud | 2d | 2010-08-23 | 2010-08-24 |  | start no earlier than 2010-08-19 | Programador Jr 2 |
| 39 | Testing Consejo Salud | 1d | 2010-08-27 | 2010-08-27 | 38 | start no earlier than 2010-08-27 | Tester |
| 42 | Testing USR06 | 1d | 2010-08-11 | 2010-08-11 | 41 | start no earlier than 2010-08-11 | Tester |
| 45 | Testing USR07 | 1d | 2010-08-26 | 2010-08-26 | 44 | start no earlier than 2010-08-26 | Tester |
| 51 | Testing | 1d | 2010-09-02 | 2010-09-02 | 47, 48, 49, 50 | start no earlier than 2010-09-02 | Tester |
| 56 | Testing | 2d | 2010-08-30 | 2010-08-31 | 53, 54, 55 | start no earlier than 2010-08-30 | Tester |
| 59 | Testing | 1d | 2010-09-13 | 2010-09-13 | 58 | start no earlier than 2010-09-13 | Tester |
| 66 | Testing | 2d | 2010-09-03 | 2010-09-06 | 61, 63, 62, 65 | start no earlier than 2010-09-03 | Tester |
| 71 | Testing | 2d | 2010-07-23 | 2010-07-26 | 68, 69, 70 | start no earlier than 2010-07-19 | Tester |
| 77 | Testing | 1d | 2010-07-29 | 2010-07-29 | 74, 75, 76 | start no earlier than 2010-07-28 | Tester |
| 84 | Testing | 2d | 2010-08-19 | 2010-08-20 | 70, 80, 81, 82, 83 | start no earlier than 2010-08-19 | Tester |
| 89 | Testing | 1d | 2010-07-30 | 2010-07-30 | 86, 87, 88 | start no earlier than 2010-07-30 | Tester |
| 93 | Testing | 1d | 2010-07-08 | 2010-07-08 | 91, 92 | start no earlier than 2010-07-01 | Tester |
| 99 | Testing | 2d | 2010-08-09 | 2010-08-10 | 95, 96, 98 | start no earlier than 2010-07-15 | Tester |
| 116 | Testing | 2d | 2010-08-12 | 2010-08-13 | 102, 101, 103, 106, 109, 113 |  | Tester |
| 125 | Testing | 1d | 2010-08-23 | 2010-08-23 | 118, 119 | start no earlier than 2010-08-23 | Tester |
| 153 | Testing ADM 3 al 9 | 3d | 2010-08-16 | 2010-08-18 |  |  | Tester |
| 157 | Testing Creacion Formularios Enc y Seg | 1d | 2010-07-01 | 2010-07-01 | 155, 156 | start no earlier than 2010-07-01 | Tester |
| 168 | Testing Mantenimiento Usuarios | 1d | 2010-06-30 | 2010-06-30 | 159, 160, 164 | start no earlier than 2010-06-30 | Tester |
| 175 | Testing Listados Proactivas | 2d | 2010-09-14 | 2010-09-15 | 170, 171, 172, 173, 174 | start no earlier than 2010-09-10 | Tester |
| 180 | Testing Listado Docs | 1d | 2010-09-10 | 2010-09-10 | 177, 178, 179 | start no earlier than 2010-09-10 | Tester |
| 190 | Testing Listado Consultas | 2d | 2010-09-20 | 2010-09-21 | 182, 183, 184, 185, 186, 187, 188, 189 | start no earlier than 2010-09-20 | Tester |
| 196 | Testing TSI | 2d | 2010-09-16 | 2010-09-17 | 192 | start no earlier than 2010-09-16 | Tester |
| 200 | Testing Asignacion Docs a Acciones | 1d | 2010-09-22 | 2010-09-22 | 198, 199 | start no earlier than 2010-09-22 | Tester |
| 203 | Testing Dirs | 1d | 2010-09-09 | 2010-09-09 | 202 | start no earlier than 2010-09-09 | Tester |
| 212 | Testing Trazabilidad / Registro | 2d | 2010-08-02 | 2010-08-03 | 205, 206, 207, 208, 209, 210, 211 | start no earlier than 2010-06-30 | Tester |
| 217 | Testing Inicio Llamada STARS | 1d | 2010-08-06 | 2010-08-06 | 216 | start no earlier than 2010-08-06 | Tester |
| 233 | Testing ABMs Varios | 4d | 2010-09-23 | 2010-09-28 | 220, 221, 223, 224, 230 | start no earlier than 2010-09-23 | Tester |
| 234 | Testing Interfaces Varias | 3d | 2010-09-29 | 2010-10-01 | 225, 226, 227, 228, 229, 232 | start no earlier than 2010-09-29 | Tester |

Changed:

| ID | Task | Start | Finish | Duration | Total float | Other |
| --- | --- | --- | --- | --- | --- | --- |
| 1 | Integracion con el Sistema STARS (Lectura Datos) | 2010-06-02 → 2010-06-04 (+2d) | 2010-06-07 → 2010-06-10 (+3d) | 4d → 5d | 18d → 13d |  |
| 2 | Modulo Seguridad que Oculta Info Llamado | 2010-06-08 → 2010-06-11 (+3d) | 2010-06-09 → 2010-06-15 (+6d) | 1.5d → 3d | 36.5d → 78d |  |
| 3 | **(GEN01) Identificacion y Autenticacion** | 2010-06-08 → 2010-06-11 (+3d) | 2010-06-10 → 2010-06-16 (+6d) | 3d → 4d | 31.5d → 65d |  |
| 4 | Autenticacion | 2010-06-08 → 2010-06-11 (+3d) | 2010-06-09 → 2010-06-14 (+5d) |  | 29d → 66d | constraint none → start no earlier than 2010-06-10; resources Prog SSr 1 → Programador Jr 1 |
| 5 | Interfaz Inicio Sesion | 2010-06-08 → 2010-06-11 (+3d) | 2010-06-10 → 2010-06-15 (+5d) |  | 28d → 65d | constraint none → start no earlier than 2010-06-08; resources Prog SSr 2 → Prog SSr 1 |
| 7 | **(GEN02) Gestion General de Registros** | 2010-06-09 → 2010-06-11 (+2d) | 2010-06-17 → 2010-07-06 (+19d) | 6.5d → 18d | 33.5d → 63d |  |
| 8 | ABM Registro | 2010-06-10 → 2010-06-24 (+14d) | 2010-06-14 → 2010-06-24 (+10d) |  | 33.5d → 69d | constraint finish no earlier than 2010-06-10 → start no earlier than 2010-06-11; resources Programador Jr 1 → Programador Jr 2 |
| 9 | Buscar registro | 2010-06-11 → 2010-06-25 (+14d) | 2010-06-11 → 2010-06-25 (+14d) |  | 34d → 68d | constraint start no earlier than 2010-06-09 → start no earlier than 2010-06-25; resources Programador Jr 1 → Programador Jr 2 |
| 10 | Copiar registro | 2010-06-09 → 2010-06-11 (+2d) | 2010-06-10 → 2010-06-11 (+1d) |  | 35.5d → 76d | constraint start no earlier than 2010-06-09 → start no earlier than 2010-06-10; resources Programador Jr 1 → Programador Jr 2 |
| 11 | Interfaz ABM Registro | 2010-06-15 → 2010-06-28 (+13d) | 2010-06-17 → 2010-06-30 (+13d) |  | 30d → 65d | constraint none → start no earlier than 2010-06-28; resources Prog SSr 2 → Programador Sr 2 |
| 13 | **(USR01) Determinacion del servicio de atencion** | 2010-07-20 → 2010-08-16 (+27d) | 2010-07-21 → 2010-09-01 (+42d) | 2d → 13d | 2.5d → 11d |  |
| 14 | Capturar la Comunicación???? | 2010-07-21 → 2010-08-16 (+26d) | 2010-07-21 → 2010-08-16 (+26d) |  | 2.5d → 20d | constraint start no earlier than 2010-07-21 → start no earlier than 2010-08-16 |
| 15 | Determinar el tipo de servicio | 2010-07-20 → 2010-08-26 (+37d) | 2010-07-20 → 2010-08-26 (+37d) |  | 3.5d → 12d | constraint start no earlier than 2010-06-28 → start no earlier than 2010-08-26; resources Programador Jr 2 → Programador Jr 1 |
| 16 | Lista de Espera | 2010-07-20 → 2010-08-19 (+30d) | 2010-07-20 → 2010-08-19 (+30d) |  | 3.5d → 17d | constraint start no earlier than 2010-06-29 → start no earlier than 2010-08-19 |
| 17 | Determinar conjunto de operadores adecuados al tipo de solicitud | 2010-07-21 → 2010-08-30 (+40d) | 2010-07-21 → 2010-08-30 (+40d) |  | 2.5d → 10d | constraint start no earlier than 2010-07-21 → start no earlier than 2010-08-30 |
| 19 | **(USR02) Agenda** | 2010-06-17 → 2010-07-09 (+22d) | 2010-07-16 → 2010-07-28 (+12d) | 22d → 14d | 8.5d → 43d |  |
| 20 | Selección de una agenda | 2010-06-22 → 2010-07-22 (+30d) | 2010-06-23 → 2010-07-23 (+30d) | 1d → 2d | 22.5d → 44d | constraint start no earlier than 2010-06-17 → start no earlier than 2010-07-22 |
| 21 | ABM citas sobre la agenda | 2010-06-21 → 2010-07-15 (+24d) | 2010-06-22 → 2010-07-15 (+23d) |  | 23.5d → 50d | constraint start no earlier than 2010-06-16 → start no earlier than 2010-07-15 |
| 22 | Interfaz de la Agenda | 2010-06-18 → 2010-07-12 (+24d) | 2010-06-21 → 2010-07-14 (+23d) | 2d → 3d | 24d → 51d | constraint none → start no earlier than 2010-07-12; resources Programador Jr 2 → Programador Jr 1 |
| 23 | Integracion con Stars - Llamada desde Agenda | 2010-07-14 → 2010-07-13 (-1d) | 2010-07-16 → 2010-07-20 (+4d) | 3d → 6d | 8.5d → 47d | constraint none → start no earlier than 2010-07-13; resources Prog SSr 1; Prog SSr 2 → Programador Sr 1 |
| 24 | Asignar pacientes a cita | 2010-06-17 → 2010-07-09 (+22d) | 2010-06-17 → 2010-07-09 (+22d) |  | 26d → 54d | constraint none → start no earlier than 2010-07-08; resources Programador Jr 2 → Programador Jr 1 |
| 26 | **(USR03) Rellamada** | 2010-07-28 → 2010-08-16 (+19d) | 2010-07-29 → 2010-08-25 (+27d) | 2d → 8d | 3.5d → 27d |  |
| 29 | **(USR04) Consulta** | 2010-06-08 → 2010-06-14 (+6d) | 2010-06-14 → 2010-06-21 (+7d) | 5d → 6d | 11.5d → 10d |  |
| 30 | **Tratar Consulta** | 2010-06-08 → 2010-06-14 (+6d) | 2010-06-08 → 2010-06-15 (+7d) | 0.5d → 2d | 16d → 14d |  |
| 31 | Ajornar Consulta | 2010-06-08 → 2010-06-15 (+7d) | 2010-06-08 → 2010-06-15 (+7d) | 0.5d → 1d | 24.5d → 14d | constraint none → start no earlier than 2010-06-15; resources Programador Jr 1 → Programador Jr 2 |
| 32 | Transferir consulta | 2010-06-08 → 2010-06-14 (+6d) | 2010-06-08 → 2010-06-14 (+6d) | 0.5d → 1d | 24.5d → 15d | constraint none → start no earlier than 2010-06-14 |
| 33 | Modulo Envio de Correo | 2010-06-10 → 2010-06-15 (+5d) | 2010-06-11 → 2010-06-16 (+5d) |  | 21d → 13d | constraint none → start no earlier than 2010-06-15; resources Prog SSr 1 → Programador Jr 1 |
| 34 | Modulo Envio SMS | 2010-06-11 → 2010-06-16 (+5d) | 2010-06-14 → 2010-06-21 (+7d) | 2d → 4d | 20d → 10d | constraint none → start no earlier than 2010-06-16; resources Prog SSr 2 → Programador Sr 1 |
| 35 | Inclusion en Campaña de Seguimiento | 2010-06-08 → 2010-06-18 (+10d) | 2010-06-09 → 2010-06-18 (+9d) |  | 23.5d → 11d | constraint none → start no earlier than 2010-06-18; resources Programador Jr 1 → Programador Jr 2 |
| 37 | **(USR05) Consejo Salud** | 2010-07-13 → 2010-08-23 (+41d) | 2010-07-19 → 2010-08-27 (+39d) | 2d → 5d | 13.5d → 25d | resources Prog SSr 1 → none |
| 40 | **(USR06) Gestionar Consulta pendiente** | 2010-07-19 → 2010-08-05 (+17d) | 2010-07-19 → 2010-08-11 (+23d) | 1d → 5d | 3.5d → 24d |  |
| 41 | Priorizacion de la Lista de Consultas | 2010-07-19 → 2010-08-05 (+17d) | 2010-07-19 → 2010-08-05 (+17d) |  | 3.5d → 25d | constraint none → start no earlier than 2010-08-05; resources Prog SSr 2 → Programador Jr 1 |
| 43 | **(USR07) Programacion de cita previa** | 2010-07-20 → 2010-08-11 (+22d) | 2010-07-21 → 2010-08-26 (+36d) | 2d → 12d | 9.5d → 26d |  |
| 44 | Realizar Citación (Interface con Sistema de citación AP) | 2010-07-20 → 2010-08-11 (+22d) | 2010-07-21 → 2010-08-12 (+22d) |  | 9.5d → 33d | constraint none → start no earlier than 2010-08-11 |
| 46 | **(USR08) Gestiones sobre la TSI** | 2010-06-29 → 2010-08-11 (+43d) | 2010-07-05 → 2010-09-02 (+59d) | 4d → 17d | 11.5d → -36d |  |
| 47 | Verificacion Documentacion Necesaria | 2010-06-29 → 2010-08-11 (+43d) | 2010-06-30 → 2010-08-11 (+42d) |  | 14.5d → -21d | constraint start no earlier than 2010-06-29 → start no earlier than 2010-08-11 |
| 48 | Enviar Gestion (Interface con sistema RCA) | 2010-06-30 → 2010-08-24 (+55d) | 2010-07-01 → 2010-08-25 (+55d) | 1d → 2d | 13.5d → -31d | constraint none → start no earlier than 2010-08-24 |
| 49 | Cierre automatico de la consulta por paso de tiempo | 2010-07-01 → 2010-08-18 (+48d) | 2010-07-02 → 2010-08-18 (+47d) |  | 12.5d → -26d | constraint none → start no earlier than 2010-08-18 |
| 50 | Guardar LOG gestion TSI | 2010-07-02 → 2010-08-11 (+40d) | 2010-07-05 → 2010-08-11 (+37d) |  | 11.5d → -21d | was named Guardar LOG gestion TSI?????; constraint none → start no earlier than 2010-08-05; resources Programador Jr 1 → Programador Jr 2 |
| 52 | **(USR09) Servicio de traduccion** | 2010-06-22 → 2010-08-02 (+41d) | 2010-06-30 → 2010-08-31 (+62d) | 7d → 22d | 24.5d → 23d |  |
| 53 | Contactar Servicio Externo de Traduccion | 2010-06-22 → 2010-08-19 (+58d) | 2010-06-23 → 2010-08-23 (+61d) | 2d → 3d | 29.5d → 25d | constraint none → start no earlier than 2010-08-19; resources Programador Jr 2 → Prog SSr 1 |
| 54 | Enlace Comunicacion Multiconferencia | 2010-06-24 → 2010-08-02 (+39d) | 2010-06-28 → 2010-08-05 (+38d) | 3d → 4d | 26.5d → 39d | constraint none → start no earlier than 2010-07-27; resources Programador Jr 2 → Programador Sr 2 |
| 55 | Modulo monitorización de servicio | 2010-06-29 → 2010-08-11 (+43d) | 2010-06-30 → 2010-08-12 (+43d) |  | 24.5d → 32d | constraint none → start no earlier than 2010-08-11; resources Programador Jr 2 → Programador Sr 2 |
| 57 | **(USR10) Informacion Sanitaria General** | 2010-07-26 → 2010-09-10 (+46d) | 2010-07-26 → 2010-09-13 (+49d) | 1d → 2d | 6.5d → 14d |  |
| 58 | Guardar Informacion Ciudadano | 2010-07-26 → 2010-09-10 (+46d) | 2010-07-26 → 2010-09-10 (+46d) |  | 6.5d → 14d | constraint none → start no earlier than 2010-09-07; resources none → Programador Jr 2 |
| 60 | **(USR11) Seguimiento de Patologias** | 2010-07-20 → 2010-08-13 (+24d) | 2010-07-21 → 2010-09-06 (+47d) | 2d → 17d | 7.5d → 19d |  |
| 61 | Buscar Campañas Abiertas | 2010-07-20 → 2010-08-13 (+24d) | 2010-07-20 → 2010-08-13 (+24d) |  | 10.5d → 31d | constraint none → start no earlier than 2010-08-13; resources none → Programador Jr 2 |
| 62 | **Gestionar Seguimiento** | 2010-07-20 → 2010-08-13 (+24d) | 2010-07-21 → 2010-08-26 (+36d) | 2d → 10d | 7.5d → 24d |  |
| 63 | Visualizar Historial Pacientes | 2010-07-20 → 2010-08-13 (+24d) | 2010-07-21 → 2010-08-13 (+23d) | 2d → 1d | 9.5d → 31d | constraint none → start no earlier than 2010-08-13; resources none → Prog SSr 1 |
| 64 | Llamada al Paciente | 2010-07-20 → 2010-08-25 (+36d) | 2010-07-20 → 2010-08-26 (+37d) | 1d → 2d | 10.5d → 22d | constraint none → start no earlier than 2010-08-25; resources none → Programador Jr 2 |
| 65 | Desligar paciente de campaña | 2010-07-20 → 2010-08-27 (+38d) | 2010-07-20 → 2010-08-27 (+38d) |  | 10.5d → 21d | constraint none → start no earlier than 2010-08-27; resources none → Prog SSr 1 |
| 67 | **(USR12) Encuestas** | 2010-06-07 → 2010-07-02 (+25d) | 2010-07-20 → 2010-07-26 (+6d) | 32d → 17d | 0d → 49d |  |
| 68 | Interfaz de Encuestas | 2010-06-24 → 2010-07-20 (+26d) | 2010-06-29 → 2010-07-22 (+23d) |  | 15.5d → 49d | constraint start no earlier than 2010-06-24 → start no earlier than 2010-07-20; resources Programador Jr 1 → Programador Jr 2 |
| 69 | Contacto con Encuestado | 2010-06-07 → 2010-07-02 (+25d) | 2010-07-20 → 2010-07-05 (-15d) |  | 0d → 62d | constraint none → start no earlier than 2010-06-16; resources Prog SSr 2 → Programador Sr 2 |
| 70 | ABM Formulario De Encuesta | 2010-06-07 → 2010-07-02 (+25d) | 2010-06-07 → 2010-07-05 (+28d) | 1d → 2d | 33d → 51d | constraint none → start no earlier than 2010-06-16 |
| 72 | **(USR13) Buscar Consultas** | 2010-06-17 → 2010-07-09 (+22d) | 2010-06-21 → 2010-07-29 (+38d) | 3d → 15d | 24d → 43d |  |
| 73 | **Operativo de Busqueda** | 2010-06-17 → 2010-07-09 (+22d) | 2010-06-21 → 2010-07-29 (+38d) | 3d → 15d | 24d → 43d |  |
| 74 | Buscar según distintos criterios | 2010-06-17 → 2010-07-26 (+39d) | 2010-06-21 → 2010-07-28 (+37d) |  | 25.5d → 41d | constraint none → start no earlier than 2010-07-26; resources none → Programador Jr 2 |
| 75 | Filtrar resultados de la busqueda según permisos del usuario | 2010-06-17 → 2010-07-09 (+22d) | 2010-06-17 → 2010-07-09 (+22d) |  | 22d → 56d | constraint none → start no earlier than 2010-07-06; resources none → Programador Jr 2 |
| 76 | Acotar resultados si los mismos sobrepasan el parametro configurable "n" | 2010-06-17 → 2010-07-16 (+29d) | 2010-06-17 → 2010-07-16 (+29d) |  | 22d → 51d | constraint none → start no earlier than 2010-07-16; resources none → Programador Jr 2 |
| 78 | **(USR14) Hacer Uso de Documentos** | 2010-06-15 → 2010-07-19 (+34d) | 2010-06-16 → 2010-08-20 (+65d) | 2d → 25d | 11.5d → 19d |  |
| 79 | Creación y uso de Guias Interrogatorio | 2010-06-15 → 2010-08-09 (+55d) | 2010-06-16 → 2010-08-10 (+55d) |  | 23d → 25d | constraint none → start no earlier than 2010-08-09; resources none → Programador Jr 1 |
| 80 | Creación y uso Fichas Tematicas | 2010-06-15 → 2010-08-12 (+58d) | 2010-06-16 → 2010-08-13 (+58d) |  | 23d → 20d | constraint none → start no earlier than 2010-08-12; resources none → Programador Jr 1 |
| 81 | Creación y uso de Recursos | 2010-06-15 → 2010-07-19 (+34d) | 2010-06-16 → 2010-07-20 (+34d) |  | 23d → 40d | constraint none → start no earlier than 2010-07-19; resources none → Programador Jr 1 |
| 82 | Búsqueda y selección de documentos | 2010-06-15 → 2010-07-27 (+42d) | 2010-06-16 → 2010-07-28 (+42d) |  | 23d → 32d | constraint none → start no earlier than 2010-07-27; resources none → Programador Jr 1 |
| 83 | Apertura documentos | 2010-06-15 → 2010-07-29 (+44d) | 2010-06-15 → 2010-07-30 (+45d) | 1d → 2d | 24d → 30d | constraint none → start no earlier than 2010-07-29; resources none → Programador Jr 1 |
| 85 | **(USR15) Cerrar consulta y dar respuesta al ciudadano** | 2010-06-15 → 2010-06-28 (+13d) | 2010-06-16 → 2010-07-30 (+44d) | 2d → 25d | 11.5d → -15d |  |
| 86 | Clasificar Finalizacion de Consulta | 2010-06-15 → 2010-06-28 (+13d) | 2010-06-16 → 2010-06-29 (+13d) |  | 23d → 7d | constraint none → start no earlier than 2010-06-28; resources none → Programador Jr 1 |
| 87 | Adición de motivo de cierre a la consulta | 2010-06-15 → 2010-07-19 (+34d) | 2010-06-15 → 2010-07-19 (+34d) |  | 24d → -7d | constraint none → start no earlier than 2010-07-19; resources none → Programador Jr 2 |
| 88 | Creación de clasificaciones ad-hoc | 2010-06-15 → 2010-07-23 (+38d) | 2010-06-15 → 2010-07-23 (+38d) |  | 24d → -11d | constraint none → start no earlier than 2010-07-23; resources none → Programador Jr 2 |

| ID | Task | Start | Finish | Duration | Total float | Other |
| --- | --- | --- | --- | --- | --- | --- |
| 90 | **(USR16) Visualizar Consulta** | 2010-06-15 → 2010-06-30 (+15d) | 2010-06-16 → 2010-07-08 (+22d) | 2d → 7d | 24d → 49d |  |
| 91 | Mostrar datos generales de la consulta | 2010-06-15 → 2010-07-06 (+21d) | 2010-06-16 → 2010-07-07 (+21d) |  | 20d → 49d | constraint none → start no earlier than 2010-06-30; resources none → Programador Jr 1 |
| 92 | Mostrar datos según el documento elegido | 2010-06-15 → 2010-06-30 (+15d) | 2010-06-16 → 2010-07-01 (+15d) |  | 20d → 53d | constraint none → start no earlier than 2010-06-30; resources none → Programador Jr 1 |
| 94 | **(USR17) Crear/Transferir Consulta** | 2010-06-15 → 2010-06-22 (+7d) | 2010-06-16 → 2010-08-10 (+55d) | 2d → 36d | 23d → -22d |  |
| 95 | Crear Consulta | 2010-06-15 → 2010-06-22 (+7d) | 2010-06-16 → 2010-06-23 (+7d) |  | 23d → 10d | constraint none → start no earlier than 2010-06-21; resources none → Programador Jr 1 |
| 96 | Copiar consulta | 2010-06-15 → 2010-06-23 (+8d) | 2010-06-15 → 2010-06-23 (+8d) |  | 24d → 10d | constraint none → start no earlier than 2010-06-23; resources none → Programador Jr 2 |
| 97 | **Transferir Consulta** | 2010-06-15 → 2010-08-06 (+52d) | 2010-06-15 → 2010-08-06 (+52d) |  | 24d → -22d |  |
| 98 | Localizar a otro operador del mismo perfil | 2010-06-15 → 2010-08-06 (+52d) | 2010-06-15 → 2010-08-06 (+52d) |  | 24d → -22d | constraint none → start no earlier than 2010-08-06; resources none → Programador Jr 1 |
| 100 | **(ADM01) Mantenimiento del Entorno, clasif y prioridades** | 2010-06-02 → 2010-06-04 (+2d) | 2010-06-24 → 2010-08-13 (+50d) | 16.5d → 51d | 18.5d → -22d |  |
| 101 | Módulo de edición de parametros grales de la aplicación | 2010-06-11 → 2010-07-29 (+48d) | 2010-06-23 → 2010-08-03 (+41d) |  | 19.5d → -16d | constraint none → start no earlier than 2010-07-29; resources Programador Sr 2 → Programador Sr 1 |
| 102 | Módulo edición listas de clasificaciones (Códigos internos) | 2010-06-10 → 2010-08-04 (+55d) | 2010-06-15 → 2010-08-06 (+52d) |  | 25.5d → -19d | constraint none → start no earlier than 2010-08-04 |
| 103 | **Módulo mantenimiento de la lista de espera** |  | 2010-06-07 → 2010-06-09 (+2d) | 2d → 4d | 31d → 23d |  |
| 104 | ABM de la lista de espera | 2010-06-07 → 2010-06-04 (-3d) | 2010-06-07 → 2010-06-04 (-3d) |  | 31d → 26d | constraint none → start no earlier than 2010-06-03 |
| 105 | Módulo de gestión de prioridades sobre la lista de espera | 2010-06-04 → 2010-06-08 (+4d) | 2010-06-04 → 2010-06-09 (+5d) | 1d → 2d | 32d → 23d | constraint none → start no earlier than 2010-06-08; resources Prog SSr 2 → Prog SSr 1 |
| 106 | **Módulo mantenimiento de lineas de servicio** | 2010-06-02 → 2010-06-04 (+2d) | 2010-06-03 → 2010-06-07 (+4d) |  | 33d → 25d |  |
| 107 | ABM lineas de servicio | 2010-06-02 → 2010-06-04 (+2d) | 2010-06-02 → 2010-06-04 (+2d) |  | 34d → 26d |  |
| 108 | ABM servicios para una linea seleccionada | 2010-06-03 → 2010-06-07 (+4d) | 2010-06-03 → 2010-06-07 (+4d) |  | 33d → 25d | constraint none → start no earlier than 2010-06-07; resources Programador Jr 2 → Programador Jr 1 |
| 109 | **Módulo mantenimiento agendas** | 2010-06-02 → 2010-06-07 (+5d) | 2010-06-24 → 2010-06-25 (+1d) | 16.5d → 15d | 18.5d → 11d |  |
| 110 | Asignar operadores a agenda | 2010-06-04 → 2010-06-08 (+4d) | 2010-06-04 → 2010-06-08 (+4d) |  | 32d → 24d | constraint none → start no earlier than 2010-06-08; resources Prog SSr 1 → Programador Jr 2 |
| 111 | ABM de usuarios de la agenda | 2010-06-23 → 2010-06-25 (+2d) | 2010-06-24 → 2010-06-25 (+1d) |  | 18.5d → 11d | constraint start no earlier than 2010-06-23 → start no earlier than 2010-06-25 |
| 112 | ABM citas de la agenda | 2010-06-02 → 2010-06-07 (+5d) | 2010-06-02 → 2010-06-07 (+5d) |  | 34d → 25d | constraint none → start no earlier than 2010-06-07; resources Programador Jr 1 → Programador Jr 2 |
| 113 | **Módulo mantenimiento BBDD** | 2010-06-09 → 2010-08-09 (+61d) | 2010-06-11 → 2010-08-11 (+61d) | 2d → 3d | 27.5d → -22d |  |
| 114 | Módulo comprobación de formato de archivo | 2010-06-09 → 2010-08-09 (+61d) | 2010-06-10 → 2010-08-09 (+60d) |  | 28.5d → -20d | constraint none → start no earlier than 2010-08-09 |
| 115 | Módulo actualización de BBDD | 2010-06-09 → 2010-08-10 (+62d) | 2010-06-11 → 2010-08-11 (+61d) |  | 27.5d → -22d | constraint none → start no earlier than 2010-08-10; resources Programador Sr 2 → Programador Sr 1 |
| 117 | **(ADM02) Extraccion de estadisticas y listados** | 2010-07-01 → 2010-08-16 (+46d) | 2010-07-23 → 2010-08-23 (+31d) | 17d → 6d | 2.5d → 21d |  |
| 118 | Listados De Administración | 2010-07-22 → 2010-08-16 (+25d) | 2010-07-23 → 2010-08-17 (+25d) |  | 2.5d → 22d | constraint none → start no earlier than 2010-08-16; resources Prog SSr 1 → Programador Sr 1 |
| 119 | **Listados Comunes** | 2010-07-01 → 2010-08-16 (+46d) | 2010-07-07 → 2010-08-20 (+44d) |  | 14.5d → 21d |  |
| 120 | Detalle de estado de finalización consulta/acción | 2010-07-05 → 2010-08-18 (+44d) | 2010-07-05 → 2010-08-18 (+44d) |  | 16.5d → 21d | constraint start no earlier than 2010-07-01 → start no earlier than 2010-08-18; resources Programador Sr 1 → Programador Jr 2 |
| 121 | Listado de clasificaciones | 2010-07-02 → 2010-08-16 (+45d) | 2010-07-02 → 2010-08-16 (+45d) |  | 17.5d → 25d | constraint start no earlier than 2010-07-01 → start no earlier than 2010-06-29; resources Programador Sr 1 → Programador Jr 2 |
| 122 | Listados de incidencias en las comunicaciones | 2010-07-06 → 2010-08-19 (+44d) | 2010-07-06 → 2010-08-19 (+44d) |  | 15.5d → 20d | constraint start no earlier than 2010-07-01 → start no earlier than 2010-08-19; resources Programador Sr 1 → Programador Jr 2 |
| 123 | Ratios por usuario | 2010-07-07 → 2010-08-20 (+44d) | 2010-07-07 → 2010-08-20 (+44d) |  | 14.5d → 19d | constraint start no earlier than 2010-07-01 → start no earlier than 2010-08-20; resources Programador Sr 1 → Programador Jr 2 |
| 124 | Finales de servicio | 2010-07-01 → 2010-08-17 (+47d) | 2010-07-01 → 2010-08-17 (+47d) |  | 18.5d → 22d | constraint start no earlier than 2010-07-01 → start no earlier than 2010-08-17; resources Programador Sr 1 → Programador Jr 1 |
| 126 | **(ADM03) Mantenimiento de documentos** | 2010-06-23 → 2010-08-31 (+69d) | 2010-07-05 → 2010-09-07 (+64d) | 8d → 6d | 21d → 16d |  |
| 127 | Creación y edición de documentos | 2010-06-24 → 2010-09-06 (+74d) | 2010-06-29 → 2010-09-07 (+70d) |  | 24.5d → 16d | constraint none → start no earlier than 2010-09-06 |
| 128 | Borrado de documentos | 2010-06-30 → 2010-09-06 (+68d) | 2010-06-30 → 2010-09-06 (+68d) |  | 23.5d → 15d | constraint none → start no earlier than 2010-09-06; resources Programador Sr 2 → Programador Jr 2 |
| 129 | Clasificación de documentos | 2010-07-01 → 2010-08-31 (+61d) | 2010-07-01 → 2010-08-31 (+61d) |  | 22.5d → 19d | constraint none → start no earlier than 2010-08-31; resources Programador Sr 2 → Programador Jr 2 |
| 130 | Búsqueda de documentos | 2010-06-23 → 2010-09-06 (+75d) | 2010-07-05 → 2010-09-07 (+64d) |  | 21d → 14d | constraint none → start no earlier than 2010-09-06; resources Programador Sr 2 → Programador Jr 1 |
| 131 | (ADM04) Mantenimiento de Recursos | 2010-06-17 → 2010-08-23 (+67d) | 2010-06-18 → 2010-08-25 (+68d) | 2d → 3d | 23d → 19d | constraint none → start no earlier than 2010-08-02; resources none → Programador Sr 2 |
| 132 | (ADM05) Mantenimiento de guias de interrogatorio | 2010-06-22 → 2010-08-30 (+69d) | 2010-06-23 → 2010-09-01 (+70d) | 2d → 3d | 23d → 16d | constraint none → start no earlier than 2010-08-30; resources none → Prog SSr 1 |
| 133 | (ADM06) Mantenimiento de Fichas tematicas | 2010-06-22 → 2010-08-30 (+69d) | 2010-06-23 → 2010-09-01 (+70d) | 2d → 3d | 23d → 18d | constraint none → start no earlier than 2010-08-27; resources none → Programador Sr 1 |
| 134 | **(ADM07) Mantenimiento de relaciones sobre guias de interrogatorio y fichas tematicas** | 2010-06-21 → 2010-08-26 (+66d) | 2010-06-21 → 2010-08-27 (+67d) | 1d → 2d | 22.5d → 18d |  |
| 135 | Adición de documentos a fichas temáticas | 2010-06-21 → 2010-08-27 (+67d) | 2010-06-21 → 2010-08-27 (+67d) |  | 23d → 16d | constraint none → start no earlier than 2010-08-27; resources none → Programador Jr 2 |
| 136 | Adición de documentos a guias de interrogatorio | 2010-06-21 → 2010-08-26 (+66d) | 2010-06-21 → 2010-08-26 (+66d) |  | 23d → 17d | constraint none → start no earlier than 2010-08-26; resources none → Prog SSr 1 |
| 137 | **(ADM08) Mantenimiento de encuestas** | 2010-06-04 → 2010-07-02 (+28d) | 2010-06-04 → 2010-07-21 (+47d) | 1d → 14d | 42.5d → 52d |  |
| 138 | **Mantenimiento Indice de Encuestas** | 2010-06-04 → 2010-07-12 (+38d) | 2010-06-04 → 2010-07-14 (+40d) | 1d → 3d | 42.5d → 57d |  |
| 139 | Mantener Ediciones | 2010-06-04 → 2010-07-12 (+38d) | 2010-06-04 → 2010-07-13 (+39d) | 1d → 2d | 39d → 56d | constraint none → start no earlier than 2010-07-12; resources none → Programador Jr 2 |
| 140 | Cierre de ediciones | 2010-06-04 → 2010-07-14 (+40d) | 2010-06-04 → 2010-07-14 (+40d) |  | 39d → 55d | constraint none → start no earlier than 2010-07-14; resources none → Programador Jr 2 |
| 141 | Asignación de formulario a encuesta | 2010-06-04 → 2010-07-16 (+42d) | 2010-06-04 → 2010-07-16 (+42d) |  | 39d → 53d | constraint none → start no earlier than 2010-07-16; resources none → Programador Jr 1 |
| 142 | Asignación de operadores a encuesta | 2010-06-04 → 2010-07-02 (+28d) | 2010-06-04 → 2010-07-02 (+28d) |  | 39d → 65d | constraint none → start no earlier than 2010-07-02; resources none → Programador Jr 1 |
| 143 | **Asignación lista de encuestados** | 2010-06-04 → 2010-07-07 (+33d) | 2010-06-04 → 2010-07-21 (+47d) | 1d → 11d | 42.5d → 52d |  |
| 144 | Alta, baja de encuestados | 2010-06-04 → 2010-07-07 (+33d) | 2010-06-04 → 2010-07-07 (+33d) |  | 39d → 60d | constraint none → start no earlier than 2010-07-07; resources none → Programador Jr 2 |
| 145 | Asignación automática en base a un archivo de texto | 2010-06-04 → 2010-07-21 (+47d) | 2010-06-04 → 2010-07-21 (+47d) |  | 39d → 50d | constraint none → start no earlier than 2010-07-21; resources none → Programador Jr 1 |
| 146 | Publicar Encuestas | 2010-06-04 → 2010-07-15 (+41d) | 2010-06-04 → 2010-07-15 (+41d) |  | 39d → 54d | constraint none → start no earlier than 2010-07-15; resources none → Programador Jr 2 |
| 147 | **(ADM09) Mantenimiento de seguimiento de patologias** | 2010-06-24 → 2010-08-16 (+53d) | 2010-06-29 → 2010-08-23 (+55d) | 3d → 6d |  |  |
| 148 | Mantenimiento Indice de campañas de seguimiento | 2010-06-24 → 2010-08-16 (+53d) | 2010-06-25 → 2010-08-17 (+53d) | 1d → 2d |  | constraint start no earlier than 2010-06-21 → start no earlier than 2010-08-16; resources Programador Sr 1 → Programador Sr 2 |
| 149 | Asignación de formulario a campaña de seguimiento | 2010-06-25 → 2010-08-20 (+56d) | 2010-06-28 → 2010-08-20 (+53d) |  | 25d → 23d | constraint start no earlier than 2010-06-25 → start no earlier than 2010-08-20; resources Programador Sr 1 → Programador Jr 1 |
| 150 | Asignación de operadores a campaña de seguimiento | 2010-06-28 → 2010-08-23 (+56d) | 2010-06-29 → 2010-08-23 (+55d) |  | 24d → 22d | constraint start no earlier than 2010-06-28 → start no earlier than 2010-08-23; resources Programador Sr 1 → Programador Jr 1 |
| 151 | Asignación de listas de pacientes | 2010-06-24 → 2010-08-18 (+55d) | 2010-06-25 → 2010-08-18 (+54d) |  | 26d → 25d | constraint start no earlier than 2010-06-23 → start no earlier than 2010-08-18; resources Programador Sr 2 → Prog SSr 1 |
| 152 | Activación/ Desactivación de campañas | 2010-06-25 → 2010-08-17 (+53d) | 2010-06-28 → 2010-08-17 (+50d) |  | 25d → 26d | constraint start no earlier than 2010-06-25 → start no earlier than 2010-08-17; resources Programador Sr 2 → Programador Jr 2 |
| 154 | **(ADM10) Creacion de formularios de encuesta y seguimiento** | 2010-06-02 → 2010-06-04 (+2d) | 2010-06-03 → 2010-07-01 (+28d) | 2d → 20d | 1d → 51d |  |
| 155 | Mantener Indice de Encuesta | 2010-06-02 → 2010-06-28 (+26d) | 2010-06-03 → 2010-06-29 (+26d) |  | 35d → 50d | constraint none → start no earlier than 2010-06-28; resources Prog SSr 2 → Programador Sr 1 |
| 156 | Crear y Editar Encuestas | 2010-06-02 → 2010-06-04 (+2d) | 2010-06-03 → 2010-06-07 (+4d) |  | 35d → 66d |  |
| 158 | **(ADM11) Mantenimiento de usuarios, perfiles y permisos** | 2010-06-10 → 2010-06-16 (+6d) | 2010-06-16 → 2010-06-28 (+12d) | 4d → 9d | 17.5d → 61d |  |
| 159 | Mantenimiento Opciones Funcionales | 2010-06-14 → 2010-06-16 (+2d) | 2010-06-15 → 2010-06-17 (+2d) |  | 13d → 66d | constraint none → start no earlier than 2010-06-16; resources none → Programador Sr 2 |
| 160 | **Mantener Perfiles Trabajo** | 2010-06-10 → 2010-06-16 (+6d) | 2010-06-15 → 2010-06-18 (+3d) |  | 18.5d → 67d |  |
| 161 | Alta, modificación de perfiles | 2010-06-14 → 2010-06-18 (+4d) | 2010-06-15 → 2010-06-18 (+3d) |  | 13.5d → 65d | constraint none → start no earlier than 2010-06-18; resources none → Programador Jr 1 |
| 162 | ABM de opciones funcionales a perfil | 2010-06-10 → 2010-06-16 (+6d) | 2010-06-11 → 2010-06-16 (+5d) |  | 15.5d → 67d | constraint none → start no earlier than 2010-06-16; resources none → Programador Jr 2 |
| 163 | Adición de responsabilidades a opciones funcionales | 2010-06-11 → 2010-06-17 (+6d) | 2010-06-14 → 2010-06-17 (+3d) |  | 14.5d → 66d | constraint none → start no earlier than 2010-06-17; resources none → Programador Jr 2 |
| 164 | **Mantener Usuarios** | 2010-06-11 → 2010-06-17 (+6d) | 2010-06-16 → 2010-06-28 (+12d) | 3d → 8d | 17.5d → 61d |  |
| 165 | Creación/gestion de usuarios | 2010-06-11 → 2010-06-17 (+6d) | 2010-06-14 → 2010-06-17 (+3d) |  | 14.5d → 66d | constraint none → start no earlier than 2010-06-17; resources none → Programador Jr 1 |

| ID | Task | Start | Finish | Duration | Total float | Predecessors | Other |
| --- | --- | --- | --- | --- | --- | --- | --- |
| 166 | Asiganción de perfil a usuario | 2010-06-14 → 2010-06-21 (+7d) | 2010-06-15 → 2010-06-21 (+6d) |  | 13.5d → 64d |  | constraint none → start no earlier than 2010-06-21; resources none → Programador Jr 2 |
| 167 | Asignación de agendas a usuario | 2010-06-15 → 2010-06-28 (+13d) | 2010-06-16 → 2010-06-28 (+12d) |  | 12.5d → 59d |  | constraint none → start no earlier than 2010-06-28; resources none → Programador Jr 2 |
| 169 | **(ADM12) Listado de acciones proactivas** | 2010-07-26 → 2010-08-25 (+30d) | 2010-07-27 → 2010-09-15 (+50d) | 2d → 16d | 5.5d → 12d |  |  |
| 170 | Módulo de elaboraciónde informes de estado de campaña de seguimiento | 2010-07-26 → 2010-08-25 (+30d) | 2010-07-27 → 2010-08-27 (+31d) | 2d → 3d | 5.5d → 21d |  | constraint none → start no earlier than 2010-08-25; resources none → Programador Sr 1 |
| 171 | Módulo de elaboración de informes de estado de encuesta | 2010-07-26 → 2010-08-26 (+31d) | 2010-07-27 → 2010-08-30 (+34d) | 2d → 3d | 5.5d → 20d |  | constraint none → start no earlier than 2010-08-26; resources none → Programador Sr 2 |
| 172 | Módulo de elaboración de informes de ediciones de encuestas | 2010-07-26 → 2010-09-02 (+38d) | 2010-07-27 → 2010-09-06 (+41d) | 2d → 3d | 5.5d → 15d |  | constraint none → start no earlier than 2010-09-02; resources none → Programador Sr 1 |
| 173 | Módulo de elaboración de listados de campañas de seguimiento | 2010-07-26 → 2010-09-08 (+44d) | 2010-07-27 → 2010-09-10 (+45d) | 2d → 3d | 5.5d → 11d |  | constraint none → start no earlier than 2010-09-08; resources none → Programador Sr 2 |
| 174 | Módulo de elaboración de listados de información de encuestas | 2010-07-26 → 2010-09-09 (+45d) | 2010-07-27 → 2010-09-13 (+48d) | 2d → 3d | 5.5d → 10d |  | constraint none → start no earlier than 2010-09-09; resources none → Programador Sr 1 |
| 176 | **(ADM13) Listados de documentos** | 2010-07-26 → 2010-09-08 (+44d) | 2010-07-26 → 2010-09-10 (+46d) | 1d → 3d | 6.5d → 15d |  |  |
| 177 | Elaboración de listado de configuración | 2010-07-26 → 2010-09-08 (+44d) | 2010-07-26 → 2010-09-08 (+44d) |  | 6.5d → 16d |  | constraint none → start no earlier than 2010-09-07; resources none → Programador Jr 1 |
| 178 | Elaboración de listado de uso | 2010-07-26 → 2010-09-08 (+44d) | 2010-07-26 → 2010-09-08 (+44d) |  | 6.5d → 16d |  | constraint none → start no earlier than 2010-09-06; resources none → Programador Jr 2 |
| 179 | Elaboración de listado de asociaciones | 2010-07-26 → 2010-09-09 (+45d) | 2010-07-26 → 2010-09-09 (+45d) |  | 6.5d → 13d |  | constraint none → start no earlier than 2010-09-09; resources none → Programador Jr 2 |
| 181 | **(ADM14) Listado sobre consultas** | 2010-07-26 → 2010-08-31 (+36d) | 2010-07-26 → 2010-09-21 (+57d) | 1d → 16d | 6.5d → 8d |  |  |
| 182 | Módulo de obtención de listados de consulta por ciudadano | 2010-07-26 → 2010-09-13 (+49d) | 2010-07-26 → 2010-09-14 (+50d) | 1d → 2d | 6.5d → 9d |  | constraint none → start no earlier than 2010-09-13; resources none → Prog SSr 1 |
| 183 | Módulo de obtención de listados de consultas con cierre principal | 2010-07-26 → 2010-08-31 (+36d) | 2010-07-26 → 2010-09-01 (+37d) | 1d → 2d | 6.5d → 18d |  | constraint none → start no earlier than 2010-08-31; resources none → Programador Sr 2 |
| 184 | Módulo de obtención de listados de consulta con cierre secundario | 2010-07-26 → 2010-09-02 (+38d) | 2010-07-26 → 2010-09-03 (+39d) | 1d → 2d | 6.5d → 16d |  | constraint none → start no earlier than 2010-09-02; resources none → Programador Sr 2 |
| 185 | Módulo de obtención de listados de consulta por motivo de cierre | 2010-07-26 → 2010-09-09 (+45d) | 2010-07-26 → 2010-09-10 (+46d) | 1d → 2d | 6.5d → 11d |  | constraint none → start no earlier than 2010-09-09; resources none → Prog SSr 1 |
| 186 | Módulo de obtención de listado de resumen de consultas por servicio | 2010-07-26 → 2010-09-16 (+52d) | 2010-07-26 → 2010-09-17 (+53d) | 1d → 2d | 6.5d → 6d |  | constraint none → start no earlier than 2010-09-16; resources none → Programador Sr 1 |
| 187 | Módulo de obtención de listado de consultas por área geográfica | 2010-07-26 → 2010-09-13 (+49d) | 2010-07-26 → 2010-09-14 (+50d) | 1d → 2d | 6.5d → 9d |  | constraint none → start no earlier than 2010-09-13; resources none → Programador Sr 2 |
| 188 | Módulo de obtención de listado de consultas por usuario | 2010-07-26 → 2010-09-14 (+50d) | 2010-07-26 → 2010-09-15 (+51d) | 1d → 2d | 6.5d → 8d |  | constraint none → start no earlier than 2010-09-14; resources none → Programador Sr 1 |
| 189 | Módulo de obtención de listado de consultas pendientes | 2010-07-26 → 2010-09-15 (+51d) | 2010-07-26 → 2010-09-16 (+52d) | 1d → 2d | 6.5d → 7d |  | constraint none → start no earlier than 2010-09-15; resources none → Programador Sr 2 |
| 191 | **(ADM15) Mantener Asignaciones TSI** | 2010-07-23 → 2010-07-15 (-8d) | 2010-07-29 → 2010-09-17 (+50d) | 5d → 47d | -2d → 0d |  |  |
| 193 | Recolección de datos de operaciones TSI pendientes | 2010-07-23 → 2010-08-02 (+10d) | 2010-07-23 → 2010-08-04 (+12d) | 1d → 3d | 2d → 40d |  | constraint none → start no earlier than 2010-08-02; resources none → Programador Jr 1 |
| 194 | Migración de los datos a archivo TXT | 2010-07-23 → 2010-07-29 (+6d) | 2010-07-26 → 2010-07-30 (+4d) |  | 1d → 43d |  | constraint none → start no earlier than 2010-07-29; resources none → Programador Jr 2 |
| 195 | Interface de comunicación con CatSalut | 2010-07-23 → 2010-07-15 (-8d) | 2010-07-29 → 2010-07-21 (-8d) |  | -2d → 50d |  | constraint none → start no earlier than 2010-07-15; resources none → Programador Sr 2 |
| 197 | **(ADM16) Asignar documentos a acciones** | 2010-07-05 → 2010-09-08 (+65d) | 2010-07-06 → 2010-09-22 (+78d) | 1d → 11d | 21d → 7d |  |  |
| 198 | Creación/eliminación de asociaciones | 2010-07-05 → 2010-09-13 (+70d) | 2010-07-06 → 2010-09-13 (+69d) |  | 21d → 11d |  | constraint none → start no earlier than 2010-09-13; resources none → Programador Jr 2 |
| 199 | Cadicidad de asociaciones | 2010-07-05 → 2010-09-08 (+65d) | 2010-07-06 → 2010-09-08 (+64d) |  | 21d → 16d |  | constraint none → start no earlier than 2010-09-07; resources none → Programador Sr 1 |
| 201 | **(INT01) Direcciones de farmacias, CAP y otra informacion breve** | 2010-07-22 → 2010-09-02 (+42d) | 2010-07-23 → 2010-09-09 (+48d) | 2d → 6d | 2.5d → 8d |  |  |
| 202 | Trabajo con listas de resultados | 2010-07-22 → 2010-09-02 (+42d) | 2010-07-23 → 2010-09-03 (+42d) |  | 2.5d → 11d |  | constraint none → start no earlier than 2010-09-01; resources none → Programador Jr 1 |
| 204 | **(SIS01) Trazabilidad y registro de uso** | 2010-06-14 → 2010-06-21 (+7d) | 2010-08-04 → 2010-08-03 (-1d) | 37.5d → 32d | 0d → 43d |  |  |
| 205 | Control Acceso a Consultas | 2010-06-15 → 2010-06-22 (+7d) | 2010-06-21 → 2010-06-23 (+2d) |  | 28.5d → 68d | 29 → none | constraint none → start no earlier than 2010-06-22 |
| 206 | Control Acceso a Encuestas | 2010-08-02 → 2010-07-06 (-27d) | 2010-08-04 → 2010-07-07 (-28d) |  | 0d → 58d | 67 → none | constraint none → start no earlier than 2010-07-06; resources Programador Sr 1 → Programador Sr 2 |
| 207 | Control General Acceso al Sistema | 2010-06-16 → 2010-06-24 (+8d) | 2010-06-18 → 2010-06-25 (+7d) |  | 29.5d → 66d | 158 → none | constraint none → start no earlier than 2010-06-24 |
| 208 | Control Acceso a Campañas de Seguimiento | 2010-07-22 → 2010-06-21 (-31d) | 2010-07-23 → 2010-06-23 (-30d) |  | 7.5d → 68.5d | 60 → none | constraint none → start no earlier than 2010-06-21 |
| 209 | Control Acceso a Documentos | 2010-06-17 → 2010-07-08 (+21d) | 2010-06-18 → 2010-07-09 (+21d) |  | 29d → 56d | 78 → none | constraint none → start no earlier than 2010-07-08 |
| 210 | Control Acceso a Recursos Internos | 2010-06-16 → 2010-06-21 (+5d) | 2010-06-22 → 2010-06-24 (+2d) |  | 27.5d → 67d |  |  |
| 211 | Historial de Consultas | 2010-06-14 → 2010-07-29 (+45d) | 2010-06-14 → 2010-07-30 (+46d) | 1d → 2d | 36.5d → 41d |  | constraint start no earlier than 2010-06-14 → start no earlier than 2010-06-17 |
| 213 | **(ISC01) Transferir info, comunicacion a STARS** | 2010-06-21 → 2010-06-16 (-5d) |  | 3d → 6d | 29.5d → 72d |  |  |
| 214 | Recibir información del sistema de comunicaciones | 2010-06-21 → 2010-06-16 (-5d) |  | 3d → 6d | 26d → 70d |  | constraint none → start no earlier than 2010-06-16; resources Prog SSr 1; Prog SSr 2 → Prog SSr 1 |
| 215 | **(ISC02) Iniciar llamada desde STARS** | 2010-06-28 → 2010-07-21 (+23d) | 2010-06-30 → 2010-08-06 (+37d) | 3d → 13d | 24.5d → 40d |  |  |
| 216 | Lanzamiento de petición de comunicación | 2010-06-28 → 2010-07-21 (+23d) | 2010-06-30 → 2010-07-28 (+28d) | 3d → 6d | 21d → 44d |  | constraint none → start no earlier than 2010-07-21; resources Prog SSr 1; Prog SSr 2 → Programador Sr 1 |
| 218 | **(ISC03) Informacion encuesta** | 2010-06-04 → 2010-07-08 (+34d) | 2010-06-04 → 2010-07-08 (+34d) |  | 42.5d → 61d |  |  |
| 219 | Activación actividad de encuesta | 2010-06-04 → 2010-07-08 (+34d) | 2010-06-04 → 2010-07-08 (+34d) |  | 39d → 61d |  | constraint none → start no earlier than 2010-07-08; resources none → Programador Jr 2 |
| 220 | ABM Consultas | 2010-06-29 → 2010-06-22 (-7d) | 2010-06-29 → 2010-06-22 (-7d) |  | 22d → 67d |  | constraint none → start no earlier than 2010-06-22; resources none → Programador Jr 2 |
| 221 | ABM Usuarios | 2010-06-11 → 2010-06-24 (+13d) | 2010-06-11 → 2010-06-24 (+13d) |  | 31d → 67d |  | constraint none → start no earlier than 2010-06-24; resources none → Programador Jr 1 |
| 222 | Proteccion de Acceso | 2010-06-14 → 2010-07-12 (+28d) | 2010-06-16 → 2010-07-14 (+28d) |  | 31d → 57d |  | constraint none → start no earlier than 2010-07-12; resources none → Programador Sr 2 |
| 223 | ABM Fichas / Guias / Recursos | 2010-06-21 → 2010-08-27 (+67d) | 2010-06-23 → 2010-08-31 (+69d) |  | 26d → 19d |  | constraint none → start no earlier than 2010-08-27; resources none → Programador Jr 1 |
| 224 | ABM Cuestionarios | 2010-06-04 → 2010-07-05 (+31d) | 2010-06-04 → 2010-07-05 (+31d) |  | 39d → 60d |  | constraint none → start no earlier than 2010-07-05; resources none → Programador Jr 1 |
| 225 | Interfaz General | 2010-06-17 → 2010-06-24 (+7d) | 2010-07-13 → 2010-07-21 (+8d) | 13d → 20d | 15.5d → 47d |  | constraint none → start no earlier than 2010-06-24; resources Prog SSr 1; Prog SSr 2 → Prog SSr 1 |
| 226 | Interfaz Para Usuario Avanzado | 2010-06-24 → 2010-08-18 (+55d) | 2010-07-01 → 2010-08-24 (+54d) |  | 24d → 25d |  | constraint none → start no earlier than 2010-08-18; resources none → Programador Sr 1 |
| 227 | Interfaz de Listados para ADM02 | 2010-07-26 → 2010-09-02 (+38d) | 2010-07-30 → 2010-09-08 (+40d) |  | 2.5d → 12d |  | constraint none → start no earlier than 2010-09-02; resources none → Prog SSr 1 |
| 228 | Interfaz Mantenimiento Usuarios y Perfiles | 2010-06-16 → 2010-07-22 (+36d) | 2010-06-23 → 2010-07-28 (+35d) |  | 26.5d → 44d |  | constraint none → start no earlier than 2010-07-22; resources none → Programador Sr 2 |
| 229 | Interfaz Direcciones INT01 | 2010-07-26 → 2010-09-15 (+51d) | 2010-07-30 → 2010-09-21 (+53d) |  | 2.5d → 5d |  | constraint none → start no earlier than 2010-09-15; resources none → Prog SSr 1 |
| 230 | ABM Enfermedades / Centros Salud | 2010-07-26 → 2010-09-10 (+46d) | 2010-07-27 → 2010-09-13 (+48d) |  | 5.5d → 10d |  | constraint none → start no earlier than 2010-09-08; resources none → Programador Jr 1 |
| 231 | Listado de Usuarios y Perfiles | 2010-07-12 → 2010-07-08 (-4d) | 2010-07-12 → 2010-07-08 (-4d) |  | 13d → 61d |  | constraint none → start no earlier than 2010-07-08; resources none → Programador Jr 1 |
| 232 | Interface con sistema de comunicaciones (ISC01, ISC02, ISC03) | 2010-06-08 → 2010-06-30 (+22d) | 2010-06-21 → 2010-07-12 (+21d) |  | 28.5d → 56d |  | constraint none → start no earlier than 2010-06-30; resources Programador Jr 1; Programador Jr 2 → Programador Sr 1 |
| 236 | Arquitectura General / Configuracion Ambientes | 2010-05-12 → 2010-05-14 (+2d) | 2010-06-01 → 2010-06-03 (+2d) |  | 17d → 13d |  |  |
| 238 | Compra Equipos Necesarios |  |  | 1.5d → 2d | 19d → 101d |  |  |
| 239 | **Infraestructura** |  | 2010-05-18 → 2010-05-20 (+2d) | 9d → 11d | 2d → 15d |  |  |
| 240 | Preparacion de Ambientes en servidores |  | 2010-05-06 → 2010-05-07 (+1d) | 1d → 2d | 57d → 98d |  |  |
| 241 | Instalacion y Configuracion de Servidor DEV | 2010-05-07 → 2010-05-10 (+3d) | 2010-05-11 → 2010-05-13 (+2d) | 3d → 4d | 18d → 13d |  | constraint none → start no earlier than 2010-05-10 |
| 242 | Instalacion y Configuracion de Servidores de Usos Multiples | 2010-05-12 → 2010-05-14 (+2d) | 2010-05-18 → 2010-05-20 (+2d) |  | 49d → 89d |  | constraint start no earlier than 2010-05-11 → start no earlier than 2010-05-14 |
| 245 | Instalacion de pcs nuevos usuarios | 2010-05-07 → 2010-05-10 (+3d) |  | 2.5d → 2d | 57d → 101d |  |  |

## Version 8 (saved 2010-09-02, file Casos Uso Lole Con Recursos 2010 Version Previa - 6 RECURSOS.mpp)

Note of the change: Dos versiones hechas en clase. una con 6 recursos temrianda q da 4 meses y la otra con 5 que por ahora da 5 meeses. falta agregarle config del entorno de produccion

Last finish 2010-10-01 → 2010-09-01 (-30d).

Changed:

| ID | Task | Start | Finish | Duration | Total float | Other |
| --- | --- | --- | --- | --- | --- | --- |
| 1 | Integracion con el Sistema STARS (Lectura Datos) | 2010-06-04 → 2010-06-02 (-2d) | 2010-06-10 → 2010-06-07 (-3d) | 5d → 4d | 13d → 21d |  |
| 2 | Modulo Seguridad que Oculta Info Llamado | 2010-06-11 → 2010-06-08 (-3d) | 2010-06-15 → 2010-06-09 (-6d) | 3d → 1.5d | 78d → 60.5d |  |
| 3 | **(GEN01) Identificacion y Autenticacion** | 2010-06-11 → 2010-06-08 (-3d) | 2010-06-16 → 2010-06-11 (-5d) |  | 65d → 45d |  |
| 4 | Autenticacion | 2010-06-11 → 2010-06-08 (-3d) | 2010-06-14 → 2010-06-09 (-5d) |  | 66d → 44d | constraint start no earlier than 2010-06-10 → none; resources Programador Jr 1 → Prog SSr 1 |
| 5 | Interfaz Inicio Sesion | 2010-06-11 → 2010-06-08 (-3d) | 2010-06-15 → 2010-06-10 (-5d) |  | 65d → 43d | constraint start no earlier than 2010-06-08 → none; resources Prog SSr 1 → Prog SSr 2 |
| 6 | Testing Id y Aut | 2010-06-16 → 2010-06-11 (-5d) | 2010-06-16 → 2010-06-11 (-5d) |  | 65d → 43d |  |
| 7 | **(GEN02) Gestion General de Registros** | 2010-06-11 → 2010-06-08 (-3d) | 2010-07-06 → 2010-06-21 (-15d) | 18d → 10d | 63d → 52d |  |
| 8 | ABM Registro | 2010-06-24 → 2010-06-10 (-14d) | 2010-06-24 → 2010-06-10 (-14d) |  | 69d → 53d | constraint start no earlier than 2010-06-11 → start no earlier than 2010-06-10; resources Programador Jr 2 → Programador Jr 1 |
| 9 | Buscar registro | 2010-06-25 → 2010-06-11 (-14d) | 2010-06-25 → 2010-06-14 (-11d) |  | 68d → 51.5d | constraint start no earlier than 2010-06-25 → start no earlier than 2010-06-11; resources Programador Jr 2 → Programador Jr 1 |
| 10 | Copiar registro | 2010-06-11 → 2010-06-08 (-3d) | 2010-06-11 → 2010-06-08 (-3d) |  | 76d → 55d | constraint start no earlier than 2010-06-10 → start no earlier than 2010-06-07; resources Programador Jr 2 → Programador Jr 1 |
| 11 | Interfaz ABM Registro | 2010-06-28 → 2010-06-15 (-13d) | 2010-06-30 → 2010-06-17 (-13d) |  | 65d → 48d | constraint start no earlier than 2010-06-28 → none; resources Programador Sr 2 → Prog SSr 2 |
| 12 | Testing Registros | 2010-07-05 → 2010-06-18 (-17d) | 2010-07-06 → 2010-06-21 (-15d) |  | 63d → 48d | constraint start no earlier than 2010-07-05 → none |
| 13 | **(USR01) Determinacion del servicio de atencion** | 2010-08-16 → 2010-07-29 (-18d) | 2010-09-01 → 2010-08-06 (-26d) | 13d → 7d | 11d → 7d |  |
| 14 | Capturar la Comunicación???? | 2010-08-16 → 2010-07-29 (-18d) | 2010-08-16 → 2010-07-29 (-18d) |  | 20d → 11d | constraint start no earlier than 2010-08-16 → start no earlier than 2010-07-26 |
| 15 | Determinar el tipo de servicio | 2010-08-26 → 2010-08-02 (-24d) | 2010-08-26 → 2010-08-02 (-24d) |  | 12d → 14d | constraint start no earlier than 2010-08-26 → start no earlier than 2010-08-02 |
| 16 | Lista de Espera | 2010-08-19 → 2010-08-03 (-16d) | 2010-08-19 → 2010-08-03 (-16d) |  | 17d → 13d | constraint start no earlier than 2010-08-19 → start no earlier than 2010-08-03 |
| 17 | Determinar conjunto de operadores adecuados al tipo de solicitud | 2010-08-30 → 2010-07-30 (-31d) | 2010-08-30 → 2010-07-30 (-31d) |  |  | constraint start no earlier than 2010-08-30 → start no earlier than 2010-07-30 |
| 18 | Testing Servicio Atencion | 2010-09-01 → 2010-08-06 (-26d) | 2010-09-01 → 2010-08-06 (-26d) |  | 11d → 6d | constraint start no earlier than 2010-09-01 → start no earlier than 2010-08-06 |
| 19 | **(USR02) Agenda** | 2010-07-09 → 2010-06-30 (-9d) | 2010-07-28 → 2010-07-20 (-8d) | 14d → 15d | 43d → 27d |  |
| 20 | Selección de una agenda | 2010-07-22 → 2010-07-02 (-20d) | 2010-07-23 → 2010-07-02 (-21d) | 2d → 1d | 44d → 33d | constraint start no earlier than 2010-07-22 → start no earlier than 2010-07-02 |
| 21 | ABM citas sobre la agenda | 2010-07-15 → 2010-07-01 (-14d) | 2010-07-15 → 2010-07-01 (-14d) |  | 50d → 34d | constraint start no earlier than 2010-07-15 → start no earlier than 2010-07-01; resources Programador Jr 1 → Programador Jr 2 |
| 22 | Interfaz de la Agenda | 2010-07-12 → 2010-06-30 (-12d) | 2010-07-14 → 2010-07-01 (-13d) | 3d → 2d | 51d → 34d | constraint start no earlier than 2010-07-12 → start no earlier than 2010-06-29 |
| 23 | Integracion con Stars - Llamada desde Agenda | 2010-07-13 → 2010-07-14 (+1d) | 2010-07-20 → 2010-07-16 (-4d) | 6d → 3d | 47d → 23d | constraint start no earlier than 2010-07-13 → start no earlier than 2010-07-14; resources Programador Sr 1 → Prog SSr 1; Prog SSr 2 |
| 24 | Asignar pacientes a cita | 2010-07-09 → 2010-06-30 (-9d) | 2010-07-09 → 2010-06-30 (-9d) |  | 54d → 35d | constraint start no earlier than 2010-07-08 → start no earlier than 2010-06-30; resources Programador Jr 1 → Programador Jr 2 |
| 25 | Testing Agenda | 2010-07-27 → 2010-07-19 (-8d) | 2010-07-28 → 2010-07-20 (-8d) |  | 43d → 23d | constraint start no earlier than 2010-07-27 → none |
| 26 | **(USR03) Rellamada** | 2010-08-16 → 2010-07-27 (-20d) | 2010-08-25 → 2010-07-28 (-28d) | 8d → 2d | 27d → 25d |  |
| 27 | Rellamada | 2010-08-16 → 2010-07-27 (-20d) | 2010-08-17 → 2010-07-27 (-21d) | 2d → 1d | 30d → 21d | constraint start no earlier than 2010-08-16 → start no earlier than 2010-07-27; resources Prog SSr 1 → Prog SSr 2 |
| 28 | Testing Rellamada | 2010-08-25 → 2010-07-28 (-28d) | 2010-08-25 → 2010-07-28 (-28d) |  | 27d → 21d | constraint start no earlier than 2010-08-25 → none |
| 29 | **(USR04) Consulta** | 2010-06-14 → 2010-06-08 (-6d) | 2010-06-21 → 2010-06-14 (-7d) | 6d → 5d | 10d → 18d |  |
| 30 | **Tratar Consulta** | 2010-06-14 → 2010-06-08 (-6d) | 2010-06-15 → 2010-06-11 (-4d) | 2d → 3.5d | 14d → 19.5d |  |
| 31 | Ajornar Consulta | 2010-06-15 → 2010-06-11 (-4d) | 2010-06-15 → 2010-06-11 (-4d) | 1d → 0.5d | 14d → 20.5d | constraint start no earlier than 2010-06-15 → start no earlier than 2010-06-11; resources Programador Jr 2 → Programador Jr 1 |
| 32 | Transferir consulta | 2010-06-14 → 2010-06-08 (-6d) | 2010-06-14 → 2010-06-08 (-6d) | 1d → 0.5d | 15d → 22.5d | constraint start no earlier than 2010-06-14 → none |
| 33 | Modulo Envio de Correo | 2010-06-15 → 2010-06-10 (-5d) | 2010-06-16 → 2010-06-11 (-5d) |  | 13d → 20d | constraint start no earlier than 2010-06-15 → none; resources Programador Jr 1 → Prog SSr 1 |
| 34 | Modulo Envio SMS | 2010-06-16 → 2010-06-11 (-5d) | 2010-06-21 → 2010-06-14 (-7d) | 4d → 2d | 10d → 18d | constraint start no earlier than 2010-06-16 → none; resources Programador Sr 1 → Prog SSr 2 |
| 35 | Inclusion en Campaña de Seguimiento | 2010-06-18 → 2010-06-09 (-9d) | 2010-06-18 → 2010-06-09 (-9d) |  | 11d → 22d | constraint start no earlier than 2010-06-18 → start no earlier than 2010-06-09; resources Programador Jr 2 → Programador Jr 1 |
| 36 | Testing Consulta | 2010-06-22 → 2010-06-15 (-7d) | 2010-06-24 → 2010-06-16 (-8d) | 3d → 2d | 71d → 51d |  |
| 37 | **(USR05) Consejo Salud** | 2010-08-23 → 2010-07-23 (-31d) | 2010-08-27 → 2010-07-29 (-29d) |  | 25d → 24d |  |
| 38 | Consejo Salud | 2010-08-23 → 2010-07-23 (-31d) | 2010-08-24 → 2010-07-26 (-29d) |  | 27d → 22d | constraint start no earlier than 2010-08-19 → start no earlier than 2010-07-19; resources Programador Jr 2 → Prog SSr 1 |
| 39 | Testing Consejo Salud | 2010-08-27 → 2010-07-29 (-29d) | 2010-08-27 → 2010-07-29 (-29d) |  | 25d → 20d | constraint start no earlier than 2010-08-27 → start no earlier than 2010-07-29 |
| 40 | **(USR06) Gestionar Consulta pendiente** | 2010-08-05 → 2010-07-19 (-17d) | 2010-08-11 → 2010-07-23 (-19d) |  | 24d → 15d |  |
| 41 | Priorizacion de la Lista de Consultas | 2010-08-05 → 2010-07-19 (-17d) | 2010-08-05 → 2010-07-19 (-17d) |  | 25d → 14d | constraint start no earlier than 2010-08-05 → none; resources Programador Jr 1 → Prog SSr 2 |
| 42 | Testing USR06 | 2010-08-11 → 2010-07-23 (-19d) | 2010-08-11 → 2010-07-23 (-19d) |  | 24d → 14d | constraint start no earlier than 2010-08-11 → start no earlier than 2010-07-23 |
| 43 | **(USR07) Programacion de cita previa** | 2010-08-11 → 2010-08-10 (-1d) | 2010-08-26 → 2010-08-13 (-13d) | 12d → 4d | 26d → 13d |  |
| 44 | Realizar Citación (Interface con Sistema de citación AP) | 2010-08-11 → 2010-08-10 (-1d) | 2010-08-12 → 2010-08-11 (-1d) |  | 33d → 10d | constraint start no earlier than 2010-08-11 → start no earlier than 2010-08-10 |
| 45 | Testing USR07 | 2010-08-26 → 2010-08-13 (-13d) | 2010-08-26 → 2010-08-13 (-13d) |  | 26d → 9d | constraint start no earlier than 2010-08-26 → start no earlier than 2010-08-13 |
| 46 | **(USR08) Gestiones sobre la TSI** | 2010-08-11 → 2010-07-30 (-12d) | 2010-09-02 → 2010-08-17 (-16d) | 17d → 13d | -36d → -23d |  |
| 47 | Verificacion Documentacion Necesaria | 2010-08-11 → 2010-07-30 (-12d) | 2010-08-11 → 2010-07-30 (-12d) |  | -21d → -12d | constraint start no earlier than 2010-08-11 → start no earlier than 2010-07-30 |
| 48 | Enviar Gestion (Interface con sistema RCA) | 2010-08-24 → 2010-08-11 (-13d) | 2010-08-25 → 2010-08-11 (-14d) | 2d → 1d | -31d → -17d | constraint start no earlier than 2010-08-24 → start no earlier than 2010-08-11 |
| 49 | Cierre automatico de la consulta por paso de tiempo | 2010-08-18 → 2010-08-10 (-8d) | 2010-08-18 → 2010-08-10 (-8d) |  | -26d → -16d | constraint start no earlier than 2010-08-18 → start no earlier than 2010-08-10 |
| 50 | Guardar LOG gestion TSI | 2010-08-11 → 2010-08-13 (+2d) | 2010-08-11 → 2010-08-16 (+5d) |  | -21d → -19.5d | constraint start no earlier than 2010-08-05 → none; resources Programador Jr 2 → Programador Jr 1 |
| 51 | Testing | 2010-09-02 → 2010-08-17 (-16d) | 2010-09-02 → 2010-08-17 (-16d) |  | -36d → -23d | constraint start no earlier than 2010-09-02 → start no earlier than 2010-08-17 |
| 52 | **(USR09) Servicio de traduccion** | 2010-08-02 → 2010-06-29 (-34d) | 2010-08-31 → 2010-07-12 (-50d) | 22d → 9.5d | 23d → 37d |  |
| 53 | Contactar Servicio Externo de Traduccion | 2010-08-19 → 2010-07-05 (-45d) | 2010-08-23 → 2010-07-06 (-48d) | 3d → 2d | 25d → 35d | constraint start no earlier than 2010-08-19 → start no earlier than 2010-07-05; resources Prog SSr 1 → Programador Sr 2 |
| 54 | Enlace Comunicacion Multiconferencia | 2010-08-02 → 2010-06-29 (-34d) | 2010-08-05 → 2010-07-02 (-34d) | 4d → 3d | 39d → 37.5d | constraint start no earlier than 2010-07-27 → start no earlier than 2010-06-29 |
| 55 | Modulo monitorización de servicio | 2010-08-11 → 2010-07-07 (-35d) | 2010-08-12 → 2010-07-08 (-35d) |  | 32d → 33d | constraint start no earlier than 2010-08-11 → start no earlier than 2010-07-07 |
| 56 | Testing | 2010-08-30 → 2010-07-09 (-52d) | 2010-08-31 → 2010-07-12 (-50d) |  | 23d → 33d | constraint start no earlier than 2010-08-30 → none |
| 57 | **(USR10) Informacion Sanitaria General** | 2010-09-10 → 2010-08-17 (-24d) | 2010-09-13 → 2010-08-18 (-26d) |  | 14d → 10d |  |
| 58 | Guardar Informacion Ciudadano | 2010-09-10 → 2010-08-17 (-24d) | 2010-09-10 → 2010-08-17 (-24d) |  | 14d → 6d | constraint start no earlier than 2010-09-07 → none |
| 59 | Testing | 2010-09-13 → 2010-08-18 (-26d) | 2010-09-13 → 2010-08-18 (-26d) |  | 14d → 6d | constraint start no earlier than 2010-09-13 → start no earlier than 2010-08-17 |
| 60 | **(USR11) Seguimiento de Patologias** | 2010-08-13 → 2010-07-26 (-18d) | 2010-09-06 → 2010-08-10 (-27d) | 17d → 12d | 19d → 16d |  |
| 61 | Buscar Campañas Abiertas | 2010-08-13 → 2010-07-29 (-15d) | 2010-08-13 → 2010-07-29 (-15d) |  | 31d → 18d | constraint start no earlier than 2010-08-13 → start no earlier than 2010-07-29 |
| 62 | **Gestionar Seguimiento** | 2010-08-13 → 2010-07-26 (-18d) | 2010-08-26 → 2010-08-03 (-23d) | 10d → 7d | 24d → 19d |  |
| 63 | Visualizar Historial Pacientes | 2010-08-13 → 2010-07-26 (-18d) | 2010-08-13 → 2010-07-27 (-17d) | 1d → 2d | 31d → 20d | constraint start no earlier than 2010-08-13 → start no earlier than 2010-07-19; resources Prog SSr 1 → Programador Jr 2 |
| 64 | Llamada al Paciente | 2010-08-25 → 2010-08-03 (-22d) | 2010-08-26 → 2010-08-03 (-23d) | 2d → 1d | 22d → 15d | constraint start no earlier than 2010-08-25 → start no earlier than 2010-08-03 |
| 65 | Desligar paciente de campaña | 2010-08-27 → 2010-07-28 (-30d) | 2010-08-27 → 2010-07-28 (-30d) |  | 21d → 19d | constraint start no earlier than 2010-08-27 → start no earlier than 2010-07-28; resources Prog SSr 1 → Programador Jr 2 |
| 66 | Testing | 2010-09-03 → 2010-08-09 (-25d) | 2010-09-06 → 2010-08-10 (-27d) |  | 19d → 12d | constraint start no earlier than 2010-09-03 → start no earlier than 2010-08-09 |
| 67 | **(USR12) Encuestas** | 2010-07-02 → 2010-06-08 (-24d) | 2010-07-26 → 2010-07-13 (-13d) | 17d → 25.5d | 49d → 36d |  |
| 68 | Interfaz de Encuestas | 2010-07-20 → 2010-07-08 (-12d) | 2010-07-22 → 2010-07-12 (-10d) |  | 49d → 32d | constraint start no earlier than 2010-07-20 → start no earlier than 2010-07-08 |
| 69 | Contacto con Encuestado | 2010-07-02 → 2010-06-09 (-23d) | 2010-07-05 → 2010-06-11 (-24d) |  | 62d → 53.5d | constraint start no earlier than 2010-06-16 → start no earlier than 2010-06-09; resources Programador Sr 2 → Programador Jr 2 |
| 70 | ABM Formulario De Encuesta | 2010-07-02 → 2010-06-08 (-24d) | 2010-07-05 → 2010-06-09 (-26d) | 2d → 1d | 51d → 37.5d | constraint start no earlier than 2010-06-16 → start no earlier than 2010-06-08 |

| ID | Task | Start | Finish | Duration | Total float | Other |
| --- | --- | --- | --- | --- | --- | --- |
| 71 | Testing | 2010-07-23 → 2010-07-13 (-10d) | 2010-07-26 → 2010-07-13 (-13d) | 2d → 1d | 49d → 32d | constraint start no earlier than 2010-07-19 → none |
| 72 | **(USR13) Buscar Consultas** | 2010-07-09 → 2010-07-02 (-7d) | 2010-07-29 → 2010-07-15 (-14d) | 15d → 10d | 43d → 32d |  |
| 73 | **Operativo de Busqueda** | 2010-07-09 → 2010-07-02 (-7d) | 2010-07-29 → 2010-07-15 (-14d) | 15d → 10d | 43d → 32d |  |
| 74 | Buscar según distintos criterios | 2010-07-26 → 2010-07-05 (-21d) | 2010-07-28 → 2010-07-07 (-21d) |  | 41d → 33d | constraint start no earlier than 2010-07-26 → none |
| 75 | Filtrar resultados de la busqueda según permisos del usuario | 2010-07-09 → 2010-07-02 (-7d) | 2010-07-09 → 2010-07-02 (-7d) |  | 56d → 36d | constraint start no earlier than 2010-07-06 → start no earlier than 2010-07-02 |
| 76 | Acotar resultados si los mismos sobrepasan el parametro configurable "n" | 2010-07-16 → 2010-07-14 (-2d) | 2010-07-16 → 2010-07-14 (-2d) |  | 51d → 28d | constraint start no earlier than 2010-07-16 → start no earlier than 2010-07-14 |
| 77 | Testing | 2010-07-29 → 2010-07-15 (-14d) | 2010-07-29 → 2010-07-15 (-14d) |  | 43d → 28d | constraint start no earlier than 2010-07-28 → none |
| 78 | **(USR14) Hacer Uso de Documentos** | 2010-07-19 → 2010-07-05 (-14d) | 2010-08-20 → 2010-07-22 (-29d) | 25d → 14d | 19d → 12d |  |
| 79 | Creación y uso de Guias Interrogatorio | 2010-08-09 → 2010-07-05 (-35d) | 2010-08-10 → 2010-07-06 (-35d) |  | 25d → 20d | constraint start no earlier than 2010-08-09 → start no earlier than 2010-07-05 |
| 80 | Creación y uso Fichas Tematicas | 2010-08-12 → 2010-07-07 (-36d) | 2010-08-13 → 2010-07-08 (-36d) |  | 20d → 16d | constraint start no earlier than 2010-08-12 → start no earlier than 2010-07-07 |
| 81 | Creación y uso de Recursos | 2010-07-19 → 2010-07-12 (-7d) | 2010-07-20 → 2010-07-13 (-7d) |  | 40d → 13d | constraint start no earlier than 2010-07-19 → start no earlier than 2010-07-12 |
| 82 | Búsqueda y selección de documentos | 2010-07-27 → 2010-07-14 (-13d) | 2010-07-28 → 2010-07-15 (-13d) |  | 32d → 11d | constraint start no earlier than 2010-07-27 → start no earlier than 2010-07-14 |
| 83 | Apertura documentos | 2010-07-29 → 2010-07-19 (-10d) | 2010-07-30 → 2010-07-20 (-10d) | 2d → 1d | 30d → 8.5d | constraint start no earlier than 2010-07-29 → start no earlier than 2010-07-19 |
| 84 | Testing | 2010-08-19 → 2010-07-21 (-29d) | 2010-08-20 → 2010-07-22 (-29d) |  | 19d → 6.5d | constraint start no earlier than 2010-08-19 → start no earlier than 2010-07-21 |
| 85 | **(USR15) Cerrar consulta y dar respuesta al ciudadano** | 2010-06-28 → 2010-06-16 (-12d) | 2010-07-30 → 2010-06-28 (-32d) | 25d → 9d | -15d → 11d |  |
| 86 | Clasificar Finalizacion de Consulta | 2010-06-28 → 2010-06-24 (-4d) | 2010-06-29 → 2010-06-25 (-4d) |  | 7d → 11d | constraint start no earlier than 2010-06-28 → start no earlier than 2010-06-24; resources Programador Jr 1 → Programador Jr 2 |
| 87 | Adición de motivo de cierre a la consulta | 2010-07-19 → 2010-06-16 (-33d) | 2010-07-19 → 2010-06-16 (-33d) |  | -7d → 18d | constraint start no earlier than 2010-07-19 → start no earlier than 2010-06-16 |
| 88 | Creación de clasificaciones ad-hoc | 2010-07-23 → 2010-06-23 (-30d) | 2010-07-23 → 2010-06-24 (-29d) |  | -11d → 12.5d | constraint start no earlier than 2010-07-23 → start no earlier than 2010-06-23; resources Programador Jr 2 → Programador Sr 1 |
| 89 | Testing | 2010-07-30 → 2010-06-28 (-32d) | 2010-07-30 → 2010-06-28 (-32d) |  | -15d → 11d | constraint start no earlier than 2010-07-30 → start no earlier than 2010-06-25 |
| 90 | **(USR16) Visualizar Consulta** | 2010-06-30 → 2010-06-21 (-9d) | 2010-07-08 → 2010-06-29 (-9d) |  | 49d → 37d |  |
| 91 | Mostrar datos generales de la consulta | 2010-07-06 → 2010-06-21 (-15d) | 2010-07-07 → 2010-06-22 (-15d) |  | 49d → 37d | constraint start no earlier than 2010-06-30 → start no earlier than 2010-06-21; resources Programador Jr 1 → Programador Jr 2 |
| 92 | Mostrar datos según el documento elegido | 2010-06-30 → 2010-06-23 (-7d) | 2010-07-01 → 2010-06-25 (-6d) |  | 53d → 34.5d | constraint start no earlier than 2010-06-30 → start no earlier than 2010-06-23 |
| 93 | Testing | 2010-07-08 → 2010-06-29 (-9d) | 2010-07-08 → 2010-06-29 (-9d) |  | 49d → 33d | constraint start no earlier than 2010-07-01 → start no earlier than 2010-06-29 |
| 94 | **(USR17) Crear/Transferir Consulta** | 2010-06-22 → 2010-07-13 (+21d) | 2010-08-10 → 2010-07-28 (-13d) | 36d → 12d | -22d → -11d |  |
| 95 | Crear Consulta | 2010-06-22 → 2010-07-15 (+23d) | 2010-06-23 → 2010-07-16 (+23d) |  | 10d → -4d | constraint start no earlier than 2010-06-21 → start no earlier than 2010-07-15; resources Programador Jr 1 → Programador Jr 2 |
| 96 | Copiar consulta | 2010-06-23 → 2010-07-27 (+34d) | 2010-06-23 → 2010-07-27 (+34d) |  | 10d → -8d | constraint start no earlier than 2010-06-23 → start no earlier than 2010-07-27; resources Programador Jr 2 → Prog SSr 1 |
| 97 | **Transferir Consulta** | 2010-08-06 → 2010-07-13 (-24d) | 2010-08-06 → 2010-07-13 (-24d) |  | -22d → -1d |  |
| 98 | Localizar a otro operador del mismo perfil | 2010-08-06 → 2010-07-13 (-24d) | 2010-08-06 → 2010-07-13 (-24d) |  | -22d → -1d | constraint start no earlier than 2010-08-06 → start no earlier than 2010-07-08; resources Programador Jr 1 → Prog SSr 1 |
| 99 | Testing | 2010-08-09 → 2010-07-28 (-12d) | 2010-08-10 → 2010-07-28 (-13d) | 2d → 1d | -22d → -8d | constraint start no earlier than 2010-07-15 → none |
| 100 | **(ADM01) Mantenimiento del Entorno, clasif y prioridades** | 2010-06-04 → 2010-06-02 (-2d) | 2010-08-13 → 2010-06-25 (-49d) | 51d → 17.5d | -22d → 14.5d |  |
| 101 | Módulo de edición de parametros grales de la aplicación | 2010-07-29 → 2010-06-11 (-48d) | 2010-08-03 → 2010-06-23 (-41d) |  | -16d → 17.5d | constraint start no earlier than 2010-07-29 → none; resources Programador Sr 1 → Programador Sr 2 |
| 102 | Módulo edición listas de clasificaciones (Códigos internos) | 2010-08-04 → 2010-06-10 (-55d) | 2010-08-06 → 2010-06-15 (-52d) |  | -19d → 20.5d | constraint start no earlier than 2010-08-04 → none |
| 103 | **Módulo mantenimiento de la lista de espera** | 2010-06-04 → 2010-06-03 (-1d) | 2010-06-09 → 2010-06-04 (-5d) | 4d → 2d | 23d → 27d |  |
| 104 | ABM de la lista de espera | 2010-06-04 → 2010-06-03 (-1d) | 2010-06-04 → 2010-06-03 (-1d) |  | 26d → 31d |  |
| 105 | Módulo de gestión de prioridades sobre la lista de espera | 2010-06-08 → 2010-06-04 (-4d) | 2010-06-09 → 2010-06-04 (-5d) | 2d → 1d | 23d → 27d | constraint start no earlier than 2010-06-08 → none; resources Prog SSr 1 → Prog SSr 2 |
| 106 | **Módulo mantenimiento de lineas de servicio** | 2010-06-04 → 2010-06-02 (-2d) | 2010-06-07 → 2010-06-03 (-4d) |  | 25d → 28d |  |
| 107 | ABM lineas de servicio | 2010-06-04 → 2010-06-02 (-2d) | 2010-06-04 → 2010-06-02 (-2d) |  | 26d → 29d |  |
| 108 | ABM servicios para una linea seleccionada | 2010-06-07 → 2010-06-03 (-4d) | 2010-06-07 → 2010-06-03 (-4d) |  | 25d → 28d | constraint start no earlier than 2010-06-07 → none; resources Programador Jr 1 → Programador Jr 2 |
| 109 | **Módulo mantenimiento agendas** | 2010-06-07 → 2010-06-02 (-5d) | 2010-06-25 → 2010-06-22 (-3d) | 15d → 14.5d | 11d → 15.5d |  |
| 110 | Asignar operadores a agenda | 2010-06-08 → 2010-06-04 (-4d) | 2010-06-08 → 2010-06-04 (-4d) |  | 24d → 30d | constraint start no earlier than 2010-06-08 → none; resources Programador Jr 2 → Prog SSr 1 |
| 111 | ABM de usuarios de la agenda | 2010-06-25 → 2010-06-21 (-4d) | 2010-06-25 → 2010-06-22 (-3d) |  | 11d → 15.5d | constraint start no earlier than 2010-06-25 → start no earlier than 2010-06-21 |
| 112 | ABM citas de la agenda | 2010-06-07 → 2010-06-02 (-5d) | 2010-06-07 → 2010-06-02 (-5d) |  | 25d → 32d | constraint start no earlier than 2010-06-07 → none; resources Programador Jr 2 → Programador Jr 1 |
| 113 | **Módulo mantenimiento BBDD** | 2010-08-09 → 2010-06-09 (-61d) | 2010-08-11 → 2010-06-11 (-61d) | 3d → 2d | -22d → 22.5d |  |
| 114 | Módulo comprobación de formato de archivo | 2010-08-09 → 2010-06-09 (-61d) | 2010-08-09 → 2010-06-10 (-60d) |  | -20d → 23.5d | constraint start no earlier than 2010-08-09 → none |
| 115 | Módulo actualización de BBDD | 2010-08-10 → 2010-06-09 (-62d) | 2010-08-11 → 2010-06-11 (-61d) |  | -22d → 25.5d | constraint start no earlier than 2010-08-10 → none; resources Programador Sr 1 → Programador Sr 2 |
| 116 | Testing | 2010-08-12 → 2010-06-23 (-50d) | 2010-08-13 → 2010-06-25 (-49d) |  | -22d → 17.5d |  |
| 117 | **(ADM02) Extraccion de estadisticas y listados** | 2010-08-16 → 2010-06-28 (-49d) | 2010-08-23 → 2010-07-30 (-24d) | 6d → 24.5d | 21d → 15d |  |
| 118 | Listados De Administración | 2010-08-16 → 2010-07-28 (-19d) | 2010-08-17 → 2010-07-29 (-19d) |  | 22d → 14d | constraint start no earlier than 2010-08-16 → start no earlier than 2010-07-28; resources Programador Sr 1 → Prog SSr 1 |
| 119 | **Listados Comunes** | 2010-08-16 → 2010-06-28 (-49d) | 2010-08-20 → 2010-07-15 (-36d) | 5d → 13.5d | 21d → 25d |  |
| 120 | Detalle de estado de finalización consulta/acción | 2010-08-18 → 2010-07-13 (-36d) | 2010-08-18 → 2010-07-14 (-35d) |  | 21d → 22.5d | constraint start no earlier than 2010-08-18 → start no earlier than 2010-07-13; resources Programador Jr 2 → Programador Sr 1 |
| 121 | Listado de clasificaciones | 2010-08-16 → 2010-06-29 (-48d) | 2010-08-16 → 2010-06-29 (-48d) |  | 25d → 33d |  |
| 122 | Listados de incidencias en las comunicaciones | 2010-08-19 → 2010-07-12 (-38d) | 2010-08-19 → 2010-07-13 (-37d) |  | 20d → 23.5d | constraint start no earlier than 2010-08-19 → start no earlier than 2010-07-12; resources Programador Jr 2 → Programador Sr 1 |
| 123 | Ratios por usuario | 2010-08-20 → 2010-07-15 (-36d) | 2010-08-20 → 2010-07-15 (-36d) |  | 19d → 21d | constraint start no earlier than 2010-08-20 → start no earlier than 2010-07-15; resources Programador Jr 2 → Programador Sr 2 |
| 124 | Finales de servicio | 2010-08-17 → 2010-06-28 (-50d) | 2010-08-17 → 2010-06-29 (-49d) |  | 22d → 33.5d | constraint start no earlier than 2010-08-17 → start no earlier than 2010-06-28; resources Programador Jr 1 → Programador Sr 1 |
| 125 | Testing | 2010-08-23 → 2010-07-30 (-24d) | 2010-08-23 → 2010-07-30 (-24d) |  | 21d → 14d | constraint start no earlier than 2010-08-23 → none |
| 126 | **(ADM03) Mantenimiento de documentos** | 2010-08-31 → 2010-08-03 (-28d) | 2010-09-07 → 2010-08-23 (-15d) | 6d → 15d | 16d → 5d |  |
| 127 | Creación y edición de documentos | 2010-09-06 → 2010-08-20 (-17d) | 2010-09-07 → 2010-08-23 (-15d) |  | 16d → 1d | constraint start no earlier than 2010-09-06 → start no earlier than 2010-08-19 |
| 128 | Borrado de documentos | 2010-09-06 → 2010-08-09 (-28d) | 2010-09-06 → 2010-08-10 (-27d) |  | 15d → 10.5d | constraint start no earlier than 2010-09-06 → start no earlier than 2010-08-09; resources Programador Jr 2 → Programador Sr 2 |
| 129 | Clasificación de documentos | 2010-08-31 → 2010-08-03 (-28d) | 2010-08-31 → 2010-08-03 (-28d) |  | 19d → 15d | constraint start no earlier than 2010-08-31 → none; resources Programador Jr 2 → Programador Sr 2 |
| 130 | Búsqueda de documentos | 2010-09-06 → 2010-08-04 (-33d) | 2010-09-07 → 2010-08-06 (-32d) |  | 14d → 12.5d | constraint start no earlier than 2010-09-06 → none; resources Programador Jr 1 → Programador Sr 2 |
| 131 | (ADM04) Mantenimiento de Recursos | 2010-08-23 → 2010-07-26 (-28d) | 2010-08-25 → 2010-07-27 (-29d) | 3d → 2d | 19d → 7d | constraint start no earlier than 2010-08-02 → start no earlier than 2010-07-26 |
| 132 | (ADM05) Mantenimiento de guias de interrogatorio | 2010-08-30 → 2010-08-18 (-12d) | 2010-09-01 → 2010-08-19 (-13d) | 3d → 2d | 16d → 1d | constraint start no earlier than 2010-08-30 → start no earlier than 2010-08-18; resources Prog SSr 1 → Programador Sr 2 |
| 133 | (ADM06) Mantenimiento de Fichas tematicas | 2010-08-30 → 2010-08-16 (-14d) | 2010-09-01 → 2010-08-17 (-15d) | 3d → 2d | 18d → 3d | constraint start no earlier than 2010-08-27 → none; resources Programador Sr 1 → Programador Sr 2 |
| 134 | **(ADM07) Mantenimiento de relaciones sobre guias de interrogatorio y fichas tematicas** | 2010-08-26 → 2010-07-28 (-29d) | 2010-08-27 → 2010-08-02 (-25d) | 2d → 4d | 18d → 8d |  |
| 135 | Adición de documentos a fichas temáticas | 2010-08-27 → 2010-08-02 (-25d) | 2010-08-27 → 2010-08-02 (-25d) |  | 16d → 4d | constraint start no earlier than 2010-08-27 → start no earlier than 2010-08-02 |
| 136 | Adición de documentos a guias de interrogatorio | 2010-08-26 → 2010-07-28 (-29d) | 2010-08-26 → 2010-07-28 (-29d) |  | 17d → 7d | constraint start no earlier than 2010-08-26 → start no earlier than 2010-07-26; resources Prog SSr 1 → Programador Jr 1 |
| 137 | **(ADM08) Mantenimiento de encuestas** | 2010-07-02 → 2010-06-07 (-25d) | 2010-07-21 → 2010-06-23 (-28d) | 14d → 12.5d | 52d → 50.5d |  |
| 138 | **Mantenimiento Indice de Encuestas** | 2010-07-12 → 2010-06-07 (-35d) | 2010-07-14 → 2010-06-07 (-37d) | 3d → 1d | 57d → 62d |  |
| 139 | Mantener Ediciones | 2010-07-12 → 2010-06-07 (-35d) | 2010-07-13 → 2010-06-07 (-36d) | 2d → 1d | 56d → 58d | constraint start no earlier than 2010-07-12 → start no earlier than 2010-06-07; resources Programador Jr 2 → Prog SSr 1 |
| 140 | Cierre de ediciones | 2010-07-14 → 2010-06-07 (-37d) | 2010-07-14 → 2010-06-07 (-37d) |  | 55d → 58d | constraint start no earlier than 2010-07-14 → start no earlier than 2010-06-07; resources Programador Jr 2 → Prog SSr 2 |

| ID | Task | Start | Finish | Duration | Total float | Other |
| --- | --- | --- | --- | --- | --- | --- |
| 141 | Asignación de formulario a encuesta | 2010-07-16 → 2010-06-07 (-39d) | 2010-07-16 → 2010-06-07 (-39d) |  | 53d → 58d | constraint start no earlier than 2010-07-16 → start no earlier than 2010-06-04; resources Programador Jr 1 → Programador Jr 2 |
| 142 | Asignación de operadores a encuesta | 2010-07-02 → 2010-06-22 (-10d) | 2010-07-02 → 2010-06-23 (-9d) |  | 65d → 46.5d | constraint start no earlier than 2010-07-02 → start no earlier than 2010-06-22 |
| 143 | **Asignación lista de encuestados** | 2010-07-07 → 2010-06-14 (-23d) | 2010-07-21 → 2010-06-15 (-36d) | 11d → 2d | 52d → 56d |  |
| 144 | Alta, baja de encuestados | 2010-07-07 → 2010-06-14 (-23d) | 2010-07-07 → 2010-06-14 (-23d) |  | 60d → 53d | constraint start no earlier than 2010-07-07 → start no earlier than 2010-06-14 |
| 145 | Asignación automática en base a un archivo de texto | 2010-07-21 → 2010-06-15 (-36d) | 2010-07-21 → 2010-06-15 (-36d) |  | 50d → 52d | constraint start no earlier than 2010-07-21 → start no earlier than 2010-06-15; resources Programador Jr 1 → Programador Jr 2 |
| 146 | Publicar Encuestas | 2010-07-15 → 2010-06-14 (-31d) | 2010-07-15 → 2010-06-15 (-30d) |  | 54d → 52.5d | constraint start no earlier than 2010-07-15 → start no earlier than 2010-06-14; resources Programador Jr 2 → Programador Jr 1 |
| 147 | **(ADM09) Mantenimiento de seguimiento de patologias** | 2010-08-16 → 2010-06-25 (-52d) | 2010-08-23 → 2010-07-09 (-45d) | 6d → 10.5d | 24d → 34d |  |
| 148 | Mantenimiento Indice de campañas de seguimiento | 2010-08-16 → 2010-07-09 (-38d) | 2010-08-17 → 2010-07-09 (-39d) | 2d → 1d | 26d → 30d | constraint start no earlier than 2010-08-16 → start no earlier than 2010-07-09 |
| 149 | Asignación de formulario a campaña de seguimiento | 2010-08-20 → 2010-06-25 (-56d) | 2010-08-20 → 2010-06-28 (-53d) |  | 23d → 39.5d | constraint start no earlier than 2010-08-20 → start no earlier than 2010-06-25; resources Programador Jr 1 → Programador Sr 1 |
| 150 | Asignación de operadores a campaña de seguimiento | 2010-08-23 → 2010-06-28 (-56d) | 2010-08-23 → 2010-06-28 (-56d) |  | 22d → 39d | constraint start no earlier than 2010-08-23 → start no earlier than 2010-06-28; resources Programador Jr 1 → Programador Jr 2 |
| 151 | Asignación de listas de pacientes | 2010-08-18 → 2010-07-09 (-40d) | 2010-08-18 → 2010-07-09 (-40d) |  | 25d → 30d | constraint start no earlier than 2010-08-18 → start no earlier than 2010-07-09; resources Prog SSr 1 → Programador Jr 1 |
| 152 | Activación/ Desactivación de campañas | 2010-08-17 → 2010-06-25 (-53d) | 2010-08-17 → 2010-06-28 (-50d) |  | 26d → 39.5d | constraint start no earlier than 2010-08-17 → start no earlier than 2010-06-24; resources Programador Jr 2 → Programador Sr 2 |
| 153 | Testing ADM 3 al 9 | 2010-08-16 → 2010-08-02 (-14d) | 2010-08-18 → 2010-08-04 (-14d) |  |  |  |
| 154 | **(ADM10) Creacion de formularios de encuesta y seguimiento** | 2010-06-04 → 2010-06-02 (-2d) | 2010-07-01 → 2010-06-04 (-27d) | 20d → 3d | 51d → 43d |  |
| 155 | Mantener Indice de Encuesta | 2010-06-28 → 2010-06-02 (-26d) | 2010-06-29 → 2010-06-03 (-26d) |  | 50d → 39d | constraint start no earlier than 2010-06-28 → none; resources Programador Sr 1 → Prog SSr 2 |
| 156 | Crear y Editar Encuestas | 2010-06-04 → 2010-06-02 (-2d) | 2010-06-07 → 2010-06-03 (-4d) |  | 66d → 37.5d |  |
| 157 | Testing Creacion Formularios Enc y Seg | 2010-07-01 → 2010-06-04 (-27d) | 2010-07-01 → 2010-06-04 (-27d) |  | 51d → 42d | constraint start no earlier than 2010-07-01 → none |
| 158 | **(ADM11) Mantenimiento de usuarios, perfiles y permisos** | 2010-06-16 → 2010-06-15 (-1d) | 2010-06-28 → 2010-06-21 (-7d) | 9d → 4.5d | 61d → 44.5d |  |
| 159 | Mantenimiento Opciones Funcionales | 2010-06-16 → 2010-06-15 (-1d) | 2010-06-17 → 2010-06-16 (-1d) |  | 66d → 43d | constraint start no earlier than 2010-06-16 → start no earlier than 2010-06-15; resources Programador Sr 2 → Prog SSr 1 |
| 160 | **Mantener Perfiles Trabajo** | 2010-06-16 → 2010-06-15 (-1d) |  |  | 67d → 45.5d |  |
| 161 | Alta, modificación de perfiles | 2010-06-18 → 2010-06-17 (-1d) |  |  | 65d → 41.5d | constraint start no earlier than 2010-06-18 → start no earlier than 2010-06-17 |
| 162 | ABM de opciones funcionales a perfil | 2010-06-16 → 2010-06-15 (-1d) |  |  | 67d → 43.5d | constraint start no earlier than 2010-06-16 → start no earlier than 2010-06-15; resources Programador Jr 2 → Programador Jr 1 |
| 163 | Adición de responsabilidades a opciones funcionales | 2010-06-17 → 2010-06-16 (-1d) |  |  | 66d → 42.5d | constraint start no earlier than 2010-06-17 → start no earlier than 2010-06-16; resources Programador Jr 2 → Programador Jr 1 |
| 164 | **Mantener Usuarios** |  | 2010-06-28 → 2010-06-21 (-7d) | 8d → 2.5d | 61d → 44.5d |  |
| 165 | Creación/gestion de usuarios |  |  |  | 66d → 42d | resources Programador Jr 1 → Programador Jr 2 |
| 166 | Asiganción de perfil a usuario | 2010-06-21 → 2010-06-18 (-3d) | 2010-06-21 → 2010-06-18 (-3d) |  | 64d → 41d | constraint start no earlier than 2010-06-21 → start no earlier than 2010-06-18 |
| 167 | Asignación de agendas a usuario | 2010-06-28 → 2010-06-18 (-10d) | 2010-06-28 → 2010-06-21 (-7d) |  | 59d → 40.5d | constraint start no earlier than 2010-06-28 → start no earlier than 2010-06-18; resources Programador Jr 2 → Programador Jr 1 |
| 168 | Testing Mantenimiento Usuarios | 2010-06-30 → 2010-06-22 (-8d) | 2010-06-30 → 2010-06-22 (-8d) |  | 67d → 50d | constraint start no earlier than 2010-06-30 → start no earlier than 2010-06-22 |
| 169 | **(ADM12) Listado de acciones proactivas** | 2010-08-25 → 2010-08-04 (-21d) | 2010-09-15 → 2010-08-12 (-34d) | 16d → 7d | 12d → 14d |  |
| 170 | Módulo de elaboraciónde informes de estado de campaña de seguimiento | 2010-08-25 → 2010-08-04 (-21d) | 2010-08-27 → 2010-08-05 (-22d) | 3d → 2d | 21d → 13d | constraint start no earlier than 2010-08-25 → start no earlier than 2010-08-04; resources Programador Sr 1 → Prog SSr 1 |
| 171 | Módulo de elaboración de informes de estado de encuesta | 2010-08-26 → 2010-08-04 (-22d) | 2010-08-30 → 2010-08-05 (-25d) | 3d → 2d | 20d → 13d | constraint start no earlier than 2010-08-26 → start no earlier than 2010-08-04; resources Programador Sr 2 → Programador Jr 2 |
| 172 | Módulo de elaboración de informes de ediciones de encuestas | 2010-09-02 → 2010-08-04 (-29d) | 2010-09-06 → 2010-08-05 (-32d) | 3d → 2d | 15d → 13d | constraint start no earlier than 2010-09-02 → start no earlier than 2010-08-04; resources Programador Sr 1 → Programador Jr 1 |
| 173 | Módulo de elaboración de listados de campañas de seguimiento | 2010-09-08 → 2010-08-06 (-33d) | 2010-09-10 → 2010-08-09 (-32d) | 3d → 2d |  | constraint start no earlier than 2010-09-08 → start no earlier than 2010-08-06; resources Programador Sr 2 → Programador Jr 1 |
| 174 | Módulo de elaboración de listados de información de encuestas | 2010-09-09 → 2010-08-06 (-34d) | 2010-09-13 → 2010-08-09 (-35d) | 3d → 2d | 10d → 11d | constraint start no earlier than 2010-09-09 → start no earlier than 2010-08-06; resources Programador Sr 1 → Programador Jr 2 |
| 175 | Testing Listados Proactivas | 2010-09-14 → 2010-08-11 (-34d) | 2010-09-15 → 2010-08-12 (-34d) |  | 12d → 13d | constraint start no earlier than 2010-09-10 → start no earlier than 2010-08-11 |
| 176 | **(ADM13) Listados de documentos** | 2010-09-08 → 2010-08-24 (-15d) | 2010-09-10 → 2010-08-27 (-14d) | 3d → 4d | 15d → 3d |  |
| 177 | Elaboración de listado de configuración | 2010-09-08 → 2010-08-24 (-15d) | 2010-09-08 → 2010-08-24 (-15d) |  | 16d → 1d | constraint start no earlier than 2010-09-07 → start no earlier than 2010-08-24 |
| 178 | Elaboración de listado de uso | 2010-09-08 → 2010-08-24 (-15d) | 2010-09-08 → 2010-08-24 (-15d) |  | 16d → 1d | constraint start no earlier than 2010-09-06 → start no earlier than 2010-08-24 |
| 179 | Elaboración de listado de asociaciones | 2010-09-09 → 2010-08-24 (-16d) | 2010-09-09 → 2010-08-24 (-16d) |  | 13d → 1d | constraint start no earlier than 2010-09-09 → start no earlier than 2010-08-24; resources Programador Jr 2 → Prog SSr 1 |
| 180 | Testing Listado Docs | 2010-09-10 → 2010-08-27 (-14d) | 2010-09-10 → 2010-08-27 (-14d) |  | 15d → 3d | constraint start no earlier than 2010-09-10 → start no earlier than 2010-08-27 |
| 181 | **(ADM14) Listado sobre consultas** | 2010-08-31 → 2010-08-02 (-29d) | 2010-09-21 → 2010-08-06 (-46d) | 16d → 5d | 8d → 18d |  |
| 182 | Módulo de obtención de listados de consulta por ciudadano | 2010-09-13 → 2010-08-02 (-42d) | 2010-09-14 → 2010-08-02 (-43d) | 2d → 1d | 9d → 16d | constraint start no earlier than 2010-09-13 → start no earlier than 2010-08-02 |
| 183 | Módulo de obtención de listados de consultas con cierre principal | 2010-08-31 → 2010-08-02 (-29d) | 2010-09-01 → 2010-08-02 (-30d) | 2d → 1d | 18d → 16d | constraint start no earlier than 2010-08-31 → start no earlier than 2010-08-02; resources Programador Sr 2 → Prog SSr 2 |
| 184 | Módulo de obtención de listados de consulta con cierre secundario | 2010-09-02 → 2010-08-02 (-31d) | 2010-09-03 → 2010-08-02 (-32d) | 2d → 1d |  | constraint start no earlier than 2010-09-02 → start no earlier than 2010-08-02; resources Programador Sr 2 → Programador Sr 1 |
| 185 | Módulo de obtención de listados de consulta por motivo de cierre | 2010-09-09 → 2010-08-02 (-38d) | 2010-09-10 → 2010-08-02 (-39d) | 2d → 1d | 11d → 16d | constraint start no earlier than 2010-09-09 → start no earlier than 2010-08-02; resources Prog SSr 1 → Programador Sr 2 |
| 186 | Módulo de obtención de listado de resumen de consultas por servicio | 2010-09-16 → 2010-08-03 (-44d) | 2010-09-17 → 2010-08-03 (-45d) | 2d → 1d | 6d → 15d | constraint start no earlier than 2010-09-16 → start no earlier than 2010-08-03 |
| 187 | Módulo de obtención de listado de consultas por área geográfica | 2010-09-13 → 2010-08-03 (-41d) | 2010-09-14 → 2010-08-03 (-42d) | 2d → 1d | 9d → 15d | constraint start no earlier than 2010-09-13 → start no earlier than 2010-08-03; resources Programador Sr 2 → Prog SSr 2 |
| 188 | Módulo de obtención de listado de consultas por usuario | 2010-09-14 → 2010-08-03 (-42d) | 2010-09-15 → 2010-08-03 (-43d) | 2d → 1d | 8d → 15d | constraint start no earlier than 2010-09-14 → start no earlier than 2010-08-03; resources Programador Sr 1 → Prog SSr 1 |
| 189 | Módulo de obtención de listado de consultas pendientes | 2010-09-15 → 2010-08-04 (-42d) | 2010-09-16 → 2010-08-04 (-43d) | 2d → 1d | 7d → 14d | constraint start no earlier than 2010-09-15 → start no earlier than 2010-08-04; resources Programador Sr 2 → Programador Sr 1 |
| 190 | Testing Listado Consultas | 2010-09-20 → 2010-08-05 (-46d) | 2010-09-21 → 2010-08-06 (-46d) |  | 8d → 17d | constraint start no earlier than 2010-09-20 → start no earlier than 2010-08-04 |
| 191 | **(ADM15) Mantener Asignaciones TSI** | 2010-07-15 → 2010-07-16 (+1d) | 2010-09-17 → 2010-08-19 (-29d) | 47d → 25d? |  |  |
| 193 | Recolección de datos de operaciones TSI pendientes | 2010-08-02 → 2010-07-16 (-17d) | 2010-08-04 → 2010-07-16 (-19d) | 3d → 1d | 40d → 29d | constraint start no earlier than 2010-08-02 → start no earlier than 2010-07-16 |
| 194 | Migración de los datos a archivo TXT | 2010-07-29 → 2010-07-19 (-10d) | 2010-07-30 → 2010-07-20 (-10d) |  | 43d → 27d | constraint start no earlier than 2010-07-29 → start no earlier than 2010-07-19 |
| 195 | Interface de comunicación con CatSalut | 2010-07-15 → 2010-07-19 (+4d) | 2010-07-21 → 2010-07-23 (+2d) |  | 50d → 24d | constraint start no earlier than 2010-07-15 → start no earlier than 2010-07-19 |
| 196 | Testing TSI | 2010-09-16 → 2010-08-19 (-28d) | 2010-09-17 → 2010-08-19 (-29d) | 2d → 1d? |  | constraint start no earlier than 2010-09-16 → start no earlier than 2010-08-19 |
| 197 | **(ADM16) Asignar documentos a acciones** | 2010-09-08 → 2010-08-24 (-15d) | 2010-09-22 → 2010-08-26 (-27d) | 11d → 3d | 7d → 4d |  |
| 198 | Creación/eliminación de asociaciones | 2010-09-13 → 2010-08-24 (-20d) | 2010-09-13 → 2010-08-24 (-20d) |  | 11d → 1d | constraint start no earlier than 2010-09-13 → start no earlier than 2010-08-24; resources Programador Jr 2 → Prog SSr 2 |
| 199 | Cadicidad de asociaciones | 2010-09-08 → 2010-08-24 (-15d) | 2010-09-08 → 2010-08-24 (-15d) |  | 16d → 1d | constraint start no earlier than 2010-09-07 → start no earlier than 2010-08-24 |
| 200 | Testing Asignacion Docs a Acciones | 2010-09-22 → 2010-08-26 (-27d) | 2010-09-22 → 2010-08-26 (-27d) |  | 7d → 4d | constraint start no earlier than 2010-09-22 → start no earlier than 2010-08-26 |
| 201 | **(INT01) Direcciones de farmacias, CAP y otra informacion breve** | 2010-09-02 → 2010-08-10 (-23d) | 2010-09-09 → 2010-08-16 (-24d) | 6d → 5d | 8d → 4d |  |
| 202 | Trabajo con listas de resultados | 2010-09-02 → 2010-08-10 (-23d) | 2010-09-03 → 2010-08-11 (-23d) |  | 11d → 5d | constraint start no earlier than 2010-09-01 → start no earlier than 2010-08-10; resources Programador Jr 1 → Programador Jr 2 |
| 203 | Testing Dirs | 2010-09-09 → 2010-08-16 (-24d) | 2010-09-09 → 2010-08-16 (-24d) |  | 8d → 3d | constraint start no earlier than 2010-09-09 → start no earlier than 2010-08-16 |
| 204 | **(SIS01) Trazabilidad y registro de uso** | 2010-06-21 → 2010-06-14 (-7d) | 2010-08-03 → 2010-06-30 (-34d) | 32d → 13d? | 43d → 45d |  |
| 205 | Control Acceso a Consultas | 2010-06-22 → 2010-06-15 (-7d) | 2010-06-23 → 2010-06-17 (-6d) |  | 68d → 49.5d | constraint start no earlier than 2010-06-22 → none |
| 206 | Control Acceso a Encuestas | 2010-07-06 → 2010-06-21 (-15d) | 2010-07-07 → 2010-06-23 (-14d) |  | 58d → 45.5d | constraint start no earlier than 2010-07-06 → start no earlier than 2010-06-21; resources Programador Sr 2 → Programador Sr 1 |
| 207 | Control General Acceso al Sistema | 2010-06-24 → 2010-06-17 (-7d) | 2010-06-25 → 2010-06-21 (-4d) |  | 66d → 47.5d | constraint start no earlier than 2010-06-24 → none |
| 208 | Control Acceso a Campañas de Seguimiento | 2010-06-21 → 2010-06-17 (-4d) | 2010-06-23 → 2010-06-18 (-5d) |  | 68.5d → 48d | constraint start no earlier than 2010-06-21 → none |
| 209 | Control Acceso a Documentos | 2010-07-08 → 2010-06-23 (-15d) | 2010-07-09 → 2010-06-29 (-10d) |  | 56d → 41.5d | constraint start no earlier than 2010-07-08 → none |
| 210 | Control Acceso a Recursos Internos | 2010-06-21 → 2010-06-16 (-5d) | 2010-06-24 → 2010-06-22 (-2d) |  | 67d → 46.5d |  |
| 211 | Historial de Consultas | 2010-07-29 → 2010-06-14 (-45d) | 2010-07-30 → 2010-06-14 (-46d) | 2d → 1d | 41d → 52d | constraint start no earlier than 2010-06-17 → start no earlier than 2010-06-14 |

| ID | Task | Start | Finish | Duration | Total float | Other |
| --- | --- | --- | --- | --- | --- | --- |
| 212 | Testing Trazabilidad / Registro | 2010-08-02 → 2010-06-30 (-33d) | 2010-08-03 → 2010-06-30 (-34d) | 2d → 1d? | 43d → 44d |  |
| 213 | **(ISC01) Transferir info, comunicacion a STARS** | 2010-06-16 → 2010-06-21 (+5d) |  | 6d → 3d | 72d → 50d |  |
| 214 | Recibir información del sistema de comunicaciones | 2010-06-16 → 2010-06-21 (+5d) |  | 6d → 3d | 70d → 46d | constraint start no earlier than 2010-06-16 → none; resources Prog SSr 1 → Prog SSr 1; Prog SSr 2 |
| 215 | **(ISC02) Iniciar llamada desde STARS** | 2010-07-21 → 2010-06-28 (-23d) | 2010-08-06 → 2010-07-01 (-36d) | 13d → 4d | 40d → 44d |  |
| 216 | Lanzamiento de petición de comunicación | 2010-07-21 → 2010-06-28 (-23d) | 2010-07-28 → 2010-06-30 (-28d) | 6d → 3d | 44d → 40d | constraint start no earlier than 2010-07-21 → none; resources Programador Sr 1 → Prog SSr 1; Prog SSr 2 |
| 217 | Testing Inicio Llamada STARS | 2010-08-06 → 2010-07-01 (-36d) | 2010-08-06 → 2010-07-01 (-36d) |  | 40d → 43d | constraint start no earlier than 2010-08-06 → start no earlier than 2010-07-01 |
| 218 | **(ISC03) Informacion encuesta** | 2010-07-08 → 2010-06-23 (-15d) | 2010-07-08 → 2010-06-23 (-15d) |  | 61d → 50d |  |
| 219 | Activación actividad de encuesta | 2010-07-08 → 2010-06-23 (-15d) | 2010-07-08 → 2010-06-23 (-15d) |  | 61d → 46d | constraint start no earlier than 2010-07-08 → start no earlier than 2010-06-23 |
| 220 | ABM Consultas | 2010-06-22 → 2010-06-28 (+6d) | 2010-06-22 → 2010-06-29 (+7d) |  | 67d → 38.5d | constraint start no earlier than 2010-06-22 → start no earlier than 2010-06-28; resources Programador Jr 2 → Programador Jr 1 |
| 221 | ABM Usuarios | 2010-06-24 → 2010-06-25 (+1d) | 2010-06-24 → 2010-06-28 (+4d) |  | 67d → 39.5d | constraint start no earlier than 2010-06-24 → none |
| 223 | ABM Fichas / Guias / Recursos | 2010-08-27 → 2010-07-28 (-30d) | 2010-08-31 → 2010-07-30 (-32d) |  |  | constraint start no earlier than 2010-08-27 → start no earlier than 2010-07-28; resources Programador Jr 1 → Prog SSr 2 |
| 224 | ABM Cuestionarios | 2010-07-05 → 2010-06-07 (-28d) | 2010-07-05 → 2010-06-07 (-28d) |  | 60d → 54d | constraint start no earlier than 2010-07-05 → start no earlier than 2010-06-07 |
| 225 | Interfaz General | 2010-06-24 → 2010-06-17 (-7d) | 2010-07-21 → 2010-07-13 (-8d) | 20d → 13d | 47d → 32d | constraint start no earlier than 2010-06-24 → none; resources Prog SSr 1 → Prog SSr 1; Prog SSr 2 |
| 226 | Interfaz Para Usuario Avanzado | 2010-08-18 → 2010-07-19 (-30d) | 2010-08-24 → 2010-07-23 (-32d) |  | 25d → 21d | constraint start no earlier than 2010-08-18 → start no earlier than 2010-07-19 |
| 227 | Interfaz de Listados para ADM02 | 2010-09-02 → 2010-08-04 (-29d) | 2010-09-08 → 2010-08-10 (-29d) |  | 12d → 9d | constraint start no earlier than 2010-09-02 → start no earlier than 2010-08-04; resources Prog SSr 1 → Prog SSr 2 |
| 228 | Interfaz Mantenimiento Usuarios y Perfiles | 2010-07-22 → 2010-07-20 (-2d) | 2010-07-28 → 2010-07-26 (-2d) |  | 44d → 20d | constraint start no earlier than 2010-07-22 → start no earlier than 2010-07-20; resources Programador Sr 2 → Prog SSr 2 |
| 229 | Interfaz Direcciones INT01 | 2010-09-15 → 2010-08-17 (-29d) | 2010-09-21 → 2010-08-23 (-29d) |  | 5d → 3d | constraint start no earlier than 2010-09-15 → start no earlier than 2010-08-13; resources Prog SSr 1 → Prog SSr 2 |
| 230 | ABM Enfermedades / Centros Salud | 2010-09-10 → 2010-08-18 (-23d) | 2010-09-13 → 2010-08-19 (-25d) |  | 10d → 5d | constraint start no earlier than 2010-09-08 → start no earlier than 2010-08-18; resources Programador Jr 1 → Programador Jr 2 |
| 231 | Listado de Usuarios y Perfiles | 2010-07-08 → 2010-07-15 (+7d) | 2010-07-08 → 2010-07-15 (+7d) |  | 61d → 30d | constraint start no earlier than 2010-07-08 → start no earlier than 2010-07-15; resources Programador Jr 1 → Programador Sr 1 |
| 232 | Interface con sistema de comunicaciones (ISC01, ISC02, ISC03) | 2010-06-30 → 2010-06-29 (-1d) |  |  | 56d → 30.5d | constraint start no earlier than 2010-06-30 → start no earlier than 2010-06-29 |
| 233 | Testing ABMs Varios | 2010-09-23 → 2010-08-20 (-34d) | 2010-09-28 → 2010-08-25 (-34d) |  | 3d → 1d | constraint start no earlier than 2010-09-23 → none |
| 234 | Testing Interfaces Varias | 2010-09-29 → 2010-08-30 (-30d) | 2010-10-01 → 2010-09-01 (-30d) |  |  | constraint start no earlier than 2010-09-29 → start no earlier than 2010-08-30 |
| 236 | Arquitectura General / Configuracion Ambientes | 2010-05-14 → 2010-05-12 (-2d) | 2010-06-03 → 2010-06-01 (-2d) |  | 13d → 24d |  |
| 238 | Compra Equipos Necesarios |  |  | 2d → 1.5d | 101d → 77d |  |
| 239 | **Infraestructura** |  | 2010-05-20 → 2010-05-18 (-2d) | 11d → 9d | 15d → 22d |  |
| 240 | Preparacion de Ambientes en servidores |  | 2010-05-07 → 2010-05-06 (-1d) | 2d → 1d | 98d → 77d |  |
| 241 | Instalacion y Configuracion de Servidor DEV | 2010-05-10 → 2010-05-07 (-3d) | 2010-05-13 → 2010-05-11 (-2d) | 4d → 3d | 13d → 24d | constraint start no earlier than 2010-05-10 → none |
| 242 | Instalacion y Configuracion de Servidores de Usos Multiples | 2010-05-14 → 2010-05-12 (-2d) | 2010-05-20 → 2010-05-18 (-2d) |  | 89d → 69d | constraint start no earlier than 2010-05-14 → start no earlier than 2010-05-11 |
| 245 | Instalacion de pcs nuevos usuarios | 2010-05-10 → 2010-05-07 (-3d) |  | 2d → 2.5d | 101d → 77d |  |

## Version 9 (saved 2010-09-03, file Casos Uso Lole Con Recursos 2010 Version Previa - 5 RECURSOS v2.mpp)

Note of the change: Version FINAL del project. Subo un doc con las fechas de cada cosa!

Last finish 2010-09-01 → 2010-11-16 (+76d).

Added:

| ID | Task | Duration | Start | Finish | Predecessors | Constraint | Resources |
| --- | --- | --- | --- | --- | --- | --- | --- |
| 245 | Configuracion Red Interna | 2d | 2010-05-24 | 2010-05-25 |  | start no earlier than 2010-05-24 | IT 1 |
| 248 | **Configuracion del Ambiente de Produccion** | 24d | 2010-08-02 | 2010-09-02 |  |  |  |
| 249 | Instalar y Configurar Load Balancer | 3d | 2010-08-23 | 2010-08-25 |  | start no earlier than 2010-08-23 | IT 1 |
| 250 | Instalar y Configurar APP Server | 3d | 2010-08-16 | 2010-08-18 |  | start no earlier than 2010-08-16 | IT 1 |
| 251 | Instalar y Configurar DB Server | 4d | 2010-08-09 | 2010-08-12 |  | start no earlier than 2010-08-09 | IT 1 |
| 252 | Instalar y Configurar Web Server | 3d | 2010-08-30 | 2010-09-01 |  | start no earlier than 2010-08-30 | IT 1 |
| 254 | Puesta en Marcha | 10d | 2010-10-18 | 2010-10-29 | 248, 234 | start no earlier than 2010-10-18 | IT 1; Arquitecto; Programador Sr 1; Programador Sr 2 |
| 255 | Testeo Final en Produccion | 9d | 2010-10-20 | 2010-11-01 | 267 |  | Tester |
| 257 | **Web Server (Consultas Externas del Cliente)** | 22d | 2010-07-14 | 2010-08-12 | 7, 30 |  |  |
| 258 | Interfaz Web Server | 4d | 2010-08-09 | 2010-08-12 |  | start no earlier than 2010-08-09 | Programador Jr 2 |
| 259 | Modulo Chat | 3d | 2010-08-02 | 2010-08-04 |  | start no earlier than 2010-08-02 | Prog SSr 1 |
| 260 | Busquedas y Listados del Web Server | 2d | 2010-08-05 | 2010-08-06 |  | start no earlier than 2010-08-05 | Prog SSr 1 |
| 261 | Test Web Server | 2d | 2010-07-14 | 2010-07-15 |  | start no earlier than 2010-07-14 | Tester |
| 263 | **Capacitacion del Personal Para el Uso de la APP** | 11d | 2010-11-02 | 2010-11-16 | 254, 255 |  |  |
| 264 | Capcitacion Usuario Operador | 6d | 2010-11-02 | 2010-11-09 |  | start no earlier than 2010-11-01 | Arquitecto; Programador Sr 1; Programador Sr 2 |
| 265 | Capacitacion Usuario Administrador | 6d | 2010-11-09 | 2010-11-16 |  | start no earlier than 2010-11-09 | Arquitecto; Programador Sr 1; Programador Sr 2 |
| 267 | Retoques, Desarrollos Finales, Ultimas Pruebas | 12d | 2010-10-04 | 2010-10-19 |  | start no earlier than 2010-10-04 | Programador Jr 1; Prog SSr 1; Programador Jr 2; Programador Sr 1; Programador Sr 2 |
| 268 | Mantenimiento de la Infra | 10d | 2010-06-18 A | 2010-08-20 |  | start no earlier than 2010-06-18 | IT 1 |

Changed:

| ID | Task | Start | Finish | Duration | Total float | Other |
| --- | --- | --- | --- | --- | --- | --- |
| 1 | Integracion con el Sistema STARS (Lectura Datos) | 2010-06-02 → 2010-06-07 (+5d) | 2010-06-07 → 2010-06-11 (+4d) | 4d → 5d | 21d → 16d |  |
| 2 | Modulo Seguridad que Oculta Info Llamado | 2010-06-08 → 2010-06-14 (+6d) | 2010-06-09 → 2010-06-16 (+7d) | 1.5d → 3d | 60.5d → 109d |  |
| 3 | **(GEN01) Identificacion y Autenticacion** | 2010-06-08 → 2010-06-14 (+6d) | 2010-06-11 → 2010-06-17 (+6d) |  | 45d → 96d |  |
| 4 | Autenticacion | 2010-06-08 → 2010-06-14 (+6d) | 2010-06-09 → 2010-06-15 (+6d) |  | 44d → 97d | constraint none → start no earlier than 2010-06-10; resources Prog SSr 1 → Programador Jr 1 |
| 5 | Interfaz Inicio Sesion | 2010-06-08 → 2010-06-14 (+6d) | 2010-06-10 → 2010-06-16 (+6d) |  | 43d → 96d | constraint none → start no earlier than 2010-06-08; resources Prog SSr 2 → Prog SSr 1 |
| 6 | Testing Id y Aut | 2010-06-11 → 2010-06-17 (+6d) | 2010-06-11 → 2010-06-17 (+6d) |  | 43d → 96d |  |
| 7 | **(GEN02) Gestion General de Registros** | 2010-06-08 → 2010-06-15 (+7d) | 2010-06-21 → 2010-07-08 (+17d) | 10d → 18d | 52d → 89d |  |
| 8 | ABM Registro | 2010-06-10 → 2010-06-30 (+20d) | 2010-06-10 → 2010-07-01 (+21d) | 1d → 2d | 53d → 92d | constraint start no earlier than 2010-06-10 → start no earlier than 2010-06-30; resources Programador Jr 1 → Programador Jr 2 |
| 9 | Buscar registro | 2010-06-11 → 2010-06-29 (+18d) | 2010-06-14 → 2010-06-29 (+15d) |  | 51.5d → 94d | constraint start no earlier than 2010-06-11 → start no earlier than 2010-06-29; resources Programador Jr 1 → Programador Jr 2 |
| 10 | Copiar registro | 2010-06-08 → 2010-06-15 (+7d) | 2010-06-08 → 2010-06-15 (+7d) |  | 55d → 104d | constraint start no earlier than 2010-06-07 → start no earlier than 2010-06-15; resources Programador Jr 1 → Programador Jr 2 |
| 11 | Interfaz ABM Registro | 2010-06-15 → 2010-06-29 (+14d) | 2010-06-17 → 2010-07-05 (+18d) | 3d → 4d | 48d → 90.5d | constraint none → start no earlier than 2010-06-29; resources Prog SSr 2 → Programador Sr 2 |
| 12 | Testing Registros | 2010-06-18 → 2010-07-07 (+19d) | 2010-06-21 → 2010-07-08 (+17d) |  | 48d → 89d | constraint none → start no earlier than 2010-07-07 |
| 13 | **(USR01) Determinacion del servicio de atencion** | 2010-07-29 → 2010-08-17 (+19d) | 2010-08-06 → 2010-09-01 (+26d) | 7d → 12d | 7d → 27d |  |
| 14 | Capturar la Comunicación???? | 2010-07-29 → 2010-08-17 (+19d) | 2010-07-29 → 2010-08-18 (+20d) | 1d → 2d | 11d → 36d | constraint start no earlier than 2010-07-26 → start no earlier than 2010-08-17 |
| 15 | Determinar el tipo de servicio | 2010-08-02 → 2010-08-26 (+24d) | 2010-08-02 → 2010-08-26 (+24d) |  | 14d → 30d | constraint start no earlier than 2010-08-02 → start no earlier than 2010-08-26 |
| 16 | Lista de Espera | 2010-08-03 → 2010-08-23 (+20d) | 2010-08-03 → 2010-08-24 (+21d) | 1d → 2d | 13d → 32d | constraint start no earlier than 2010-08-03 → start no earlier than 2010-08-23 |
| 17 | Determinar conjunto de operadores adecuados al tipo de solicitud | 2010-07-30 → 2010-08-30 (+31d) | 2010-07-30 → 2010-08-30 (+31d) |  | 10d → 28d | constraint start no earlier than 2010-07-30 → start no earlier than 2010-08-30 |
| 18 | Testing Servicio Atencion | 2010-08-06 → 2010-09-01 (+26d) | 2010-08-06 → 2010-09-01 (+26d) |  | 6d → 16d | constraint start no earlier than 2010-08-06 → start no earlier than 2010-09-01 |
| 19 | **(USR02) Agenda** | 2010-06-30 → 2010-07-14 (+14d) | 2010-07-20 → 2010-08-04 (+15d) | 15d → 16d | 27d → 70d |  |
| 20 | Selección de una agenda | 2010-07-02 → 2010-07-29 (+27d) | 2010-07-02 → 2010-07-30 (+28d) | 1d → 2d | 33d → 71d | constraint start no earlier than 2010-07-02 → start no earlier than 2010-07-29 |
| 21 | ABM citas sobre la agenda | 2010-07-01 → 2010-07-19 (+18d) | 2010-07-01 → 2010-07-20 (+19d) | 1d → 2d | 34d → 79d | constraint start no earlier than 2010-07-01 → start no earlier than 2010-07-19; resources Programador Jr 2 → Programador Jr 1 |
| 22 | Interfaz de la Agenda | 2010-06-30 → 2010-07-14 (+14d) | 2010-07-01 → 2010-07-16 (+15d) | 2d → 3d | 34d → 81d | constraint start no earlier than 2010-06-29 → start no earlier than 2010-07-14 |
| 23 | Integracion con Stars - Llamada desde Agenda | 2010-07-14 → 2010-07-19 (+5d) | 2010-07-16 → 2010-07-26 (+10d) | 3d → 6d | 23d → 75d | constraint start no earlier than 2010-07-14 → start no earlier than 2010-07-19; resources Prog SSr 1; Prog SSr 2 → Programador Sr 1 |
| 24 | Asignar pacientes a cita | 2010-06-30 → 2010-07-21 (+21d) | 2010-06-30 → 2010-07-21 (+21d) |  | 35d → 78d | constraint start no earlier than 2010-06-30 → start no earlier than 2010-07-21; resources Programador Jr 2 → Programador Jr 1 |
| 25 | Testing Agenda | 2010-07-19 → 2010-08-03 (+15d) | 2010-07-20 → 2010-08-04 (+15d) |  | 23d → 70d | constraint none → start no earlier than 2010-08-03 |
| 26 | **(USR03) Rellamada** | 2010-07-27 → 2010-08-16 (+20d) | 2010-07-28 → 2010-08-27 (+30d) | 2d → 10d | 25d → 57d |  |
| 27 | Rellamada | 2010-07-27 → 2010-08-16 (+20d) | 2010-07-27 → 2010-08-17 (+21d) | 1d → 2d | 21d → 64d | constraint start no earlier than 2010-07-27 → start no earlier than 2010-08-16; resources Prog SSr 2 → Prog SSr 1 |
| 28 | Testing Rellamada | 2010-07-28 → 2010-08-27 (+30d) | 2010-07-28 → 2010-08-27 (+30d) |  | 21d → 57d | constraint none → start no earlier than 2010-08-27 |
| 29 | **(USR04) Consulta** | 2010-06-08 → 2010-06-14 (+6d) | 2010-06-14 → 2010-06-22 (+8d) | 5d → 7d | 18d → 15d |  |
| 30 | **Tratar Consulta** | 2010-06-08 → 2010-06-14 (+6d) | 2010-06-11 → 2010-06-16 (+5d) | 3.5d → 3d | 19.5d → 19d |  |
| 31 | Ajornar Consulta | 2010-06-11 → 2010-06-16 (+5d) | 2010-06-11 → 2010-06-16 (+5d) | 0.5d → 1d | 20.5d → 19d | constraint start no earlier than 2010-06-11 → start no earlier than 2010-06-16; resources Programador Jr 1 → Programador Jr 2 |
| 32 | Transferir consulta | 2010-06-08 → 2010-06-14 (+6d) | 2010-06-08 → 2010-06-14 (+6d) | 0.5d → 1d | 22.5d → 21d | constraint none → start no earlier than 2010-06-14 |
| 33 | Modulo Envio de Correo | 2010-06-10 → 2010-06-16 (+6d) | 2010-06-11 → 2010-06-18 (+7d) | 2d → 3d | 20d → 17d | constraint none → start no earlier than 2010-06-16; resources Prog SSr 1 → Programador Jr 1 |
| 34 | Modulo Envio SMS | 2010-06-11 → 2010-06-17 (+6d) | 2010-06-14 → 2010-06-22 (+8d) | 2d → 4d | 18d → 15d | constraint none → start no earlier than 2010-06-17; resources Prog SSr 2 → Programador Sr 1 |
| 35 | Inclusion en Campaña de Seguimiento | 2010-06-09 → 2010-06-21 (+12d) | 2010-06-09 → 2010-06-21 (+12d) |  | 22d → 16d | constraint start no earlier than 2010-06-09 → start no earlier than 2010-06-21; resources Programador Jr 1 → Programador Jr 2 |
| 36 | Testing Consulta | 2010-06-15 → 2010-06-23 (+8d) | 2010-06-16 → 2010-06-25 (+9d) | 2d → 3d | 51d → 102d |  |
| 37 | **(USR05) Consejo Salud** | 2010-07-23 → 2010-09-06 (+45d) | 2010-07-29 → 2010-09-08 (+41d) | 5d → 3d | 24d → 49d |  |
| 38 | Consejo Salud | 2010-07-23 → 2010-09-06 (+45d) | 2010-07-26 → 2010-09-07 (+43d) |  | 22d → 49d | constraint start no earlier than 2010-07-19 → start no earlier than 2010-09-06; resources Prog SSr 1 → Programador Jr 2 |
| 39 | Testing Consejo Salud | 2010-07-29 → 2010-09-08 (+41d) | 2010-07-29 → 2010-09-08 (+41d) |  | 20d → 49d | constraint start no earlier than 2010-07-29 → start no earlier than 2010-08-27 |
| 40 | **(USR06) Gestionar Consulta pendiente** | 2010-07-19 → 2010-08-09 (+21d) | 2010-07-23 → 2010-08-12 (+20d) | 5d → 4d | 15d → 38d |  |
| 41 | Priorizacion de la Lista de Consultas | 2010-07-19 → 2010-08-09 (+21d) | 2010-07-19 → 2010-08-10 (+22d) | 1d → 2d | 14d → 39d | constraint none → start no earlier than 2010-08-09; resources Prog SSr 2 → Programador Jr 1 |
| 42 | Testing USR06 | 2010-07-23 → 2010-08-12 (+20d) | 2010-07-23 → 2010-08-12 (+20d) |  | 14d → 38d | constraint start no earlier than 2010-07-23 → start no earlier than 2010-08-12 |
| 43 | **(USR07) Programacion de cita previa** | 2010-08-10 → 2010-08-18 (+8d) | 2010-08-13 → 2010-08-26 (+13d) | 4d → 7d | 13d → 58d |  |
| 44 | Realizar Citación (Interface con Sistema de citación AP) | 2010-08-10 → 2010-08-18 (+8d) | 2010-08-11 → 2010-08-20 (+9d) | 2d → 3d | 10d → 61d | constraint start no earlier than 2010-08-10 → start no earlier than 2010-08-18 |
| 45 | Testing USR07 | 2010-08-13 → 2010-08-26 (+13d) | 2010-08-13 → 2010-08-26 (+13d) |  | 9d → 58d | constraint start no earlier than 2010-08-13 → start no earlier than 2010-08-26 |
| 46 | **(USR08) Gestiones sobre la TSI** | 2010-07-30 → 2010-08-18 (+19d) | 2010-08-17 → 2010-09-03 (+17d) |  | -23d → -31d |  |
| 47 | Verificacion Documentacion Necesaria | 2010-07-30 → 2010-08-25 (+26d) | 2010-07-30 → 2010-08-25 (+26d) |  | -12d → -27d | constraint start no earlier than 2010-07-30 → start no earlier than 2010-08-25 |
| 48 | Enviar Gestion (Interface con sistema RCA) | 2010-08-11 → 2010-09-01 (+21d) | 2010-08-11 → 2010-09-02 (+22d) | 1d → 2d | -17d → -33d | constraint start no earlier than 2010-08-11 → start no earlier than 2010-09-01 |
| 49 | Cierre automatico de la consulta por paso de tiempo | 2010-08-10 → 2010-08-19 (+9d) | 2010-08-10 → 2010-08-20 (+10d) | 1d → 2d | -16d → -24d | constraint start no earlier than 2010-08-10 → start no earlier than 2010-08-19 |
| 50 | Guardar LOG gestion TSI | 2010-08-13 → 2010-08-18 (+5d) | 2010-08-16 → 2010-08-18 (+2d) |  | -19.5d → -22d | constraint none → start no earlier than 2010-08-18; resources Programador Jr 1 → Programador Jr 2 |
| 51 | Testing | 2010-08-17 → 2010-09-03 (+17d) | 2010-08-17 → 2010-09-03 (+17d) |  | -23d → -33d | constraint start no earlier than 2010-08-17 → start no earlier than 2010-09-02 |
| 52 | **(USR09) Servicio de traduccion** | 2010-06-29 → 2010-08-11 (+43d) | 2010-07-12 → 2010-08-31 (+50d) | 9.5d → 15d | 37d → 55d |  |
| 53 | Contactar Servicio Externo de Traduccion | 2010-07-05 → 2010-08-23 (+49d) | 2010-07-06 → 2010-08-26 (+51d) | 2d → 4d | 35d → 56d | constraint start no earlier than 2010-07-05 → start no earlier than 2010-08-23; resources Programador Sr 2 → Prog SSr 1 |
| 54 | Enlace Comunicacion Multiconferencia | 2010-06-29 → 2010-08-11 (+43d) | 2010-07-02 → 2010-08-16 (+45d) | 3d → 4d | 37.5d → 64d | constraint start no earlier than 2010-06-29 → start no earlier than 2010-08-10 |
| 55 | Modulo monitorización de servicio | 2010-07-07 → 2010-08-17 (+41d) | 2010-07-08 → 2010-08-20 (+43d) | 2d → 4d | 33d → 60d | constraint start no earlier than 2010-07-07 → start no earlier than 2010-08-17 |
| 56 | Testing | 2010-07-09 → 2010-08-30 (+52d) | 2010-07-12 → 2010-08-31 (+50d) |  | 33d → 55d | constraint none → start no earlier than 2010-08-30 |
| 57 | **(USR10) Informacion Sanitaria General** | 2010-08-17 → 2010-09-15 (+29d) | 2010-08-18 → 2010-09-16 (+29d) |  | 10d → 43d |  |
| 58 | Guardar Informacion Ciudadano | 2010-08-17 → 2010-09-15 (+29d) | 2010-08-17 → 2010-09-15 (+29d) |  | 6d → 43d | constraint none → start no earlier than 2010-09-07 |
| 59 | Testing | 2010-08-18 → 2010-09-16 (+29d) | 2010-08-18 → 2010-09-16 (+29d) |  | 6d → 43d | constraint start no earlier than 2010-08-17 → start no earlier than 2010-09-13 |
| 60 | **(USR11) Seguimiento de Patologias** | 2010-07-26 → 2010-08-13 (+18d) | 2010-08-10 → 2010-09-07 (+28d) | 12d → 18d | 16d → 50d |  |
| 61 | Buscar Campañas Abiertas | 2010-07-29 → 2010-08-16 (+18d) | 2010-07-29 → 2010-08-17 (+19d) | 1d → 2d | 18d → 63d | constraint start no earlier than 2010-07-29 → start no earlier than 2010-08-16 |
| 62 | **Gestionar Seguimiento** | 2010-07-26 → 2010-08-13 (+18d) | 2010-08-03 → 2010-08-25 (+22d) | 7d → 9d | 19d → 57d |  |
| 63 | Visualizar Historial Pacientes | 2010-07-26 → 2010-08-13 (+18d) | 2010-07-27 → 2010-08-13 (+17d) | 2d → 1d | 20d → 65d | constraint start no earlier than 2010-07-19 → start no earlier than 2010-08-13; resources Programador Jr 2 → Prog SSr 1 |
| 64 | Llamada al Paciente | 2010-08-03 → 2010-08-24 (+21d) | 2010-08-03 → 2010-08-25 (+22d) | 1d → 2d | 15d → 57d | constraint start no earlier than 2010-08-03 → start no earlier than 2010-08-24 |
| 65 | Desligar paciente de campaña | 2010-07-28 → 2010-08-27 (+30d) | 2010-07-28 → 2010-08-27 (+30d) |  | 19d → 55d | constraint start no earlier than 2010-07-28 → start no earlier than 2010-08-27; resources Programador Jr 2 → Prog SSr 1 |
| 66 | Testing | 2010-08-09 → 2010-09-06 (+28d) | 2010-08-10 → 2010-09-07 (+28d) |  | 12d → 50d | constraint start no earlier than 2010-08-09 → start no earlier than 2010-09-06 |
| 67 | **(USR12) Encuestas** | 2010-06-08 → 2010-07-07 (+29d) | 2010-07-13 → 2010-08-02 (+20d) | 25.5d → 19d | 36d → 64d |  |
| 68 | Interfaz de Encuestas | 2010-07-08 → 2010-07-26 (+18d) | 2010-07-12 → 2010-07-28 (+16d) |  | 32d → 77d | constraint start no earlier than 2010-07-08 → start no earlier than 2010-07-26 |
| 69 | Contacto con Encuestado | 2010-06-09 → 2010-07-09 (+30d) | 2010-06-11 → 2010-07-12 (+31d) |  | 53.5d → 89d | constraint start no earlier than 2010-06-09 → start no earlier than 2010-07-09; resources Programador Jr 2 → Programador Sr 2 |
| 70 | ABM Formulario De Encuesta | 2010-06-08 → 2010-07-07 (+29d) | 2010-06-09 → 2010-07-08 (+29d) | 1d → 2d | 37.5d → 64d | constraint start no earlier than 2010-06-08 → start no earlier than 2010-07-06 |

| ID | Task | Start | Finish | Duration | Total float | Other |
| --- | --- | --- | --- | --- | --- | --- |
| 71 | Testing | 2010-07-13 → 2010-07-30 (+17d) | 2010-07-13 → 2010-08-02 (+20d) | 1d → 2d | 32d → 76d | constraint none → start no earlier than 2010-07-30 |
| 72 | **(USR13) Buscar Consultas** | 2010-07-02 → 2010-07-22 (+20d) | 2010-07-15 → 2010-08-09 (+25d) | 10d → 13d | 32d → 68d |  |
| 73 | **Operativo de Busqueda** | 2010-07-02 → 2010-07-22 (+20d) | 2010-07-15 → 2010-08-09 (+25d) | 10d → 13d | 32d → 68d |  |
| 74 | Buscar según distintos criterios | 2010-07-05 → 2010-08-04 (+30d) | 2010-07-07 → 2010-08-06 (+30d) |  | 33d → 68d | constraint none → start no earlier than 2010-08-04 |
| 75 | Filtrar resultados de la busqueda según permisos del usuario | 2010-07-02 → 2010-07-30 (+28d) | 2010-07-02 → 2010-07-30 (+28d) |  | 36d → 73d | constraint start no earlier than 2010-07-02 → start no earlier than 2010-07-30 |
| 76 | Acotar resultados si los mismos sobrepasan el parametro configurable "n" | 2010-07-14 → 2010-07-22 (+8d) | 2010-07-14 → 2010-07-22 (+8d) |  | 28d → 79d | constraint start no earlier than 2010-07-14 → start no earlier than 2010-07-22 |
| 77 | Testing | 2010-07-15 → 2010-08-09 (+25d) | 2010-07-15 → 2010-08-09 (+25d) |  | 28d → 68d | constraint none → start no earlier than 2010-08-02 |
| 78 | **(USR14) Hacer Uso de Documentos** | 2010-07-05 → 2010-07-26 (+21d) | 2010-07-22 → 2010-08-23 (+32d) | 14d → 21d | 12d → 34d |  |
| 79 | Creación y uso de Guias Interrogatorio | 2010-07-05 → 2010-08-11 (+37d) | 2010-07-06 → 2010-08-12 (+37d) |  | 20d → 41d | constraint start no earlier than 2010-07-05 → start no earlier than 2010-08-11 |
| 80 | Creación y uso Fichas Tematicas | 2010-07-07 → 2010-08-13 (+37d) | 2010-07-08 → 2010-08-16 (+39d) |  | 16d → 37d | constraint start no earlier than 2010-07-07 → start no earlier than 2010-08-13 |
| 81 | Creación y uso de Recursos | 2010-07-12 → 2010-07-26 (+14d) | 2010-07-13 → 2010-07-27 (+14d) |  | 13d → 51d | constraint start no earlier than 2010-07-12 → start no earlier than 2010-07-26 |
| 82 | Búsqueda y selección de documentos | 2010-07-14 → 2010-08-02 (+19d) | 2010-07-15 → 2010-08-03 (+19d) |  | 11d → 46d | constraint start no earlier than 2010-07-14 → start no earlier than 2010-08-02 |
| 83 | Apertura documentos | 2010-07-19 → 2010-08-04 (+16d) | 2010-07-20 → 2010-08-05 (+16d) | 1d → 2d | 8.5d → 44d | constraint start no earlier than 2010-07-19 → start no earlier than 2010-08-04 |
| 84 | Testing | 2010-07-21 → 2010-08-20 (+30d) | 2010-07-22 → 2010-08-23 (+32d) |  | 6.5d → 34d | constraint start no earlier than 2010-07-21 → start no earlier than 2010-08-20 |
| 85 | **(USR15) Cerrar consulta y dar respuesta al ciudadano** | 2010-06-16 → 2010-07-05 (+19d) | 2010-06-28 → 2010-08-10 (+43d) | 9d → 27d | 11d → -16d |  |
| 86 | Clasificar Finalizacion de Consulta | 2010-06-24 → 2010-07-05 (+11d) | 2010-06-25 → 2010-07-06 (+11d) |  | 11d → 8d | constraint start no earlier than 2010-06-24 → start no earlier than 2010-07-05 |
| 87 | Adición de motivo de cierre a la consulta | 2010-06-16 → 2010-07-23 (+37d) | 2010-06-16 → 2010-07-23 (+37d) |  | 18d → -7d | constraint start no earlier than 2010-06-16 → start no earlier than 2010-07-23 |
| 88 | Creación de clasificaciones ad-hoc | 2010-06-23 → 2010-07-29 (+36d) | 2010-06-24 → 2010-07-29 (+35d) |  | 12.5d → -11d | constraint start no earlier than 2010-06-23 → start no earlier than 2010-07-29; resources Programador Sr 1 → Programador Jr 2 |
| 89 | Testing | 2010-06-28 → 2010-08-10 (+43d) | 2010-06-28 → 2010-08-10 (+43d) |  | 11d → -18d | constraint start no earlier than 2010-06-25 → start no earlier than 2010-08-10 |
| 90 | **(USR16) Visualizar Consulta** | 2010-06-21 → 2010-07-02 (+11d) | 2010-06-29 → 2010-07-12 (+13d) |  | 37d → 79d |  |
| 91 | Mostrar datos generales de la consulta | 2010-06-21 → 2010-07-06 (+15d) | 2010-06-22 → 2010-07-07 (+15d) |  | 37d → 81d | constraint start no earlier than 2010-06-21 → start no earlier than 2010-06-30; resources Programador Jr 2 → Programador Jr 1 |
| 92 | Mostrar datos según el documento elegido | 2010-06-23 → 2010-07-02 (+9d) | 2010-06-25 → 2010-07-05 (+10d) |  | 34.5d → 83d | constraint start no earlier than 2010-06-23 → start no earlier than 2010-07-02 |
| 93 | Testing | 2010-06-29 → 2010-07-12 (+13d) | 2010-06-29 → 2010-07-12 (+13d) |  | 33d → 79d | constraint start no earlier than 2010-06-29 → start no earlier than 2010-07-12 |
| 94 | **(USR17) Crear/Transferir Consulta** | 2010-07-13 → 2010-06-25 (-18d) | 2010-07-28 → 2010-08-16 (+19d) | 12d → 37d | -11d → -20d |  |
| 95 | Crear Consulta | 2010-07-15 → 2010-06-28 (-17d) | 2010-07-16 → 2010-06-29 (-17d) |  | -4d → 12d | constraint start no earlier than 2010-07-15 → start no earlier than 2010-06-28; resources Programador Jr 2 → Programador Jr 1 |
| 96 | Copiar consulta | 2010-07-27 → 2010-06-25 (-32d) | 2010-07-27 → 2010-06-28 (-29d) | 1d → 2d | -8d → 13d | constraint start no earlier than 2010-07-27 → start no earlier than 2010-06-25; resources Prog SSr 1 → Programador Jr 2 |
| 97 | **Transferir Consulta** | 2010-07-13 → 2010-08-06 (+24d) | 2010-07-13 → 2010-08-06 (+24d) |  | -1d → -16d |  |
| 98 | Localizar a otro operador del mismo perfil | 2010-07-13 → 2010-08-06 (+24d) | 2010-07-13 → 2010-08-06 (+24d) |  | -1d → -18d | constraint start no earlier than 2010-07-08 → start no earlier than 2010-08-06; resources Prog SSr 1 → Programador Jr 1 |
| 99 | Testing | 2010-07-28 → 2010-08-13 (+16d) | 2010-07-28 → 2010-08-16 (+19d) | 1d → 2d | -8d → -22d | constraint none → start no earlier than 2010-08-13 |
| 100 | **(ADM01) Mantenimiento del Entorno, clasif y prioridades** | 2010-06-02 → 2010-06-07 (+5d) | 2010-06-25 → 2010-08-25 (+61d) | 17.5d → 58d | 14.5d → -24d |  |
| 101 | Módulo de edición de parametros grales de la aplicación | 2010-06-11 → 2010-08-05 (+55d) | 2010-06-23 → 2010-08-10 (+48d) |  | 17.5d → -17d | constraint none → start no earlier than 2010-08-05; resources Programador Sr 2 → Programador Sr 1 |
| 102 | Módulo edición listas de clasificaciones (Códigos internos) | 2010-06-10 → 2010-08-16 (+67d) | 2010-06-15 → 2010-08-18 (+64d) |  | 20.5d → -23d | constraint none → start no earlier than 2010-08-16 |
| 103 | **Módulo mantenimiento de la lista de espera** | 2010-06-03 → 2010-06-09 (+6d) | 2010-06-04 → 2010-06-10 (+6d) |  | 27d → 28d |  |
| 104 | ABM de la lista de espera | 2010-06-03 → 2010-06-09 (+6d) | 2010-06-03 → 2010-06-10 (+7d) | 1d → 2d | 31d → 26d | constraint start no earlier than 2010-06-03 → start no earlier than 2010-06-09 |
| 105 | Módulo de gestión de prioridades sobre la lista de espera | 2010-06-04 → 2010-06-09 (+5d) | 2010-06-04 → 2010-06-10 (+6d) | 1d → 2d | 27d → 28d | constraint none → start no earlier than 2010-06-09; resources Prog SSr 2 → Prog SSr 1 |
| 106 | **Módulo mantenimiento de lineas de servicio** | 2010-06-02 → 2010-06-07 (+5d) | 2010-06-03 → 2010-06-08 (+5d) |  | 28d → 30d |  |
| 107 | ABM lineas de servicio | 2010-06-02 → 2010-06-07 (+5d) | 2010-06-02 → 2010-06-08 (+6d) | 1d → 2d | 29d → 28d |  |
| 108 | ABM servicios para una linea seleccionada | 2010-06-03 → 2010-06-07 (+4d) | 2010-06-03 → 2010-06-08 (+5d) | 1d → 2d |  | constraint none → start no earlier than 2010-06-07; resources Programador Jr 2 → Programador Jr 1 |
| 109 | **Módulo mantenimiento agendas** | 2010-06-02 → 2010-06-09 (+7d) | 2010-06-22 → 2010-07-01 (+9d) | 14.5d → 17d | 15.5d → 13d |  |
| 110 | Asignar operadores a agenda | 2010-06-04 → 2010-06-11 (+7d) | 2010-06-04 → 2010-06-11 (+7d) |  | 30d → 25d | constraint none → start no earlier than 2010-06-11; resources Prog SSr 1 → Programador Jr 2 |
| 111 | ABM de usuarios de la agenda | 2010-06-21 → 2010-06-30 (+9d) | 2010-06-22 → 2010-07-01 (+9d) | 1d → 2d | 15.5d → 13d | constraint start no earlier than 2010-06-21 → start no earlier than 2010-06-30 |
| 112 | ABM citas de la agenda | 2010-06-02 → 2010-06-09 (+7d) | 2010-06-02 → 2010-06-10 (+8d) | 1d → 2d | 32d → 26d | constraint none → start no earlier than 2010-06-09; resources Programador Jr 1 → Programador Jr 2 |
| 113 | **Módulo mantenimiento BBDD** | 2010-06-09 → 2010-08-11 (+63d) | 2010-06-11 → 2010-08-13 (+63d) | 2d → 3d | 22.5d → -18d |  |
| 114 | Módulo comprobación de formato de archivo | 2010-06-09 → 2010-08-11 (+63d) | 2010-06-10 → 2010-08-11 (+62d) |  | 23.5d → -18d | constraint none → start no earlier than 2010-08-11 |
| 115 | Módulo actualización de BBDD | 2010-06-09 → 2010-08-12 (+64d) | 2010-06-11 → 2010-08-13 (+63d) |  | 25.5d → -20d | constraint none → start no earlier than 2010-08-12; resources Programador Sr 2 → Programador Sr 1 |
| 116 | Testing | 2010-06-23 → 2010-08-24 (+62d) | 2010-06-25 → 2010-08-25 (+61d) |  | 17.5d → -26d | constraint none → start no earlier than 2010-08-24 |
| 117 | **(ADM02) Extraccion de estadisticas y listados** | 2010-06-28 → 2010-08-27 (+60d) | 2010-07-30 → 2010-09-13 (+45d) | 24.5d → 12d | 15d → 20d |  |
| 118 | Listados De Administración | 2010-07-28 → 2010-09-06 (+40d) | 2010-07-29 → 2010-09-07 (+40d) |  | 14d → 23d | constraint start no earlier than 2010-07-28 → start no earlier than 2010-09-06; resources Prog SSr 1 → Programador Sr 1 |
| 119 | **Listados Comunes** | 2010-06-28 → 2010-08-27 (+60d) | 2010-07-15 → 2010-09-10 (+57d) | 13.5d → 11d | 25d → 20d |  |
| 120 | Detalle de estado de finalización consulta/acción | 2010-07-13 → 2010-09-02 (+51d) | 2010-07-14 → 2010-09-02 (+50d) |  | 22.5d → 26d | constraint start no earlier than 2010-07-13 → start no earlier than 2010-09-02; resources Programador Sr 1 → Programador Jr 2 |
| 121 | Listado de clasificaciones | 2010-06-29 → 2010-09-01 (+64d) | 2010-06-29 → 2010-09-01 (+64d) |  | 33d → 27d | constraint start no earlier than 2010-06-29 → start no earlier than 2010-09-01; resources Programador Jr 2 → Prog SSr 1 |
| 122 | Listados de incidencias en las comunicaciones | 2010-07-12 → 2010-09-03 (+53d) | 2010-07-13 → 2010-09-03 (+52d) |  | 23.5d → 25d | constraint start no earlier than 2010-07-12 → start no earlier than 2010-09-03; resources Programador Sr 1 → Programador Jr 2 |
| 123 | Ratios por usuario | 2010-07-15 → 2010-09-09 (+56d) | 2010-07-15 → 2010-09-10 (+57d) | 1d → 2d | 21d → 20d | constraint start no earlier than 2010-07-15 → start no earlier than 2010-09-09; resources Programador Sr 2 → Programador Jr 2 |
| 124 | Finales de servicio | 2010-06-28 → 2010-08-27 (+60d) | 2010-06-29 → 2010-08-27 (+59d) |  | 33.5d → 30d | constraint start no earlier than 2010-06-28 → start no earlier than 2010-08-27; resources Programador Sr 1 → Programador Jr 1 |
| 125 | Testing | 2010-07-30 → 2010-09-13 (+45d) | 2010-07-30 → 2010-09-13 (+45d) |  | 14d → 20d | constraint none → start no earlier than 2010-08-23 |
| 126 | **(ADM03) Mantenimiento de documentos** | 2010-08-03 → 2010-09-01 (+29d) | 2010-08-23 → 2010-09-15 (+23d) | 15d → 11d | 5d → 42d |  |
| 127 | Creación y edición de documentos | 2010-08-20 → 2010-09-13 (+24d) | 2010-08-23 → 2010-09-14 (+22d) |  | 1d → 43d | constraint start no earlier than 2010-08-19 → start no earlier than 2010-09-13; resources Programador Sr 2 → Programador Jr 2 |
| 128 | Borrado de documentos | 2010-08-09 → 2010-09-08 (+30d) | 2010-08-10 → 2010-09-08 (+29d) |  | 10.5d → 47d | constraint start no earlier than 2010-08-09 → start no earlier than 2010-09-08; resources Programador Sr 2 → Programador Jr 2 |
| 129 | Clasificación de documentos | 2010-08-03 → 2010-09-01 (+29d) | 2010-08-03 → 2010-09-01 (+29d) |  | 15d → 52d | constraint none → start no earlier than 2010-08-31; resources Programador Sr 2 → Programador Jr 2 |
| 130 | Búsqueda de documentos | 2010-08-04 → 2010-09-14 (+41d) | 2010-08-06 → 2010-09-15 (+40d) |  | 12.5d → 42d | constraint none → start no earlier than 2010-09-14; resources Programador Sr 2 → Programador Jr 1 |
| 131 | (ADM04) Mantenimiento de Recursos | 2010-07-26 → 2010-08-24 (+29d) | 2010-07-27 → 2010-08-26 (+30d) | 2d → 3d | 7d → 50d | constraint start no earlier than 2010-07-26 → start no earlier than 2010-08-02 |
| 132 | (ADM05) Mantenimiento de guias de interrogatorio | 2010-08-18 → 2010-09-02 (+15d) | 2010-08-19 → 2010-09-06 (+18d) | 2d → 3d | 1d → 47d | constraint start no earlier than 2010-08-18 → start no earlier than 2010-09-02; resources Programador Sr 2 → Prog SSr 1 |
| 133 | (ADM06) Mantenimiento de Fichas tematicas | 2010-08-16 → 2010-09-08 (+23d) | 2010-08-17 → 2010-09-10 (+24d) | 2d → 3d | 3d → 43d | constraint none → start no earlier than 2010-09-08; resources Programador Sr 2 → Programador Sr 1 |
| 134 | **(ADM07) Mantenimiento de relaciones sobre guias de interrogatorio y fichas tematicas** | 2010-07-28 → 2010-08-30 (+33d) | 2010-08-02 → 2010-08-31 (+29d) | 4d → 2d | 8d → 48d |  |
| 135 | Adición de documentos a fichas temáticas | 2010-08-02 → 2010-08-31 (+29d) | 2010-08-02 → 2010-08-31 (+29d) |  | 4d → 48d | constraint start no earlier than 2010-08-02 → start no earlier than 2010-08-31 |
| 136 | Adición de documentos a guias de interrogatorio | 2010-07-28 → 2010-08-30 (+33d) | 2010-07-28 → 2010-08-30 (+33d) |  | 7d → 49d | constraint start no earlier than 2010-07-26 → start no earlier than 2010-08-30; resources Programador Jr 1 → Prog SSr 1 |
| 137 | **(ADM08) Mantenimiento de encuestas** | 2010-06-07 → 2010-07-09 (+32d) | 2010-06-23 → 2010-07-23 (+30d) | 12.5d → 11d | 50.5d → 82d |  |
| 138 | **Mantenimiento Indice de Encuestas** | 2010-06-07 → 2010-07-14 (+37d) | 2010-06-07 → 2010-07-20 (+43d) | 1d → 5d | 62d → 85d |  |
| 139 | Mantener Ediciones | 2010-06-07 → 2010-07-19 (+42d) | 2010-06-07 → 2010-07-20 (+43d) | 1d → 2d | 58d → 85d | constraint start no earlier than 2010-06-07 → start no earlier than 2010-07-19; resources Prog SSr 1 → Programador Jr 2 |
| 140 | Cierre de ediciones | 2010-06-07 → 2010-07-14 (+37d) | 2010-06-07 → 2010-07-14 (+37d) |  | 58d → 89d | constraint start no earlier than 2010-06-07 → start no earlier than 2010-07-14; resources Prog SSr 2 → Programador Jr 2 |

| ID | Task | Start | Finish | Duration | Total float | Other |
| --- | --- | --- | --- | --- | --- | --- |
| 141 | Asignación de formulario a encuesta | 2010-06-07 → 2010-07-22 (+45d) | 2010-06-07 → 2010-07-22 (+45d) |  | 58d → 83d | constraint start no earlier than 2010-06-04 → start no earlier than 2010-07-22; resources Programador Jr 2 → Programador Jr 1 |
| 142 | Asignación de operadores a encuesta | 2010-06-22 → 2010-07-09 (+17d) | 2010-06-23 → 2010-07-09 (+16d) |  | 46.5d → 92d | constraint start no earlier than 2010-06-22 → start no earlier than 2010-07-09; resources Programador Jr 1 → Programador Jr 2 |
| 143 | **Asignación lista de encuestados** | 2010-06-14 → 2010-07-12 (+28d) | 2010-06-15 → 2010-07-23 (+38d) | 2d → 10d | 56d → 82d |  |
| 144 | Alta, baja de encuestados | 2010-06-14 → 2010-07-12 (+28d) | 2010-06-14 → 2010-07-13 (+29d) | 1d → 2d | 53d → 90d | constraint start no earlier than 2010-06-14 → start no earlier than 2010-07-12 |
| 145 | Asignación automática en base a un archivo de texto | 2010-06-15 → 2010-07-23 (+38d) | 2010-06-15 → 2010-07-23 (+38d) |  | 52d → 82d | constraint start no earlier than 2010-06-15 → start no earlier than 2010-07-23; resources Programador Jr 2 → Programador Jr 1 |
| 146 | Publicar Encuestas | 2010-06-14 → 2010-07-15 (+31d) | 2010-06-15 → 2010-07-16 (+31d) | 1d → 2d | 52.5d → 87d | constraint start no earlier than 2010-06-14 → start no earlier than 2010-07-15; resources Programador Jr 1 → Programador Jr 2 |
| 147 | **(ADM09) Mantenimiento de seguimiento de patologias** | 2010-06-25 → 2010-08-26 (+62d) | 2010-07-09 → 2010-09-01 (+54d) | 10.5d → 5d | 34d → 49d |  |
| 148 | Mantenimiento Indice de campañas de seguimiento | 2010-07-09 → 2010-08-30 (+52d) | 2010-07-09 → 2010-09-01 (+54d) | 1d → 3d | 30d → 49d | constraint start no earlier than 2010-07-09 → start no earlier than 2010-08-30 |
| 149 | Asignación de formulario a campaña de seguimiento | 2010-06-25 → 2010-08-30 (+66d) | 2010-06-28 → 2010-08-30 (+63d) |  | 39.5d → 51d | constraint start no earlier than 2010-06-25 → start no earlier than 2010-08-30; resources Programador Sr 1 → Programador Jr 1 |
| 150 | Asignación de operadores a campaña de seguimiento | 2010-06-28 → 2010-08-31 (+64d) | 2010-06-28 → 2010-08-31 (+64d) |  | 39d → 50d | constraint start no earlier than 2010-06-28 → start no earlier than 2010-08-31; resources Programador Jr 2 → Programador Jr 1 |
| 151 | Asignación de listas de pacientes | 2010-07-09 → 2010-08-31 (+53d) | 2010-07-09 → 2010-08-31 (+53d) |  | 30d → 50d | constraint start no earlier than 2010-07-09 → start no earlier than 2010-08-31; resources Programador Jr 1 → Prog SSr 1 |
| 152 | Activación/ Desactivación de campañas | 2010-06-25 → 2010-08-26 (+62d) | 2010-06-28 → 2010-08-27 (+60d) | 1d → 2d | 39.5d → 52d | constraint start no earlier than 2010-06-24 → start no earlier than 2010-08-17; resources Programador Sr 2 → Programador Jr 2 |
| 153 | Testing ADM 3 al 9 | 2010-08-02 → 2010-08-17 (+15d) | 2010-08-04 → 2010-08-19 (+15d) |  |  |  |
| 154 | **(ADM10) Creacion de formularios de encuesta y seguimiento** | 2010-06-02 → 2010-06-07 (+5d) | 2010-06-04 → 2010-07-06 (+32d) | 3d → 22d | 43d → 64d |  |
| 155 | Mantener Indice de Encuesta | 2010-06-02 → 2010-07-01 (+29d) | 2010-06-03 → 2010-07-05 (+32d) | 2d → 3d | 39d → 64d | constraint none → start no earlier than 2010-07-01; resources Prog SSr 2 → Programador Sr 1 |
| 156 | Crear y Editar Encuestas | 2010-06-02 → 2010-06-07 (+5d) | 2010-06-03 → 2010-06-08 (+5d) |  | 37.5d → 83d |  |
| 157 | Testing Creacion Formularios Enc y Seg | 2010-06-04 → 2010-07-06 (+32d) | 2010-06-04 → 2010-07-06 (+32d) |  | 42d → 64d | constraint none → start no earlier than 2010-07-06 |
| 158 | **(ADM11) Mantenimiento de usuarios, perfiles y permisos** | 2010-06-15 → 2010-06-17 (+2d) | 2010-06-21 → 2010-07-09 (+18d) | 4.5d → 17d | 44.5d → 65d |  |
| 159 | Mantenimiento Opciones Funcionales | 2010-06-15 → 2010-06-17 (+2d) | 2010-06-16 → 2010-06-18 (+2d) |  | 43d → 80d | constraint start no earlier than 2010-06-15 → start no earlier than 2010-06-17; resources Prog SSr 1 → Programador Sr 2 |
| 160 | **Mantener Perfiles Trabajo** | 2010-06-15 → 2010-06-17 (+2d) | 2010-06-18 → 2010-07-02 (+14d) | 3d → 12d | 45.5d → 70d |  |
| 161 | Alta, modificación de perfiles | 2010-06-17 → 2010-06-22 (+5d) | 2010-06-18 → 2010-06-23 (+5d) | 1d → 2d | 41.5d → 77d | constraint start no earlier than 2010-06-17 → start no earlier than 2010-06-22 |
| 162 | ABM de opciones funcionales a perfil | 2010-06-15 → 2010-06-17 (+2d) | 2010-06-16 → 2010-06-18 (+2d) | 1d → 2d | 43.5d → 80d | constraint start no earlier than 2010-06-15 → start no earlier than 2010-06-17; resources Programador Jr 1 → Programador Jr 2 |
| 163 | Adición de responsabilidades a opciones funcionales | 2010-06-16 → 2010-07-02 (+16d) | 2010-06-17 → 2010-07-02 (+15d) |  | 42.5d → 70d | constraint start no earlier than 2010-06-16 → start no earlier than 2010-07-02; resources Programador Jr 1 → Programador Jr 2 |
| 164 | **Mantener Usuarios** | 2010-06-17 → 2010-06-21 (+4d) | 2010-06-21 → 2010-07-09 (+18d) | 2.5d → 15d | 44.5d → 65d |  |
| 165 | Creación/gestion de usuarios | 2010-06-17 → 2010-06-21 (+4d) | 2010-06-17 → 2010-06-21 (+4d) |  | 42d → 79d | constraint start no earlier than 2010-06-17 → start no earlier than 2010-06-21; resources Programador Jr 2 → Programador Jr 1 |
| 166 | Asiganción de perfil a usuario | 2010-06-18 → 2010-06-22 (+4d) | 2010-06-18 → 2010-06-22 (+4d) |  | 41d → 78d | constraint start no earlier than 2010-06-18 → start no earlier than 2010-06-22 |
| 167 | Asignación de agendas a usuario | 2010-06-18 → 2010-07-08 (+20d) | 2010-06-21 → 2010-07-09 (+18d) | 1d → 2d | 40.5d → 65d | constraint start no earlier than 2010-06-18 → start no earlier than 2010-07-08 |
| 168 | Testing Mantenimiento Usuarios | 2010-06-22 → 2010-07-13 (+21d) | 2010-06-22 → 2010-07-13 (+21d) |  | 50d → 90d | constraint start no earlier than 2010-06-22 → start no earlier than 2010-07-13 |
| 169 | **(ADM12) Listado de acciones proactivas** | 2010-08-04 → 2010-09-14 (+41d) | 2010-08-12 → 2010-10-05 (+54d) | 7d → 16d | 14d → 30d |  |
| 170 | Módulo de elaboraciónde informes de estado de campaña de seguimiento | 2010-08-04 → 2010-09-14 (+41d) | 2010-08-05 → 2010-09-16 (+42d) | 2d → 3d | 13d → 41d | constraint start no earlier than 2010-08-04 → start no earlier than 2010-09-13; resources Prog SSr 1 → Programador Sr 1 |
| 171 | Módulo de elaboración de informes de estado de encuesta | 2010-08-04 → 2010-09-22 (+49d) | 2010-08-05 → 2010-09-24 (+50d) | 2d → 3d | 13d → 35d | constraint start no earlier than 2010-08-04 → start no earlier than 2010-09-22; resources Programador Jr 2 → Programador Sr 2 |
| 172 | Módulo de elaboración de informes de ediciones de encuestas | 2010-08-04 → 2010-09-17 (+44d) | 2010-08-05 → 2010-09-21 (+47d) | 2d → 3d | 13d → 38d | constraint start no earlier than 2010-08-04 → start no earlier than 2010-09-17; resources Programador Jr 1 → Programador Sr 1 |
| 173 | Módulo de elaboración de listados de campañas de seguimiento | 2010-08-06 → 2010-09-27 (+52d) | 2010-08-09 → 2010-09-29 (+51d) | 2d → 3d | 11d → 32d | constraint start no earlier than 2010-08-06 → start no earlier than 2010-09-27; resources Programador Jr 1 → Programador Sr 2 |
| 174 | Módulo de elaboración de listados de información de encuestas | 2010-08-06 → 2010-09-22 (+47d) | 2010-08-09 → 2010-09-24 (+46d) | 2d → 3d | 11d → 35d | constraint start no earlier than 2010-08-06 → start no earlier than 2010-09-22; resources Programador Jr 2 → Programador Sr 1 |
| 175 | Testing Listados Proactivas | 2010-08-11 → 2010-10-04 (+54d) | 2010-08-12 → 2010-10-05 (+54d) |  | 13d → 30d | constraint start no earlier than 2010-08-11 → start no earlier than 2010-10-04 |
| 176 | **(ADM13) Listados de documentos** | 2010-08-24 → 2010-09-16 (+23d) | 2010-08-27 → 2010-09-24 (+28d) | 4d → 7d | 3d → 37d |  |
| 177 | Elaboración de listado de configuración | 2010-08-24 → 2010-09-23 (+30d) | 2010-08-24 → 2010-09-23 (+30d) |  | 1d → 37d | constraint start no earlier than 2010-08-24 → start no earlier than 2010-09-23 |
| 178 | Elaboración de listado de uso | 2010-08-24 → 2010-09-16 (+23d) | 2010-08-24 → 2010-09-16 (+23d) |  | 1d → 42d | constraint start no earlier than 2010-08-24 → start no earlier than 2010-09-06 |
| 179 | Elaboración de listado de asociaciones | 2010-08-24 → 2010-09-17 (+24d) | 2010-08-24 → 2010-09-17 (+24d) |  | 1d → 41d | constraint start no earlier than 2010-08-24 → start no earlier than 2010-09-17; resources Prog SSr 1 → Programador Jr 2 |
| 180 | Testing Listado Docs | 2010-08-27 → 2010-09-24 (+28d) | 2010-08-27 → 2010-09-24 (+28d) |  | 3d → 37d | constraint start no earlier than 2010-08-27 → start no earlier than 2010-09-10 |
| 181 | **(ADM14) Listado sobre consultas** | 2010-08-02 → 2010-09-14 (+43d) | 2010-08-06 → 2010-10-12 (+67d) | 5d → 21d | 18d → 25d |  |
| 182 | Módulo de obtención de listados de consulta por ciudadano | 2010-08-02 → 2010-09-14 (+43d) | 2010-08-02 → 2010-09-16 (+45d) | 1d → 3d | 16d → 40d | constraint start no earlier than 2010-08-02 → start no earlier than 2010-09-13 |
| 183 | Módulo de obtención de listados de consultas con cierre principal | 2010-08-02 → 2010-09-30 (+59d) | 2010-08-02 → 2010-10-04 (+63d) | 1d → 3d | 16d → 28d | constraint start no earlier than 2010-08-02 → start no earlier than 2010-09-30; resources Prog SSr 2 → Programador Sr 2 |
| 184 | Módulo de obtención de listados de consulta con cierre secundario | 2010-08-02 → 2010-09-30 (+59d) | 2010-08-02 → 2010-10-04 (+63d) | 1d → 3d | 16d → 28d | constraint start no earlier than 2010-08-02 → start no earlier than 2010-09-30 |
| 185 | Módulo de obtención de listados de consulta por motivo de cierre | 2010-08-02 → 2010-09-17 (+46d) | 2010-08-02 → 2010-09-21 (+50d) | 1d → 3d | 16d → 37d | constraint start no earlier than 2010-08-02 → start no earlier than 2010-09-17; resources Programador Sr 2 → Prog SSr 1 |
| 186 | Módulo de obtención de listado de resumen de consultas por servicio | 2010-08-03 → 2010-09-14 (+42d) | 2010-08-03 → 2010-09-16 (+44d) | 1d → 3d | 15d → 40d | constraint start no earlier than 2010-08-03 → start no earlier than 2010-09-13; resources Programador Sr 1 → Programador Sr 2 |
| 187 | Módulo de obtención de listado de consultas por área geográfica | 2010-08-03 → 2010-10-05 (+63d) | 2010-08-03 → 2010-10-07 (+65d) | 1d → 3d | 15d → 25d | constraint start no earlier than 2010-08-03 → start no earlier than 2010-10-05; resources Prog SSr 2 → Programador Sr 2 |
| 188 | Módulo de obtención de listado de consultas por usuario | 2010-08-03 → 2010-09-27 (+55d) | 2010-08-03 → 2010-09-29 (+57d) | 1d → 3d | 15d → 31d | constraint start no earlier than 2010-08-03 → start no earlier than 2010-09-27; resources Prog SSr 1 → Programador Sr 1 |
| 189 | Módulo de obtención de listado de consultas pendientes | 2010-08-04 → 2010-09-17 (+44d) | 2010-08-04 → 2010-09-21 (+48d) | 1d → 3d | 14d → 37d | constraint start no earlier than 2010-08-04 → start no earlier than 2010-09-17; resources Programador Sr 1 → Programador Sr 2 |
| 190 | Testing Listado Consultas | 2010-08-05 → 2010-10-08 (+64d) | 2010-08-06 → 2010-10-12 (+67d) | 2d → 3d | 17d → 25d | constraint start no earlier than 2010-08-04 → start no earlier than 2010-09-20 |
| 191 | **(ADM15) Mantener Asignaciones TSI** | 2010-07-16 → 2010-07-23 (+7d) | 2010-08-19 → 2010-09-20 (+32d) | 25d? → 42d |  |  |
| 193 | Recolección de datos de operaciones TSI pendientes | 2010-07-16 → 2010-08-19 (+34d) | 2010-07-16 → 2010-08-23 (+38d) | 1d → 3d | 29d → 61d | constraint start no earlier than 2010-07-16 → start no earlier than 2010-08-19; resources Programador Jr 1 → Programador Jr 2 |
| 194 | Migración de los datos a archivo TXT | 2010-07-19 → 2010-08-02 (+14d) | 2010-07-20 → 2010-08-03 (+14d) |  | 27d → 75d | constraint start no earlier than 2010-07-19 → start no earlier than 2010-08-02 |
| 195 | Interface de comunicación con CatSalut | 2010-07-19 → 2010-08-02 (+14d) | 2010-07-23 → 2010-08-06 (+14d) |  | 24d → 72d | constraint start no earlier than 2010-07-19 → start no earlier than 2010-08-02 |
| 196 | Testing TSI | 2010-08-19 → 2010-09-17 (+29d) | 2010-08-19 → 2010-09-20 (+32d) | 1d? → 2d | 8d → 41d | constraint start no earlier than 2010-08-19 → start no earlier than 2010-09-17 |
| 197 | **(ADM16) Asignar documentos a acciones** | 2010-08-24 → 2010-09-16 (+23d) | 2010-08-26 → 2010-09-22 (+27d) | 3d → 5d | 4d → 39d |  |
| 198 | Creación/eliminación de asociaciones | 2010-08-24 → 2010-09-20 (+27d) | 2010-08-24 → 2010-09-20 (+27d) |  | 1d → 40d | constraint start no earlier than 2010-08-24 → start no earlier than 2010-09-20; resources Prog SSr 2 → Programador Jr 2 |
| 199 | Caducidad de asociaciones | 2010-08-24 → 2010-09-16 (+23d) | 2010-08-24 → 2010-09-16 (+23d) |  | 1d → 42d | was named Cadicidad de asociaciones; constraint start no earlier than 2010-08-24 → start no earlier than 2010-09-16; resources Programador Sr 1 → Programador Jr 1 |
| 200 | Testing Asignacion Docs a Acciones | 2010-08-26 → 2010-09-22 (+27d) | 2010-08-26 → 2010-09-22 (+27d) |  | 4d → 39d | constraint start no earlier than 2010-08-26 → start no earlier than 2010-09-22 |
| 201 | **(INT01) Direcciones de farmacias, CAP y otra informacion breve** | 2010-08-10 → 2010-09-10 (+31d) | 2010-08-16 → 2010-09-14 (+29d) | 5d → 3d | 4d → 21d |  |
| 202 | Trabajo con listas de resultados | 2010-08-10 → 2010-09-10 (+31d) | 2010-08-11 → 2010-09-13 (+33d) |  | 5d → 21d | constraint start no earlier than 2010-08-10 → start no earlier than 2010-09-10; resources Programador Jr 2 → Programador Jr 1 |
| 203 | Testing Dirs | 2010-08-16 → 2010-09-14 (+29d) | 2010-08-16 → 2010-09-14 (+29d) |  | 3d → 21d | constraint start no earlier than 2010-08-16 → start no earlier than 2010-09-09 |
| 204 | **(SIS01) Trazabilidad y registro de uso** | 2010-06-14 → 2010-06-21 (+7d) | 2010-06-30 → 2010-08-06 (+37d) | 13d? → 34.5d | 45d → 72d |  |
| 205 | Control Acceso a Consultas | 2010-06-15 → 2010-06-23 (+8d) | 2010-06-17 → 2010-06-25 (+8d) | 2d → 3d | 49.5d → 100d | constraint none → start no earlier than 2010-06-23 |
| 206 | Control Acceso a Encuestas | 2010-06-21 → 2010-07-06 (+15d) | 2010-06-23 → 2010-07-08 (+15d) | 2d → 3d | 45.5d → 91d | constraint start no earlier than 2010-06-21 → start no earlier than 2010-07-06; resources Programador Sr 1 → Programador Sr 2 |
| 207 | Control General Acceso al Sistema | 2010-06-17 → 2010-06-28 (+11d) | 2010-06-21 → 2010-06-30 (+9d) | 2d → 3d | 47.5d → 97d | constraint none → start no earlier than 2010-06-28 |
| 208 | Control Acceso a Campañas de Seguimiento | 2010-06-17 → 2010-06-21 (+4d) | 2010-06-18 → 2010-06-24 (+6d) | 2d → 3d | 48d → 101.5d | constraint none → start no earlier than 2010-06-21 |
| 209 | Control Acceso a Documentos | 2010-06-23 → 2010-07-13 (+20d) | 2010-06-29 → 2010-07-15 (+16d) | 2d → 3d | 41.5d → 86d | constraint none → start no earlier than 2010-07-13 |
| 210 | Control Acceso a Recursos Internos | 2010-06-16 → 2010-06-24 (+8d) | 2010-06-22 → 2010-06-29 (+7d) | 2d → 3d | 46.5d → 98.5d | constraint none → start no earlier than 2010-06-24 |
| 211 | Historial de Consultas | 2010-06-14 → 2010-07-27 (+43d) | 2010-06-14 → 2010-07-30 (+46d) | 1d → 4d | 52d → 75d | constraint start no earlier than 2010-06-14 → start no earlier than 2010-07-27 |

| ID | Task | Start | Finish | Duration | Total float | Other |
| --- | --- | --- | --- | --- | --- | --- |
| 212 | Testing Trazabilidad / Registro | 2010-06-30 → 2010-08-05 (+36d) | 2010-06-30 → 2010-08-06 (+37d) | 1d? → 2d | 44d → 72d | constraint start no earlier than 2010-06-30 → start no earlier than 2010-08-05 |
| 213 | **(ISC01) Transferir info, comunicacion a STARS** | 2010-06-21 → 2010-06-17 (-4d) | 2010-06-23 → 2010-06-25 (+2d) | 3d → 7d | 50d → 102d |  |
| 214 | Recibir información del sistema de comunicaciones | 2010-06-21 → 2010-06-17 (-4d) | 2010-06-23 → 2010-06-25 (+2d) | 3d → 7d | 46d → 102d | constraint none → start no earlier than 2010-06-17; resources Prog SSr 1; Prog SSr 2 → Prog SSr 1 |
| 215 | **(ISC02) Iniciar llamada desde STARS** | 2010-06-28 → 2010-07-27 (+29d) | 2010-07-01 → 2010-08-11 (+41d) | 4d → 12d | 44d → 69d |  |
| 216 | Lanzamiento de petición de comunicación | 2010-06-28 → 2010-07-27 (+29d) | 2010-06-30 → 2010-08-04 (+35d) | 3d → 7d | 40d → 73d | constraint none → start no earlier than 2010-07-27; resources Prog SSr 1; Prog SSr 2 → Programador Sr 1 |
| 217 | Testing Inicio Llamada STARS | 2010-07-01 → 2010-08-11 (+41d) | 2010-07-01 → 2010-08-11 (+41d) |  | 43d → 69d | constraint start no earlier than 2010-07-01 → start no earlier than 2010-08-11 |
| 218 | **(ISC03) Informacion encuesta** | 2010-06-23 → 2010-07-21 (+28d) | 2010-06-23 → 2010-07-21 (+28d) |  | 50d → 84d |  |
| 219 | Activación actividad de encuesta | 2010-06-23 → 2010-07-21 (+28d) | 2010-06-23 → 2010-07-21 (+28d) |  | 46d → 84d | constraint start no earlier than 2010-06-23 → start no earlier than 2010-07-21 |
| 220 | ABM Consultas | 2010-06-28 → 2010-06-23 (-5d) | 2010-06-29 → 2010-06-24 (-5d) | 1d → 2d | 38.5d → 99d | constraint start no earlier than 2010-06-28 → start no earlier than 2010-06-22; resources Programador Jr 1 → Programador Jr 2 |
| 221 | ABM Usuarios | 2010-06-25 → 2010-06-24 (-1d) | 2010-06-28 → 2010-06-25 (-3d) | 1d → 2d | 39.5d → 98d | constraint none → start no earlier than 2010-06-24 |
| 222 | Proteccion de Acceso | 2010-07-12 → 2010-07-16 (+4d) | 2010-07-14 → 2010-07-20 (+6d) |  | 31d → 85d | constraint start no earlier than 2010-07-12 → start no earlier than 2010-07-16 |
| 223 | ABM Fichas / Guias / Recursos | 2010-07-28 → 2010-09-06 (+40d) | 2010-07-30 → 2010-09-09 (+41d) | 3d → 4d | 19d → 44d | constraint start no earlier than 2010-07-28 → start no earlier than 2010-09-06; resources Prog SSr 2 → Programador Jr 1 |
| 224 | ABM Cuestionarios | 2010-06-07 → 2010-07-12 (+35d) | 2010-06-07 → 2010-07-13 (+36d) | 1d → 2d | 54d → 86d | constraint start no earlier than 2010-06-07 → start no earlier than 2010-07-12 |
| 225 | Interfaz General | 2010-06-17 → 2010-06-28 (+11d) | 2010-07-13 → 2010-07-23 (+10d) | 13d → 20d | 32d → 63d | constraint none → start no earlier than 2010-06-28; resources Prog SSr 1; Prog SSr 2 → Prog SSr 1 |
| 226 | Interfaz Para Usuario Avanzado | 2010-07-19 → 2010-08-26 (+38d) | 2010-07-23 → 2010-09-03 (+42d) | 5d → 7d | 21d → 33d | constraint start no earlier than 2010-07-19 → start no earlier than 2010-08-18 |
| 227 | Interfaz de Listados para ADM02 | 2010-08-04 → 2010-09-21 (+48d) | 2010-08-10 → 2010-09-29 (+50d) | 5d → 7d | 9d → 15d | constraint start no earlier than 2010-08-04 → start no earlier than 2010-09-21; resources Prog SSr 2 → Programador Jr 2 |
| 228 | Interfaz Mantenimiento Usuarios y Perfiles | 2010-07-20 → 2010-07-21 (+1d) | 2010-07-26 → 2010-07-30 (+4d) | 5d → 8d | 20d → 58d | constraint start no earlier than 2010-07-20 → start no earlier than 2010-07-21; resources Prog SSr 2 → Programador Sr 2 |
| 229 | Interfaz Direcciones INT01 | 2010-08-17 → 2010-09-22 (+36d) | 2010-08-23 → 2010-09-28 (+36d) |  | 3d → 16d | constraint start no earlier than 2010-08-13 → start no earlier than 2010-09-22; resources Prog SSr 2 → Prog SSr 1 |
| 230 | ABM Enfermedades / Centros Salud | 2010-08-18 → 2010-09-20 (+33d) | 2010-08-19 → 2010-09-22 (+34d) | 2d → 3d | 5d → 35d | constraint start no earlier than 2010-08-18 → start no earlier than 2010-09-20; resources Programador Jr 2 → Programador Jr 1 |
| 231 | Listado de Usuarios y Perfiles | 2010-07-15 → 2010-07-28 (+13d) | 2010-07-15 → 2010-07-28 (+13d) |  | 30d → 79d | constraint start no earlier than 2010-07-15 → start no earlier than 2010-07-28; resources Programador Sr 1 → Programador Jr 1 |
| 232 | Interface con sistema de comunicaciones (ISC01, ISC02, ISC03) | 2010-06-29 → 2010-07-06 (+7d) | 2010-07-12 → 2010-07-16 (+4d) |  | 30.5d → 68d | constraint start no earlier than 2010-06-29 → start no earlier than 2010-07-06 |
| 233 | Testing ABMs Varios | 2010-08-20 → 2010-09-27 (+38d) | 2010-08-25 → 2010-09-30 (+36d) |  | 1d → 33d | constraint none → start no earlier than 2010-09-27 |
| 234 | Testing Interfaces Varias | 2010-08-30 → 2010-10-13 (+44d) | 2010-09-01 → 2010-10-15 (+44d) |  | 0d → 6d | constraint start no earlier than 2010-08-30 → start no earlier than 2010-10-13 |
| 236 | Arquitectura General / Configuracion Ambientes / Framework | 2010-05-12 → 2010-05-17 (+5d) | 2010-06-01 → 2010-06-04 (+3d) |  | 24d → 16d | was named Arquitectura General / Configuracion Ambientes |
| 237 | **Tareas IT Sobre Nuestra Empresa** |  | 2010-06-08 → 2010-11-16 (+161d) | 24d → 139d | 22d → 0d |  |
| 238 | Compra Equipos Necesarios |  |  | 1.5d → 2d | 77d → 135d |  |
| 239 | **Infraestructura** |  | 2010-05-18 → 2010-05-21 (+3d) | 9d → 12d | 22d → 21d |  |
| 240 | Preparacion de Ambientes en servidores |  | 2010-05-06 → 2010-05-10 (+4d) | 1d → 3d | 77d → 116d |  |
| 241 | Instalacion y Configuracion de Servidor DEV | 2010-05-07 → 2010-05-11 (+4d) | 2010-05-11 → 2010-05-14 (+3d) | 3d → 4d | 24d → 16d | constraint none → start no earlier than 2010-05-11 |
| 242 | Instalacion y Configuracion de Servidores de Usos Multiples | 2010-05-12 → 2010-05-17 (+5d) | 2010-05-18 → 2010-05-21 (+3d) |  | 69d → 124d | constraint start no earlier than 2010-05-11 → start no earlier than 2010-05-17 |
| 243 | **Redes** | 2010-06-04 → 2010-05-24 (-11d) |  | 3d → 12d | 61d → 115d |  |
| 246 | Instalacion de pcs nuevos usuarios | 2010-05-07 → 2010-05-10 (+3d) |  | 2.5d → 2d | 77d → 135d |  |
