# Casos Uso

How a schedule from MS Project changed from version to version. A marks actual dates.

## Version 1 (saved 2010-08-29, file CasosUsov4.mpp)

| ID | WBS | Task | Duration | Start | Finish | Predecessors | Total float |
| --- | --- | --- | --- | --- | --- | --- | --- |
| 1 |  | Integracion con el Sistema STARS (Lectura Datos) | 5d | 2010-06-08 | 2010-06-14 | 199 | -30d |
| 2 |  | Modulo Seguridad que Oculta Info Llamado | 3d | 2010-06-15 | 2010-06-17 | 1 | 10d |
| 3 | 3 | **(GEN01) Identificacion y Autenticacion** | 4d | 2010-05-07 | 2010-05-12 | 1 |  |
| 4 |  | Autenticacion | 1d | 2010-05-07 | 2010-05-07 |  | 3d |
| 5 |  | Interfaz Inicio Sesion | 3d | 2010-05-07 | 2010-05-11 |  | 1d |
| 6 | 4 | **(GEN02) Gestion General de Registros** | 3d | 2010-06-15 | 2010-06-17 | 1 | 10d |
| 7 |  | ABM Registro | 1d | 2010-06-15 | 2010-06-15 |  | 12d |
| 8 |  | Buscar registro | 1d | 2010-06-15 | 2010-06-15 |  | 12d |
| 9 |  | Copiar registro | 1d | 2010-06-15 | 2010-06-15 |  | 12d |
| 10 |  | Interfaz ABM Registro | 3d | 2010-06-15 | 2010-06-17 |  | 10d |
| 11 | 5 | **(USR01) Determinacion del servicio de atencion** | 2d | 2010-06-21 | 2010-06-22 | 74, 31 | 0d |
| 12 |  | Capturar la Comunicación???? | 2d | 2010-06-21 | 2010-06-22 |  | 0d |
| 13 |  | Determinar el tipo de servicio | 1d | 2010-06-21 | 2010-06-21 |  | 1d |
| 14 |  | Lista de Espera | 1d | 2010-06-21 | 2010-06-21 |  | 1d |
| 15 |  | Determinar conjunto de operadores adecuados al tipo de solicitud | 1d | 2010-06-21 | 2010-06-21 |  | 1d |
| 16 | 6 | **(USR02) Agenda** | 3d | 2010-06-18 | 2010-06-22 | 3, 71 | -22d |
| 17 |  | Selección de una agenda | 0.5h | 2010-06-18 | 2010-06-18 |  | -19.06d |
| 18 |  | ABM citas sobre la agenda | 1d | 2010-06-18 | 2010-06-18 |  | -20d |
| 19 |  | Interfaz de la Agenda | 2d | 2010-06-18 | 2010-06-21 |  | -21d |
| 20 |  | Integracion con Stars - Llamada desde Agenda | 3d | 2010-06-18 | 2010-06-22 |  | -22d |
| 21 |  | Asignar pacientes a cita | 0.5h | 2010-06-18 | 2010-06-18 |  | -19.06d |
| 22 |  | (USR03) Rellamada | 1d | 2010-06-18 | 2010-06-18 | 31, 56 | 9d |
| 23 | 8 | **(USR04) Consulta** | 20d | 2010-05-20 | 2010-06-16 | 1 | -19d |
| 24 | 8.1 | **Tratar Consulta** | 1d | 2010-05-20 | 2010-05-20 |  |  |
| 25 |  | Ajornar Consulta | 0.5h | 2010-05-20 | 2010-05-20 |  | 0.94d |
| 26 |  | Transferir consulta | 0.5h | 2010-05-20 | 2010-05-20 |  | 0.94d |
| 27 |  | Modulo Envio de Correo | 2d | 2010-06-15 | 2010-06-16 |  | -30d |
| 28 |  | Modulo Envio SMS | 2d | 2010-06-15 | 2010-06-16 |  | -30d |
| 29 |  | Inclusion en Campaña de Seguimiento | 1d | 2010-06-15 | 2010-06-15 |  | -29d |
| 30 |  | (USR05) Consejo Salud | 1d | 2010-06-21 | 2010-06-21 | 61, 67 | 8d |
| 31 | 10 | **(USR06) Gestionar Consulta pendiente** | 1d | 2010-06-17 | 2010-06-17 | 23 | -19d |
| 32 |  | Priorizacion de la Lista de Consultas | 1d | 2010-06-17 | 2010-06-17 |  | -19d |
| 33 | 11 | **(USR07) Programacion de cita previa** | 1d | 2010-06-21 | 2010-06-21 | 67, 74 | 8d |
| 34 |  | Realizar Citación (Interface con Sistema de citación AP) | 1d | 2010-06-21 | 2010-06-21 |  | 8d |
| 35 | 12 | **(USR08) Gestiones sobre la TSI** | 0.06d | 2010-06-21 | 2010-06-21 | 74, 67, 23, 1 | -14.06d |
| 36 |  | Verificacion Documentacion Necesaria | 0.5h | 2010-06-21 | 2010-06-21 |  | -14.06d |
| 37 |  | Enviar Gestion (Interface con sistema RCA) | 0.5h | 2010-06-21 | 2010-06-21 |  | -14.06d |
| 38 |  | Cierre automatico de la consulta por paso de tiempo | 0.5h | 2010-06-21 | 2010-06-21 |  | -14.06d |
| 39 |  | Guardar LOG gestion TSI????? | 0.5h | 2010-06-21 | 2010-06-21 |  | -14.06d |
| 40 | 13 | **(USR09) Servicio de traduccion** | 2d | 2010-06-18 | 2010-06-21 | 67 | 8d |
| 41 |  | Contactar Servicio Externo de Traduccion | 1d | 2010-06-18 | 2010-06-18 |  | 9d |
| 42 |  | Enlace Comunicacion Multiconferencia | 2d | 2010-06-18 | 2010-06-21 |  | 8d |
| 43 |  | Modulo monitorización de servicio | 2d | 2010-06-18 | 2010-06-21 |  | 8d |
| 44 | 14 | **(USR10) Informacion Sanitaria General** | 1d | 2010-06-25 | 2010-06-25 | 67, 74, 170 | 4d |
| 45 |  | Guardar Informacion Ciudadano | 1d | 2010-06-25 | 2010-06-25 |  | 4d |
| 46 | 15 | **(USR11) Seguimiento de Patologias** | 2.5d | 2010-05-24 | 2010-05-26 | 16, 31 |  |
| 47 |  | Buscar Campañas Abiertas | 0.5d | 2010-05-24 | 2010-05-24 |  | 2d |
| 48 | 15.2 | **Gestionar Seguimiento** | 1d | 2010-05-24 | 2010-05-24 |  |  |
| 49 |  | Visualizar Historial Pacientes | 0.5h | 2010-05-24 | 2010-05-24 |  | 0.94d |
| 50 |  | Llamada al Paciente | 0.5h | 2010-05-24 | 2010-05-24 |  | 0.94d |
| 51 |  | Desligar paciente de campaña | 1d | 2010-05-24 | 2010-05-24 |  | 1.5d |
| 52 | 16 | **(USR12) Encuestas** | 3d | 2010-06-09 | 2010-06-11 | 130 | 12d |
| 53 |  | Interfaz de Encuestas | 3d | 2010-06-09 | 2010-06-11 |  | 12d |
| 54 |  | Contacto con Encuestado | 1d | 2010-06-09 | 2010-06-09 |  | 14d |
| 55 |  | ABM Formulario De Encuesta | 1d | 2010-06-09 | 2010-06-09 |  | 14d |
| 56 | 17 | **(USR13) Buscar Consultas** | 2d | 2010-05-07 | 2010-05-10 | 71 | 0d |
| 57 | 17.1 | **Operativo de Busqueda** | 2d | 2010-05-07 | 2010-05-10 |  |  |
| 58 |  | Buscar según distintos criterios | 1d | 2010-05-07 | 2010-05-07 |  | 1d |
| 59 |  | Filtrar resultados de la busqueda según permisos del usuario | 0.5h | 2010-05-07 | 2010-05-07 |  | 1.94d |
| 60 |  | Acotar resultados si los mismos sobrepasan el parametro configurable "n" | 0.5h | 2010-05-07 | 2010-05-07 |  | 1.94d |
| 61 | 18 | **(USR14) Hacer Uso de Documentos** | 2d | 2010-06-17 | 2010-06-18 | 23 | 2d |
| 62 |  | Creación y uso de Guias Interrogatorio | 2d | 2010-06-17 | 2010-06-18 |  | 2d |
| 63 |  | Creación y uso Fichas Tematicas | 2d | 2010-06-17 | 2010-06-18 |  | 2d |
| 64 |  | Creación y uso de Recursos | 2d | 2010-06-17 | 2010-06-18 |  | 2d |
| 65 |  | Búsqueda y selección de documentos | 2d | 2010-06-17 | 2010-06-18 |  | 2d |
| 66 |  | Apertura documentos | 1d | 2010-06-17 | 2010-06-17 |  | 3d |
| 67 | 19 | **(USR15) Cerrar consulta y dar respuesta al ciudadano** | 1d | 2010-06-17 | 2010-06-17 | 23 | -13.06d |
| 68 |  | Clasificar Finalizacion de Consulta | 0.5h | 2010-06-17 | 2010-06-17 |  | -12.12d |
| 69 |  | Adición de motivo de cierre a la consulta | 0.5h | 2010-06-17 | 2010-06-17 |  | -12.12d |
| 70 |  | Creación de clasificaciones ad-hoc | 1d | 2010-06-17 | 2010-06-17 |  | -13.06d |

| ID | WBS | Task | Duration | Start | Finish | Predecessors | Total float |
| --- | --- | --- | --- | --- | --- | --- | --- |
| 71 | 20 | **(USR16) Visualizar Consulta** | 1d | 2010-06-17 | 2010-06-17 | 23 | -30d |
| 72 |  | Mostrar datos generales de la consulta | 1d | 2010-06-17 | 2010-06-17 |  | -30d |
| 73 |  | Mostrar datos según el documento elegido | 1d | 2010-06-17 | 2010-06-17 |  | -30d |
| 74 | 21 | **(USR17) Crear/Transferir Consulta** | 32d | 2010-05-06 | 2010-06-18 | 23 | -14.06d |
| 75 |  | Crear Consulta | 2d | 2010-06-17 | 2010-06-18 |  | -14.06d |
| 76 |  | Copiar consulta | 1d | 2010-06-17 | 2010-06-17 |  | -13.06d |
| 77 | 21.3 | **Transferir Consulta** | 1d | 2010-05-06 | 2010-05-06 |  |  |
| 78 |  | Localizar a otro operador del mismo perfil | 1d | 2010-05-06 | 2010-05-06 |  | 0d |
| 79 | 22 | **(ADM01) Mantenimiento del Entorno, clasif y prioridades** | 25d | 2010-05-07 | 2010-06-10 | 199 | -21d |
| 80 |  | Módulo de edición de parametros grales de la aplicación | 3d | 2010-06-08 | 2010-06-10 |  | -25d |
| 81 |  | Módulo edición listas de clasificaciones (Códigos internos) | 3d | 2010-06-08 | 2010-06-10 |  | -25d |
| 82 | 22.3 | **Módulo mantenimiento de la lista de espera** | 2d | 2010-05-07 | 2010-05-10 |  |  |
| 83 |  | ABM de la lista de espera | 1d | 2010-05-07 | 2010-05-07 |  | 1d |
| 84 |  | Módulo de gestión de prioridades sobre la lista de espera | 1d | 2010-05-07 | 2010-05-07 |  | 1d |
| 85 | 22.4 | **Módulo mantenimiento de lineas de servicio** | 2d | 2010-05-07 | 2010-05-10 |  |  |
| 86 |  | ABM lineas de servicio | 1d | 2010-05-07 | 2010-05-07 |  | 1d |
| 87 |  | ABM servicios para una linea seleccionada | 1d | 2010-05-07 | 2010-05-07 |  | 1d |
| 88 | 22.5 | **Módulo mantenimiento agendas** | 4d | 2010-05-07 | 2010-05-12 |  |  |
| 89 |  | Asignar operadores a agenda | 1d | 2010-05-07 | 2010-05-07 |  | 3d |
| 90 |  | ABM de usuarios de la agenda | 1d | 2010-05-07 | 2010-05-07 |  | 3d |
| 91 |  | ABM citas de la agenda | 1d | 2010-05-07 | 2010-05-07 |  | 3d |
| 92 | 22.6 | **Módulo mantenimiento BBDD** | 3d | 2010-05-07 | 2010-05-11 |  |  |
| 93 |  | Módulo comprobación de formato de archivo | 1d | 2010-05-07 | 2010-05-07 |  | 2d |
| 94 |  | Módulo actualización de BBDD | 2d | 2010-05-07 | 2010-05-10 |  | 1d |
| 95 | 23 | **(ADM02) Extraccion de estadisticas y listados** | 27d | 2010-05-07 | 2010-06-14 | 79 | 0d |
| 96 |  | Listados De Administración | 2d | 2010-06-11 | 2010-06-14 |  | 8d |
| 97 | 23.2 | **Listados Comunes** | 5d | 2010-05-07 | 2010-05-13 |  |  |
| 98 |  | Detalle de estado de finalización consulta/acción | 1d | 2010-05-07 | 2010-05-07 |  | 4d |
| 99 |  | Listado de clasificaciones | 1d | 2010-05-07 | 2010-05-07 |  | 4d |
| 100 |  | Listados de incidencias en las comunicaciones | 1d | 2010-05-07 | 2010-05-07 |  | 4d |
| 101 |  | Ratios por usuario | 1d | 2010-05-07 | 2010-05-07 |  | 4d |
| 102 |  | Finales de servicio | 1d | 2010-05-07 | 2010-05-07 |  | 4d |
| 103 | 24 | **(ADM03) Mantenimiento de documentos** | 2d | 2010-06-24 | 2010-06-25 | 111 | 3d |
| 104 |  | Creación y edición de documentos | 2d | 2010-06-24 | 2010-06-25 |  | 3d |
| 105 |  | Borrado de documentos | 1d | 2010-06-24 | 2010-06-24 |  | 4d |
| 106 |  | Clasificación de documentos | 1d | 2010-06-24 | 2010-06-24 |  | 4d |
| 107 |  | Búsqueda de documentos | 2d | 2010-06-24 | 2010-06-25 |  | 3d |
| 108 |  | (ADM04) Mantenimiento de Recursos | 2d | 2010-06-21 | 2010-06-22 | 61 | 3d |
| 109 |  | (ADM05) Mantenimiento de guias de interrogatorio | 2d | 2010-06-24 | 2010-06-25 | 111, 61 | 4d |
| 110 |  | (ADM06) Mantenimiento de Fichas tematicas | 2d | 2010-06-24 | 2010-06-25 | 111, 61 | 4d |
| 111 | 28 | **(ADM07) Mantenimiento de relaciones sobre guias de interrogatorio y fichas tematicas** | 1d | 2010-06-23 | 2010-06-23 | 108 | 3d |
| 112 |  | Adición de documentos a fichas temáticas | 1d | 2010-06-23 | 2010-06-23 |  | 3d |
| 113 |  | Adición de documentos a guias de interrogatorio | 1d | 2010-06-23 | 2010-06-23 |  | 3d |
| 114 | 29 | **(ADM08) Mantenimiento de encuestas** | 25d | 2010-05-06 | 2010-06-09 | 130 | 0d |
| 115 | 29.1 | **Mantenimiento Indice de Encuestas** | 2d | 2010-05-06 | 2010-05-07 |  |  |
| 116 |  | Mantener Ediciones | 1d | 2010-05-06 | 2010-05-06 |  | 1d |
| 117 |  | Cierre de ediciones | 1d | 2010-05-06 | 2010-05-06 |  | 1d |
| 118 |  | Asignación de formulario a encuesta | 1d | 2010-06-09 | 2010-06-09 |  | 16d |
| 119 |  | Asignación de operadores a encuesta | 1d | 2010-06-09 | 2010-06-09 |  | 16d |
| 120 | 29.4 | **Asignación lista de encuestados** | 2d | 2010-05-06 | 2010-05-07 |  |  |
| 121 |  | Alta, baja de encuestados | 1d | 2010-05-06 | 2010-05-06 |  | 1d |
| 122 |  | Asignación automática en base a un archivo de texto | 1d | 2010-05-06 | 2010-05-06 |  | 1d |
| 123 |  | Publicar Encuestas | 1d | 2010-06-09 | 2010-06-09 |  | 16d |
| 124 | 30 | **(ADM09) Mantenimiento de seguimiento de patologias** | 1d | 2010-06-11 | 2010-06-11 | 79 | 12d |
| 125 |  | Mantenimiento Indice de campañas de seguimiento | 1d | 2010-06-11 | 2010-06-11 |  | 12d |
| 126 |  | Asignación de formulario a campaña de seguimiento | 0.5h | 2010-06-11 | 2010-06-11 |  | 12.94d |
| 127 |  | Asignación de operadores a campaña de seguimiento | 0.5h | 2010-06-11 | 2010-06-11 |  | 12.94d |
| 128 |  | Asignación de listas de pacientes | 0.5h | 2010-06-11 | 2010-06-11 |  | 12.94d |
| 129 |  | Activación/ Desactivación de campañas | 0.5h | 2010-06-11 | 2010-06-11 |  | 12.94d |
| 130 | 31 | **(ADM10) Creacion de formularios de encuesta y seguimiento** | 1d | 2010-06-08 | 2010-06-08 | 199 | -24d |
| 131 |  | Mantener Indice de Encuesta | 1d | 2010-06-08 | 2010-06-08 |  | -24d |
| 132 |  | Crear y Editar Encuestas | 1d | 2010-06-08 | 2010-06-08 |  | -24d |
| 133 | 32 | **(ADM11) Mantenimiento de usuarios, perfiles y permisos** | 28d | 2010-05-07 | 2010-06-15 | 1 | 0d |
| 134 |  | Mantenimiento Opciones Funcionales | 1d | 2010-06-15 | 2010-06-15 |  | 7d |
| 135 | 32.2 | **Mantener Perfiles Trabajo** | 2.5d | 2010-05-07 | 2010-05-11 |  |  |
| 136 |  | Alta, modificación de perfiles | 1d | 2010-05-07 | 2010-05-07 |  | 1.5d |
| 137 |  | ABM de opciones funcionales a perfil | 1d | 2010-05-07 | 2010-05-07 |  | 1.5d |
| 138 |  | Adición de responsabilidades a opciones funcionales | 0.5h | 2010-05-07 | 2010-05-07 |  | 2.44d |
| 139 | 32.3 | **Mantener Usuarios** | 2.5d | 2010-05-07 | 2010-05-11 |  |  |
| 140 |  | Creación/gestion de usuarios | 1d | 2010-05-07 | 2010-05-07 |  | 1.5d |

| ID | WBS | Task | Duration | Start | Finish | Predecessors | Total float |
| --- | --- | --- | --- | --- | --- | --- | --- |
| 141 |  | Asiganción de perfil a usuario | 0.5h | 2010-05-07 | 2010-05-07 |  | 2.44d |
| 142 |  | Asignación de agendas a usuario | 1d | 2010-05-07 | 2010-05-07 |  | 1.5d |
| 143 | 33 | **(ADM12) Listado de acciones proactivas** | 2d | 2010-06-15 | 2010-06-16 | 124, 95 | 11d |
| 144 |  | Módulo de elaboraciónde informes de estado de campaña de seguimiento | 2d | 2010-06-15 | 2010-06-16 |  | 11d |
| 145 |  | Módulo de elaboración de informes de estado de encuesta | 2d | 2010-06-15 | 2010-06-16 |  | 11d |
| 146 |  | Módulo de elaboración de informes de ediciones de encuestas | 2d | 2010-06-15 | 2010-06-16 |  | 11d |
| 147 |  | Módulo de elaboración de listados de campañas de seguimiento | 2d | 2010-06-15 | 2010-06-16 |  | 11d |
| 148 |  | Módulo de elaboración de listados de información de encuestas | 2d | 2010-06-15 | 2010-06-16 |  | 11d |
| 149 | 34 | **(ADM13) Listados de documentos** | 1d | 2010-06-28 | 2010-06-28 | 103, 95 | 3d |
| 150 |  | Elaboración de listado de configuración | 1d | 2010-06-28 | 2010-06-28 |  | 3d |
| 151 |  | Elaboración de listado de uso | 1d | 2010-06-28 | 2010-06-28 |  | 3d |
| 152 |  | Elaboración de listado de asociaciones | 1d | 2010-06-28 | 2010-06-28 |  | 3d |
| 153 | 35 | **(ADM14) Listado sobre consultas** | 1d | 2010-06-17 | 2010-06-17 | 95, 23 | 10d |
| 154 |  | Módulo de obtención de listados de consulta por ciudadano | 1d | 2010-06-17 | 2010-06-17 |  | 10d |
| 155 |  | Módulo de obtención de listados de consultas con cierre principal | 1d | 2010-06-17 | 2010-06-17 |  | 10d |
| 156 |  | Módulo de obtención de listados de consulta con cierre secundario | 1d | 2010-06-17 | 2010-06-17 |  | 10d |
| 157 |  | Módulo de obtención de listados de consulta por motivo de cierre | 1d | 2010-06-17 | 2010-06-17 |  | 10d |
| 158 |  | Módulo de obtención de listado de resumen de consultas por servicio | 1d | 2010-06-17 | 2010-06-17 |  | 10d |
| 159 |  | Módulo de obtención de listado de consultas por área geográfica | 1d | 2010-06-17 | 2010-06-17 |  | 10d |
| 160 |  | Módulo de obtención de listado de consultas por usuario | 1d | 2010-06-17 | 2010-06-17 |  | 10d |
| 161 |  | Módulo de obtención de listado de consultas pendientes | 1d | 2010-06-17 | 2010-06-17 |  | 10d |
| 162 | 36 | **(ADM15) Mantener Asignaciones TSI** | 8d | 2010-06-01 | 2010-06-10 | 79, 35 | 0d |
| 163 | 36.1 | **Módulo de envío de datos a CatSalut** | 8d | 2010-06-01 | 2010-06-10 |  |  |
| 164 |  | Recolección de datos de operaciones TSI pendientes | 1d | 2010-06-01 | 2010-06-01 |  | 7d |
| 165 |  | Migración de los datos a archivo TXT | 2d | 2010-06-01 | 2010-06-02 |  | 6d |
| 166 |  | Interface de comunicación con CatSalut | 5d | 2010-06-01 | 2010-06-07 |  | 3d |
| 167 | 37 | **(ADM16) Asignar documentos a acciones** | 1d | 2010-06-28 | 2010-06-28 | 103 | 3d |
| 168 |  | Creación/eliminación de asociaciones | 1d | 2010-06-28 | 2010-06-28 |  | 3d |
| 169 |  | Caducidad de asociaciones | 1d | 2010-06-28 | 2010-06-28 |  | 3d |
| 170 | 38 | **(INT01) Direcciones de farmacias, CAP y otra informacion breve** | 2d | 2010-06-23 | 2010-06-24 | 11, 61, 79 | 0d |
| 171 |  | Trabajo con listas de resultados | 2d | 2010-06-23 | 2010-06-24 |  | 0d |
| 172 | 39 | **(SIS01) Trazabilidad y registro de uso** | 6d | 2010-06-15 | 2010-06-22 | 1 | 7d |
| 173 |  | Control Acceso a Consultas | 2d | 2010-06-17 | 2010-06-18 | 23 | 9d |
| 174 |  | Control Acceso a Encuestas | 2d | 2010-06-15 | 2010-06-16 | 52 | 11d |
| 175 |  | Control General Acceso al Sistema | 2d | 2010-06-16 | 2010-06-17 | 133 | 10d |
| 176 |  | Control Acceso a Campañas de Seguimiento | 2d | 2010-06-15 | 2010-06-16 | 46 | 11d |
| 177 |  | Control Acceso a Documentos | 2d | 2010-06-21 | 2010-06-22 | 61 | 7d |
| 178 |  | Control Acceso a Recursos Internos | 2d | 2010-06-15 | 2010-06-16 |  | 11d |
| 179 |  | Historial de Consultas | 1d | 2010-06-15 | 2010-06-15 |  | 12d |
| 180 | 40 | **(ISC01) Transferir info, comunicacion a STARS** | 3d | 2010-06-15 | 2010-06-17 | 1 | 10d |
| 181 |  | Recibir información del sistema de comunicaciones | 3d | 2010-06-15 | 2010-06-17 |  | 10d |
| 182 | 41 | **(ISC02) Iniciar llamada desde STARS** | 3d | 2010-06-15 | 2010-06-17 | 1 | 10d |
| 183 |  | Lanzamiento de petición de comunicación | 3d | 2010-06-15 | 2010-06-17 |  | 10d |
| 184 | 42 | **(ISC03) Informacion encuesta** | 1d | 2010-06-09 | 2010-06-09 | 130 | 16d |
| 185 |  | Activación actividad de encuesta | 1d | 2010-06-09 | 2010-06-09 |  | 16d |
| 186 |  | ABM Consultas | 1d | 2010-06-17 | 2010-06-17 | 23 | 10d |
| 187 |  | ABM Usuarios | 1d | 2010-05-13 | 2010-05-13 | 3 | 32d |
| 188 |  | Proteccion de Acceso | 3d | 2010-05-14 | 2010-05-18 | 187 | 32d |
| 189 |  | ABM Fichas / Guias / Recursos | 3d | 2010-06-23 | 2010-06-25 | 108 | 4d |
| 190 |  | ABM Cuestionarios | 1d | 2010-06-09 | 2010-06-09 | 130 | 16d |
| 191 |  | Interfaz General | 10d | 2010-06-15 | 2010-06-28 | 1 | 3d |
| 192 |  | Interfaz Para Usuario Avanzado | 5d | 2010-06-11 | 2010-06-17 | 79 | 10d |
| 193 |  | Interfaz de Listados para ADM02 | 5d | 2010-06-15 | 2010-06-21 | 95 | 8d |
| 194 |  | Interfaz Mantenimiento Usuarios y Perfiles | 5d | 2010-06-16 | 2010-06-22 | 133 | 7d |
| 195 |  | Interfaz Direcciones INT01 | 5d | 2010-06-25 | 2010-07-01 | 170 | 0d |
| 196 |  | ABM Enfermedades / Centros Salud | 2d | 2010-06-25 | 2010-06-28 | 170 | 3d |
| 197 |  | Listado de Usuarios y Perfiles | 1d | 2010-06-16 | 2010-06-16 | 133 | 11d |
| 198 |  | Interface con sistema de comunicaciones (ISC01, ISC02, ISC03) | 5d | 2010-06-15 | 2010-06-21 | 1 | 8d |
| 199 |  | Arquitectura General / Configuracion de Ambientes | 15d | 2010-05-18 | 2010-06-07 | 200 | -30d |
| 200 | 57 | **Tareas IT Sobre Nuestra Empresa** | 8d | 2010-05-06 | 2010-05-17 |  | -27d |
| 201 |  | Compra Equipos Necesarios | 3d | 2010-05-06 | 2010-05-10 |  | -25d |
| 202 | 57.2 | **Infraestructura** | 8d | 2010-05-06 | 2010-05-17 |  |  |
| 203 |  | Preparacion de ambiente en servidores | 1d | 2010-05-06 | 2010-05-06 |  | 7d |
| 204 |  | Instalacion y configuracion de Servidor Dev | 3d | 2010-05-06 | 2010-05-10 |  | 5d |
| 205 |  | Instalacion y Configuracion de Servidor Usos Multiples | 5d | 2010-05-06 | 2010-05-12 |  | 3d |
| 206 | 57.2.4 | **Redes** | 3d | 2010-05-06 | 2010-05-10 |  | 5d |
| 207 |  | Configuracion del FW | 3d | 2010-05-06 | 2010-05-10 |  | 5d |
| 208 |  | Instalacion de las pcs de usuario | 5d | 2010-05-06 | 2010-05-12 |  | -27d |

## Version 2 (saved 2010-08-29, file CasosUsov4.mpp)

Note of the change: Modifico los predecesores. Queda una linea de camino critico mas agradable

Last finish 2010-07-01 → 2010-06-18 (-13d).

Added:

| ID | Task | Duration | Start | Finish | Predecessors |
| --- | --- | --- | --- | --- | --- |
| 199 | Arquitectura General / Configuracion Ambientes | 15d | 2010-05-13 | 2010-06-02 | 200 |
| 203 | Preparacion de Ambientes en servidores | 1d | 2010-05-06 | 2010-05-06 |  |
| 204 | Instalacion y Configuracion de Servidor DEV | 3d | 2010-05-06 | 2010-05-10 |  |
| 205 | Instalacion y Configuracion de Servidores de Usos Multiples | 5d | 2010-05-06 | 2010-05-12 |  |
| 208 | Instalacion de pcs nuevos usuarios | 5d | 2010-05-06 | 2010-05-12 |  |

Removed: 199 Arquitectura General / Configuracion de Ambientes; 203 Preparacion de ambiente en servidores; 204 Instalacion y configuracion de Servidor Dev; 205 Instalacion y Configuracion de Servidor Usos Multiples; 208 Instalacion de las pcs de usuario

Changed:

| ID | Task | Start | Finish | Duration | Total float | Predecessors | Other |
| --- | --- | --- | --- | --- | --- | --- | --- |
| 1 | Integracion con el Sistema STARS (Lectura Datos) | 2010-06-08 → 2010-06-03 (-5d) | 2010-06-14 → 2010-06-09 (-5d) |  | -30d → 0d | Arquitectura General / Configuracion de Ambientes → 199 |  |
| 2 | Modulo Seguridad que Oculta Info Llamado | 2010-06-15 → 2010-06-10 (-5d) | 2010-06-17 → 2010-06-14 (-3d) |  | 10d → 4d |  |  |
| 3 | **(GEN01) Identificacion y Autenticacion** | 2010-05-07 → 2010-06-10 (+34d) | 2010-05-12 → 2010-06-10 (+29d) | 4d → 1d | none → 3d |  |  |
| 4 | Autenticacion | 2010-05-07 → 2010-06-10 (+34d) | 2010-05-07 → 2010-06-10 (+34d) |  |  |  |  |
| 5 | Interfaz Inicio Sesion | 2010-05-07 → 2010-06-10 (+34d) | 2010-05-11 → 2010-06-10 (+30d) | 3d → 1d | 1d → 3d |  |  |
| 6 | **(GEN02) Gestion General de Registros** | 2010-06-15 → 2010-06-10 (-5d) | 2010-06-17 → 2010-06-11 (-6d) | 3d → 2d | 10d → 5d |  |  |
| 7 | ABM Registro | 2010-06-15 → 2010-06-10 (-5d) | 2010-06-15 → 2010-06-10 (-5d) |  | 12d → 6d |  |  |
| 8 | Buscar registro | 2010-06-15 → 2010-06-10 (-5d) | 2010-06-15 → 2010-06-10 (-5d) |  | 12d → 6d |  |  |
| 9 | Copiar registro | 2010-06-15 → 2010-06-10 (-5d) | 2010-06-15 → 2010-06-10 (-5d) |  | 12d → 6d |  |  |
| 10 | Interfaz ABM Registro | 2010-06-15 → 2010-06-10 (-5d) | 2010-06-17 → 2010-06-11 (-6d) | 3d → 2d | 10d → 5d |  |  |
| 11 | **(USR01) Determinacion del servicio de atencion** | 2010-06-21 → 2010-06-14 (-7d) | 2010-06-22 → 2010-06-14 (-8d) | 2d → 1d? | 0d → 2d |  |  |
| 12 | Capturar la Comunicación???? | 2010-06-21 → 2010-06-14 (-7d) | 2010-06-22 → 2010-06-14 (-8d) | 2d → 1d? | 0d → 2d |  |  |
| 13 | Determinar el tipod e servicio | 2010-06-21 → 2010-06-14 (-7d) | 2010-06-21 → 2010-06-14 (-7d) | 1d → 1d? | 1d → 2d |  | was named Determinar el tipo de servicio |
| 14 | Lista de Espera | 2010-06-21 → 2010-06-14 (-7d) | 2010-06-21 → 2010-06-14 (-7d) | 1d → 1d? | 1d → 2d |  |  |
| 15 | Determinar conjunto de operadores adecuados al tipo de solicitud | 2010-06-21 → 2010-06-14 (-7d) | 2010-06-21 → 2010-06-14 (-7d) | 1d → 1d? | 1d → 2d |  |  |
| 16 | **(USR02) Agenda** | 2010-06-18 → 2010-06-14 (-4d) | 2010-06-22 → 2010-06-14 (-8d) | 3d → 1d? | -22d → 2d |  |  |
| 17 | Selección de una agenda | 2010-06-18 → 2010-06-14 (-4d) | 2010-06-18 → 2010-06-14 (-4d) | 0.5h → 1d? | -19.06d → 2d |  |  |
| 18 | ABM citas sobre la agenda | 2010-06-18 → 2010-06-14 (-4d) | 2010-06-18 → 2010-06-14 (-4d) | 1d → 1d? | -20d → 2d |  |  |
| 19 | Interfaz de la Agenda | 2010-06-18 → 2010-06-14 (-4d) | 2010-06-21 → 2010-06-14 (-7d) | 2d → 1d? | -21d → 2d |  |  |
| 20 | Integracion con Stars - Llamada desde Agenda | 2010-06-18 → 2010-06-14 (-4d) | 2010-06-22 → 2010-06-14 (-8d) | 3d → 1d? | -22d → 2d |  |  |
| 21 | Asignar pacientes a cita | 2010-06-18 → 2010-06-14 (-4d) | 2010-06-18 → 2010-06-14 (-4d) | 0.5h → 1d? | -19.06d → 2d |  |  |
| 22 | (USR03) Rellamada | 2010-06-18 → 2010-06-15 (-3d) | 2010-06-18 → 2010-06-15 (-3d) | 1d → 1d? | 9d → 3d |  |  |
| 23 | **(USR04) Consulta** | 2010-05-20 → 2010-06-10 (+21d) | 2010-06-16 → 2010-06-10 (-6d) | 20d → 1d? | -19d → 0d |  |  |
| 24 | **Tratar Consulta** | 2010-05-20 → 2010-06-10 (+21d) | 2010-05-20 → 2010-06-10 (+21d) | 1d → 1d? | none → 0d |  |  |
| 25 | Ajornar Consulta | 2010-05-20 → 2010-06-10 (+21d) | 2010-05-20 → 2010-06-10 (+21d) | 0.5h → 1d? | 0.94d → 0d |  |  |
| 26 | Transferir consulta | 2010-05-20 → 2010-06-10 (+21d) | 2010-05-20 → 2010-06-10 (+21d) | 0.5h → 1d? | 0.94d → 0d |  |  |
| 27 | Modulo Envio de Correo | 2010-06-15 → 2010-06-10 (-5d) | 2010-06-16 → 2010-06-10 (-6d) | 2d → 1d? | -30d → 0d |  |  |
| 28 | Modulo Envio SMS | 2010-06-15 → 2010-06-10 (-5d) | 2010-06-16 → 2010-06-10 (-6d) | 2d → 1d? | -30d → 0d |  |  |
| 29 | Inclusion en Campaña de Seguimiento | 2010-06-15 → 2010-06-10 (-5d) | 2010-06-15 → 2010-06-10 (-5d) | 1d → 1d? | -29d → 0d |  |  |
| 30 | (USR05) Consejo Salud | 2010-06-21 → 2010-06-14 (-7d) | 2010-06-21 → 2010-06-14 (-7d) | 1d → 1d? | 8d → 4d |  |  |
| 31 | **(USR06) Gestionar Consulta pendiente** | 2010-06-17 → 2010-06-11 (-6d) | 2010-06-17 → 2010-06-11 (-6d) | 1d → 1d? | -19d → 2d |  |  |
| 32 | Priorizacion de la Lista de Consultas | 2010-06-17 → 2010-06-11 (-6d) | 2010-06-17 → 2010-06-11 (-6d) | 1d → 1d? | -19d → 2d |  |  |
| 33 | **(USR07) Programacion de cita previa** | 2010-06-21 → 2010-06-14 (-7d) | 2010-06-21 → 2010-06-14 (-7d) | 1d → 1d? | 8d → 4d |  |  |
| 34 | Realizar Citación (Interface con Sistema de citación AP) | 2010-06-21 → 2010-06-14 (-7d) | 2010-06-21 → 2010-06-14 (-7d) | 1d → 1d? | 8d → 4d |  |  |
| 35 | **(USR08) Gestiones sobre la TSI** | 2010-06-21 → 2010-06-14 (-7d) | 2010-06-21 → 2010-06-14 (-7d) | 0.06d → 1d? | -14.06d → 3d |  |  |
| 36 | Verificacion Documentacion Necesaria | 2010-06-21 → 2010-06-14 (-7d) | 2010-06-21 → 2010-06-14 (-7d) | 0.5h → 1d? | -14.06d → 3d |  |  |
| 37 | Enviar Gestion (Interface con sistema RCA) | 2010-06-21 → 2010-06-14 (-7d) | 2010-06-21 → 2010-06-14 (-7d) | 0.5h → 1d? | -14.06d → 3d |  |  |
| 38 | Cierre automatico de la consulta por paso de tiempo | 2010-06-21 → 2010-06-14 (-7d) | 2010-06-21 → 2010-06-14 (-7d) | 0.5h → 1d? | -14.06d → 3d |  |  |
| 39 | Guardar LOG gestion TSI????? | 2010-06-21 → 2010-06-14 (-7d) | 2010-06-21 → 2010-06-14 (-7d) | 0.5h → 1d? | -14.06d → 3d |  |  |
| 40 | **(USR09) Servicio de traduccion** | 2010-06-18 → 2010-06-14 (-4d) | 2010-06-21 → 2010-06-14 (-7d) | 2d → 1d? | 8d → 4d |  |  |
| 41 | Contactar Servicio Externo de Traduccion | 2010-06-18 → 2010-06-14 (-4d) | 2010-06-18 → 2010-06-14 (-4d) | 1d → 1d? | 9d → 4d |  |  |
| 42 | Enlace Comunicacion Multiconferencia | 2010-06-18 → 2010-06-14 (-4d) | 2010-06-21 → 2010-06-14 (-7d) | 2d → 1d? | 8d → 4d |  |  |
| 43 | Modulo monitorización de servicio | 2010-06-18 → 2010-06-14 (-4d) | 2010-06-21 → 2010-06-14 (-7d) | 2d → 1d? | 8d → 4d |  |  |
| 44 | **(USR10) Informacion Sanitaria General** | 2010-06-25 → 2010-06-16 (-9d) | 2010-06-25 → 2010-06-16 (-9d) | 1d → 1d? | 4d → 2d |  |  |
| 45 | Guardar Informacion Ciudadano | 2010-06-25 → 2010-06-16 (-9d) | 2010-06-25 → 2010-06-16 (-9d) | 1d → 1d? | 4d → 2d |  |  |
| 46 | **(USR11) Seguimiento de Patologias** | 2010-05-24 → 2010-06-15 (+22d) | 2010-05-26 → 2010-06-15 (+20d) | 2.5d → 1d? | none → 2d |  |  |
| 47 | Buscar Campañas Abiertas | 2010-05-24 → 2010-06-15 (+22d) | 2010-05-24 → 2010-06-15 (+22d) | 0.5d → 1d? |  |  |  |
| 48 | **Gestionar Seguimiento** | 2010-05-24 → 2010-06-15 (+22d) | 2010-05-24 → 2010-06-15 (+22d) | 1d → 1d? | none → 2d |  |  |
| 49 | Visualizar Historial Pacientes | 2010-05-24 → 2010-06-15 (+22d) | 2010-05-24 → 2010-06-15 (+22d) | 0.5h → 1d? | 0.94d → 2d |  |  |
| 50 | Llamada al Paciente | 2010-05-24 → 2010-06-15 (+22d) | 2010-05-24 → 2010-06-15 (+22d) | 0.5h → 1d? | 0.94d → 2d |  |  |
| 51 | Desligar paciente de campaña | 2010-05-24 → 2010-06-15 (+22d) | 2010-05-24 → 2010-06-15 (+22d) | 1d → 1d? | 1.5d → 2d |  |  |
| 52 | **(USR12) Encuestas** | 2010-06-09 → 2010-06-04 (-5d) | 2010-06-11 → 2010-06-04 (-7d) | 3d → 1d? | 12d → 9d |  |  |
| 53 | Interfaz de Encuestas | 2010-06-09 → 2010-06-04 (-5d) | 2010-06-11 → 2010-06-04 (-7d) | 3d → 1d? | 12d → 9d |  |  |
| 54 | Contacto con Encuestado | 2010-06-09 → 2010-06-04 (-5d) | 2010-06-09 → 2010-06-04 (-5d) | 1d → 1d? | 14d → 9d |  |  |
| 55 | ABM Formulario De Encuesta | 2010-06-09 → 2010-06-04 (-5d) | 2010-06-09 → 2010-06-04 (-5d) | 1d → 1d? | 14d → 9d |  |  |
| 56 | **(USR13) Buscar Consultas** | 2010-05-07 → 2010-06-14 (+38d) | 2010-05-10 → 2010-06-14 (+35d) | 2d → 1d? | 0d → 3d |  |  |
| 57 | **Operativo de Busqueda** | 2010-05-07 → 2010-06-14 (+38d) | 2010-05-10 → 2010-06-14 (+35d) | 2d → 1d? | none → 3d |  |  |
| 58 | Buscar según distintos criterios | 2010-05-07 → 2010-06-14 (+38d) | 2010-05-07 → 2010-06-14 (+38d) | 1d → 1d? | 1d → 3d |  |  |
| 59 | Filtrar resultados de la busqueda según permisos del usuario | 2010-05-07 → 2010-06-14 (+38d) | 2010-05-07 → 2010-06-14 (+38d) | 0.5h → 1d? | 1.94d → 3d |  |  |
| 60 | Acotar resultados si los mismos sobrepasan el parametro configurable "n" | 2010-05-07 → 2010-06-14 (+38d) | 2010-05-07 → 2010-06-14 (+38d) | 0.5h → 1d? | 1.94d → 3d |  |  |
| 61 | **(USR14) Hacer Uso de Documentos** | 2010-06-17 → 2010-06-11 (-6d) | 2010-06-18 → 2010-06-11 (-7d) | 2d → 1d? | 2d → 0d |  |  |
| 62 | Creación y uso de Guias Interrogatorio | 2010-06-17 → 2010-06-11 (-6d) | 2010-06-18 → 2010-06-11 (-7d) | 2d → 1d? | 2d → 0d |  |  |
| 63 | Creación y uso Fichas Tematicas | 2010-06-17 → 2010-06-11 (-6d) | 2010-06-18 → 2010-06-11 (-7d) | 2d → 1d? | 2d → 0d |  |  |
| 64 | Creación y uso de Recursos | 2010-06-17 → 2010-06-11 (-6d) | 2010-06-18 → 2010-06-11 (-7d) | 2d → 1d? | 2d → 0d |  |  |
| 65 | Búsqueda y selección de documentos | 2010-06-17 → 2010-06-11 (-6d) | 2010-06-18 → 2010-06-11 (-7d) | 2d → 1d? | 2d → 0d |  |  |
| 66 | Apertura documentos | 2010-06-17 → 2010-06-11 (-6d) | 2010-06-17 → 2010-06-11 (-6d) | 1d → 1d? | 3d → 0d |  |  |
| 67 | **(USR15) Cerrar consulta y dar respuesta al ciudadano** | 2010-06-17 → 2010-06-11 (-6d) | 2010-06-17 → 2010-06-11 (-6d) | 1d → 1d? | -13.06d → 3d |  |  |
| 68 | Clasificar Finalizacion de Consulta | 2010-06-17 → 2010-06-11 (-6d) | 2010-06-17 → 2010-06-11 (-6d) | 0.5h → 1d? | -12.12d → 3d |  |  |
| 69 | Adición de motivo de cierre a la consulta | 2010-06-17 → 2010-06-11 (-6d) | 2010-06-17 → 2010-06-11 (-6d) | 0.5h → 1d? | -12.12d → 3d |  |  |
| 70 | Creación de clasificaciones ad-hoc | 2010-06-17 → 2010-06-11 (-6d) | 2010-06-17 → 2010-06-11 (-6d) | 1d → 1d? | -13.06d → 3d |  |  |

| ID | Task | Start | Finish | Duration | Total float | Predecessors |
| --- | --- | --- | --- | --- | --- | --- |
| 71 | **(USR16) Visualizar Consulta** | 2010-06-17 → 2010-06-11 (-6d) | 2010-06-17 → 2010-06-11 (-6d) | 1d → 1d? | -30d → 2d |  |
| 72 | Mostrar datos generales de la consulta | 2010-06-17 → 2010-06-11 (-6d) | 2010-06-17 → 2010-06-11 (-6d) | 1d → 1d? | -30d → 2d |  |
| 73 | Mostrar datos según el documento elegido | 2010-06-17 → 2010-06-11 (-6d) | 2010-06-17 → 2010-06-11 (-6d) | 1d → 1d? | -30d → 2d |  |
| 74 | **(USR17) Crear/Transferir Consulta** | 2010-05-06 → 2010-06-11 (+36d) | 2010-06-18 → 2010-06-11 (-7d) | 32d → 1d? | -14.06d → 2d |  |
| 75 | Crear Consulta | 2010-06-17 → 2010-06-11 (-6d) | 2010-06-18 → 2010-06-11 (-7d) | 2d → 1d? | -14.06d → 2d |  |
| 76 | Copiar consulta | 2010-06-17 → 2010-06-11 (-6d) | 2010-06-17 → 2010-06-11 (-6d) | 1d → 1d? | -13.06d → 2d |  |
| 77 | **Transferir Consulta** | 2010-05-06 → 2010-06-11 (+36d) | 2010-05-06 → 2010-06-11 (+36d) | 1d → 1d? | none → 2d |  |
| 78 | Localizar a otro operador del mismo perfil | 2010-05-06 → 2010-06-11 (+36d) | 2010-05-06 → 2010-06-11 (+36d) | 1d → 1d? | 0d → 2d |  |
| 79 | **(ADM01) Mantenimiento del Entorno, clasif y prioridades** | 2010-05-07 → 2010-06-03 (+27d) | 2010-06-10 → 2010-06-03 (-7d) | 25d → 1d? | -21d → 9d | Arquitectura General / Configuracion de Ambientes → 199 |
| 80 | Módulo de edición de parametros grales de la aplicación | 2010-06-08 → 2010-06-03 (-5d) | 2010-06-10 → 2010-06-03 (-7d) | 3d → 1d? | -25d → 9d |  |
| 81 | Módulo edición listas de clasificaciones (Códigos internos) | 2010-06-08 → 2010-06-03 (-5d) | 2010-06-10 → 2010-06-03 (-7d) | 3d → 1d? | -25d → 9d |  |
| 82 | **Módulo mantenimiento de la lista de espera** | 2010-05-07 → 2010-06-03 (+27d) | 2010-05-10 → 2010-06-03 (+24d) | 2d → 1d? | none → 9d |  |
| 83 | ABM de la lista de espera | 2010-05-07 → 2010-06-03 (+27d) | 2010-05-07 → 2010-06-03 (+27d) | 1d → 1d? | 1d → 9d |  |
| 84 | Módulo de gestión de prioridades sobre la lista de espera | 2010-05-07 → 2010-06-03 (+27d) | 2010-05-07 → 2010-06-03 (+27d) | 1d → 1d? | 1d → 9d |  |
| 85 | **Módulo mantenimiento de lineas de servicio** | 2010-05-07 → 2010-06-03 (+27d) | 2010-05-10 → 2010-06-03 (+24d) | 2d → 1d? | none → 9d |  |
| 86 | ABM lineas de servicio | 2010-05-07 → 2010-06-03 (+27d) | 2010-05-07 → 2010-06-03 (+27d) | 1d → 1d? | 1d → 9d |  |
| 87 | ABM servicios para una linea seleccionada | 2010-05-07 → 2010-06-03 (+27d) | 2010-05-07 → 2010-06-03 (+27d) | 1d → 1d? | 1d → 9d |  |
| 88 | **Módulo mantenimiento agendas** | 2010-05-07 → 2010-06-03 (+27d) | 2010-05-12 → 2010-06-03 (+22d) | 4d → 1d? | none → 9d |  |
| 89 | Asignar operadores a agenda | 2010-05-07 → 2010-06-03 (+27d) | 2010-05-07 → 2010-06-03 (+27d) | 1d → 1d? | 3d → 9d |  |
| 90 | ABM de usuarios de la agenda | 2010-05-07 → 2010-06-03 (+27d) | 2010-05-07 → 2010-06-03 (+27d) | 1d → 1d? | 3d → 9d |  |
| 91 | ABM citas de la agenda | 2010-05-07 → 2010-06-03 (+27d) | 2010-05-07 → 2010-06-03 (+27d) | 1d → 1d? | 3d → 9d |  |
| 92 | **Módulo mantenimiento BBDD** | 2010-05-07 → 2010-06-03 (+27d) | 2010-05-11 → 2010-06-03 (+23d) | 3d → 1d? | none → 9d |  |
| 93 | Módulo comprobación de formato de archivo | 2010-05-07 → 2010-06-03 (+27d) | 2010-05-07 → 2010-06-03 (+27d) | 1d → 1d? | 2d → 9d |  |
| 94 | Módulo actualización de BBDD | 2010-05-07 → 2010-06-03 (+27d) | 2010-05-10 → 2010-06-03 (+24d) | 2d → 1d? | 1d → 9d |  |
| 95 | **(ADM02) Extraccion de estadisticas y listados** | 2010-05-07 → 2010-06-04 (+28d) | 2010-06-14 → 2010-06-04 (-10d) | 27d → 1d? | 0d → 9d |  |
| 96 | Listados De Administración | 2010-06-11 → 2010-06-04 (-7d) | 2010-06-14 → 2010-06-04 (-10d) | 2d → 1d? | 8d → 9d |  |
| 97 | **Listados Comunes** | 2010-05-07 → 2010-06-04 (+28d) | 2010-05-13 → 2010-06-04 (+22d) | 5d → 1d? | none → 9d |  |
| 98 | Detalle de estado de finalización consulta/acción | 2010-05-07 → 2010-06-04 (+28d) | 2010-05-07 → 2010-06-04 (+28d) | 1d → 1d? | 4d → 9d |  |
| 99 | Listado de clasificaciones | 2010-05-07 → 2010-06-04 (+28d) | 2010-05-07 → 2010-06-04 (+28d) | 1d → 1d? | 4d → 9d |  |
| 100 | Listados de incidencias en las comunicaciones | 2010-05-07 → 2010-06-04 (+28d) | 2010-05-07 → 2010-06-04 (+28d) | 1d → 1d? | 4d → 9d |  |
| 101 | Ratios por usuario | 2010-05-07 → 2010-06-04 (+28d) | 2010-05-07 → 2010-06-04 (+28d) | 1d → 1d? | 4d → 9d |  |
| 102 | Finales de servicio | 2010-05-07 → 2010-06-04 (+28d) | 2010-05-07 → 2010-06-04 (+28d) | 1d → 1d? | 4d → 9d |  |
| 103 | **(ADM03) Mantenimiento de documentos** | 2010-06-24 → 2010-06-16 (-8d) | 2010-06-25 → 2010-06-17 (-8d) | 2d → 2d? | 3d → 0d |  |
| 104 | Creación y edición de documentos | 2010-06-24 → 2010-06-17 (-7d) | 2010-06-25 → 2010-06-17 (-8d) | 2d → 1d? | 3d → 0d | none → 108, 109, 110 |
| 105 | Borrado de documentos | 2010-06-24 → 2010-06-16 (-8d) | 2010-06-24 → 2010-06-16 (-8d) | 1d → 1d? | 4d → 1d |  |
| 106 | Clasificación de documentos | 2010-06-24 → 2010-06-16 (-8d) | 2010-06-24 → 2010-06-16 (-8d) | 1d → 1d? | 4d → 1d |  |
| 107 | Búsqueda de documentos | 2010-06-24 → 2010-06-16 (-8d) | 2010-06-25 → 2010-06-16 (-9d) | 2d → 1d? | 3d → 1d |  |
| 108 | (ADM04) Mantenimiento de Recursos | 2010-06-21 → 2010-06-14 (-7d) | 2010-06-22 → 2010-06-14 (-8d) | 2d → 1d? | 3d → 0d |  |
| 109 | (ADM05) Mantenimiento de guias de interrogatorio | 2010-06-24 → 2010-06-16 (-8d) | 2010-06-25 → 2010-06-16 (-9d) | 2d → 1d? | 4d → 0d |  |
| 110 | (ADM06) Mantenimiento de Fichas tematicas | 2010-06-24 → 2010-06-16 (-8d) | 2010-06-25 → 2010-06-16 (-9d) | 2d → 1d? | 4d → 0d |  |
| 111 | **(ADM07) Mantenimiento de relaciones sobre guias de interrogatorio y fichas tematicas** | 2010-06-23 → 2010-06-15 (-8d) | 2010-06-23 → 2010-06-15 (-8d) | 1d → 1d? | 3d → 0d |  |
| 112 | Adición de documentos a fichas temáticas | 2010-06-23 → 2010-06-15 (-8d) | 2010-06-23 → 2010-06-15 (-8d) | 1d → 1d? | 3d → 0d |  |
| 113 | Adición de documentos a guias de interrogatorio | 2010-06-23 → 2010-06-15 (-8d) | 2010-06-23 → 2010-06-15 (-8d) | 1d → 1d? | 3d → 0d |  |
| 114 | **(ADM08) Mantenimiento de encuestas** | 2010-05-06 → 2010-06-04 (+29d) | 2010-06-09 → 2010-06-04 (-5d) | 25d → 1d? | 0d → 10d |  |
| 115 | **Mantenimiento Indice de Encuestas** | 2010-05-06 → 2010-06-04 (+29d) | 2010-05-07 → 2010-06-04 (+28d) | 2d → 1d? | none → 10d |  |
| 116 | Mantener Ediciones | 2010-05-06 → 2010-06-04 (+29d) | 2010-05-06 → 2010-06-04 (+29d) | 1d → 1d? | 1d → 10d |  |
| 117 | Cierre de ediciones | 2010-05-06 → 2010-06-04 (+29d) | 2010-05-06 → 2010-06-04 (+29d) | 1d → 1d? | 1d → 10d |  |
| 118 | Asignación de formulario a encuesta | 2010-06-09 → 2010-06-04 (-5d) | 2010-06-09 → 2010-06-04 (-5d) | 1d → 1d? | 16d → 10d |  |
| 119 | Asignación de operadores a encuesta | 2010-06-09 → 2010-06-04 (-5d) | 2010-06-09 → 2010-06-04 (-5d) | 1d → 1d? | 16d → 10d |  |
| 120 | **Asignación lista de encuestados** | 2010-05-06 → 2010-06-04 (+29d) | 2010-05-07 → 2010-06-04 (+28d) | 2d → 1d? | none → 10d |  |
| 121 | Alta, baja de encuestados | 2010-05-06 → 2010-06-04 (+29d) | 2010-05-06 → 2010-06-04 (+29d) | 1d → 1d? | 1d → 10d |  |
| 122 | Asignación automática en base a un archivo de texto | 2010-05-06 → 2010-06-04 (+29d) | 2010-05-06 → 2010-06-04 (+29d) | 1d → 1d? | 1d → 10d |  |
| 123 | Publicar Encuestas | 2010-06-09 → 2010-06-04 (-5d) | 2010-06-09 → 2010-06-04 (-5d) | 1d → 1d? | 16d → 10d |  |
| 124 | **(ADM09) Mantenimiento de seguimiento de patologias** | 2010-06-11 → 2010-06-04 (-7d) | 2010-06-11 → 2010-06-04 (-7d) | 1d → 1d? | 12d → 9d |  |
| 125 | Mantenimiento Indice de campañas de seguimiento | 2010-06-11 → 2010-06-04 (-7d) | 2010-06-11 → 2010-06-04 (-7d) | 1d → 1d? | 12d → 9d |  |
| 126 | Asignación de formulario a campaña de seguimiento | 2010-06-11 → 2010-06-04 (-7d) | 2010-06-11 → 2010-06-04 (-7d) | 0.5h → 1d? | 12.94d → 9d |  |
| 127 | Asignación de operadores a campaña de seguimiento | 2010-06-11 → 2010-06-04 (-7d) | 2010-06-11 → 2010-06-04 (-7d) | 0.5h → 1d? | 12.94d → 9d |  |
| 128 | Asignación de listas de pacientes | 2010-06-11 → 2010-06-04 (-7d) | 2010-06-11 → 2010-06-04 (-7d) | 0.5h → 1d? | 12.94d → 9d |  |
| 129 | Activación/ Desactivación de campañas | 2010-06-11 → 2010-06-04 (-7d) | 2010-06-11 → 2010-06-04 (-7d) | 0.5h → 1d? | 12.94d → 9d |  |
| 130 | **(ADM10) Creacion de formularios de encuesta y seguimiento** | 2010-06-08 → 2010-06-03 (-5d) | 2010-06-08 → 2010-06-03 (-5d) | 1d → 1d? | -24d → 9d | Arquitectura General / Configuracion de Ambientes → 199 |
| 131 | Mantener Indice de Encuesta | 2010-06-08 → 2010-06-03 (-5d) | 2010-06-08 → 2010-06-03 (-5d) | 1d → 1d? | -24d → 9d |  |
| 132 | Crear y Editar Encuestas | 2010-06-08 → 2010-06-03 (-5d) | 2010-06-08 → 2010-06-03 (-5d) | 1d → 1d? | -24d → 9d |  |
| 133 | **(ADM11) Mantenimiento de usuarios, perfiles y permisos** | 2010-05-07 → 2010-06-10 (+34d) | 2010-06-15 → 2010-06-10 (-5d) | 28d → 1d? | 0d → 5d |  |
| 134 | Mantenimiento Opciones Funcionales | 2010-06-15 → 2010-06-10 (-5d) | 2010-06-15 → 2010-06-10 (-5d) | 1d → 1d? | 7d → 5d |  |
| 135 | **Mantener Perfiles Trabajo** | 2010-05-07 → 2010-06-10 (+34d) | 2010-05-11 → 2010-06-10 (+30d) | 2.5d → 1d? | none → 5d |  |
| 136 | Alta, modificación de perfiles | 2010-05-07 → 2010-06-10 (+34d) | 2010-05-07 → 2010-06-10 (+34d) | 1d → 1d? | 1.5d → 5d |  |
| 137 | ABM de opciones funcionales a perfil | 2010-05-07 → 2010-06-10 (+34d) | 2010-05-07 → 2010-06-10 (+34d) | 1d → 1d? | 1.5d → 5d |  |
| 138 | Adición de responsabilidades a opciones funcionales | 2010-05-07 → 2010-06-10 (+34d) | 2010-05-07 → 2010-06-10 (+34d) | 0.5h → 1d? | 2.44d → 5d |  |
| 139 | **Mantener Usuarios** | 2010-05-07 → 2010-06-10 (+34d) | 2010-05-11 → 2010-06-10 (+30d) | 2.5d → 1d? | none → 5d |  |
| 140 | Creación/gestion de usuarios | 2010-05-07 → 2010-06-10 (+34d) | 2010-05-07 → 2010-06-10 (+34d) | 1d → 1d? | 1.5d → 5d |  |

| ID | Task | Start | Finish | Duration | Total float | Other |
| --- | --- | --- | --- | --- | --- | --- |
| 141 | Asiganción de perfil a usuario | 2010-05-07 → 2010-06-10 (+34d) | 2010-05-07 → 2010-06-10 (+34d) | 0.5h → 1d? | 2.44d → 5d |  |
| 142 | Asignación de agendas a usuario | 2010-05-07 → 2010-06-10 (+34d) | 2010-05-07 → 2010-06-10 (+34d) | 1d → 1d? | 1.5d → 5d |  |
| 143 | **(ADM12) Listado de acciones proactivas** | 2010-06-15 → 2010-06-07 (-8d) | 2010-06-16 → 2010-06-07 (-9d) | 2d → 1d? | 11d → 9d |  |
| 144 | Módulo de elaboraciónde informes de estado de campaña de seguimiento | 2010-06-15 → 2010-06-07 (-8d) | 2010-06-16 → 2010-06-07 (-9d) | 2d → 1d? | 11d → 9d |  |
| 145 | Módulo de elaboración de informes de estado de encuesta | 2010-06-15 → 2010-06-07 (-8d) | 2010-06-16 → 2010-06-07 (-9d) | 2d → 1d? | 11d → 9d |  |
| 146 | Módulo de elaboración de informes de ediciones de encuestas | 2010-06-15 → 2010-06-07 (-8d) | 2010-06-16 → 2010-06-07 (-9d) | 2d → 1d? | 11d → 9d |  |
| 147 | Módulo de elaboración de listados de campañas de seguimiento | 2010-06-15 → 2010-06-07 (-8d) | 2010-06-16 → 2010-06-07 (-9d) | 2d → 1d? | 11d → 9d |  |
| 148 | Módulo de elaboración de listados de información de encuestas | 2010-06-15 → 2010-06-07 (-8d) | 2010-06-16 → 2010-06-07 (-9d) | 2d → 1d? | 11d → 9d |  |
| 149 | **(ADM13) Listados de documentos** | 2010-06-28 → 2010-06-18 (-10d) | 2010-06-28 → 2010-06-18 (-10d) | 1d → 1d? | 3d → 0d |  |
| 150 | Elaboración de listado de configuración | 2010-06-28 → 2010-06-18 (-10d) | 2010-06-28 → 2010-06-18 (-10d) | 1d → 1d? | 3d → 0d |  |
| 151 | Elaboración de listado de uso | 2010-06-28 → 2010-06-18 (-10d) | 2010-06-28 → 2010-06-18 (-10d) | 1d → 1d? | 3d → 0d |  |
| 152 | Elaboración de listado de asociaciones | 2010-06-28 → 2010-06-18 (-10d) | 2010-06-28 → 2010-06-18 (-10d) | 1d → 1d? | 3d → 0d |  |
| 153 | **(ADM14) Listado sobre consultas** | 2010-06-17 → 2010-06-11 (-6d) | 2010-06-17 → 2010-06-11 (-6d) | 1d → 1d? | 10d → 5d |  |
| 154 | Módulo de obtención de listados de consulta por ciudadano | 2010-06-17 → 2010-06-11 (-6d) | 2010-06-17 → 2010-06-11 (-6d) | 1d → 1d? | 10d → 5d |  |
| 155 | Módulo de obtención de listados de consultas con cierre principal | 2010-06-17 → 2010-06-11 (-6d) | 2010-06-17 → 2010-06-11 (-6d) | 1d → 1d? | 10d → 5d |  |
| 156 | Módulo de obtención de listados de consulta con cierre secundario | 2010-06-17 → 2010-06-11 (-6d) | 2010-06-17 → 2010-06-11 (-6d) | 1d → 1d? | 10d → 5d |  |
| 157 | Módulo de obtención de listados de consulta por motivo de cierre | 2010-06-17 → 2010-06-11 (-6d) | 2010-06-17 → 2010-06-11 (-6d) | 1d → 1d? | 10d → 5d |  |
| 158 | Módulo de obtención de listado de resumen de consultas por servicio | 2010-06-17 → 2010-06-11 (-6d) | 2010-06-17 → 2010-06-11 (-6d) | 1d → 1d? | 10d → 5d |  |
| 159 | Módulo de obtención de listado de consultas por área geográfica | 2010-06-17 → 2010-06-11 (-6d) | 2010-06-17 → 2010-06-11 (-6d) | 1d → 1d? | 10d → 5d |  |
| 160 | Módulo de obtención de listado de consultas por usuario | 2010-06-17 → 2010-06-11 (-6d) | 2010-06-17 → 2010-06-11 (-6d) | 1d → 1d? | 10d → 5d |  |
| 161 | Módulo de obtención de listado de consultas pendientes | 2010-06-17 → 2010-06-11 (-6d) | 2010-06-17 → 2010-06-11 (-6d) | 1d → 1d? | 10d → 5d |  |
| 162 | **(ADM15) Mantener Asignaciones TSI** | 2010-06-01 → 2010-06-15 (+14d) | 2010-06-10 → 2010-06-15 (+5d) | 8d → 1d? | 0d → 3d |  |
| 163 | **Módulo de envío de datos a CatSalut** | 2010-06-01 → 2010-06-15 (+14d) | 2010-06-10 → 2010-06-15 (+5d) | 8d → 1d? | none → 3d |  |
| 164 | Recolección de datos de operaciones TSI pendientes | 2010-06-01 → 2010-06-15 (+14d) | 2010-06-01 → 2010-06-15 (+14d) | 1d → 1d? | 7d → 3d |  |
| 165 | Migración de los datos a archivo TXT | 2010-06-01 → 2010-06-15 (+14d) | 2010-06-02 → 2010-06-15 (+13d) | 2d → 1d? | 6d → 3d |  |
| 166 | Interface de comunicación con CatSalut | 2010-06-01 → 2010-06-15 (+14d) | 2010-06-07 → 2010-06-15 (+8d) | 5d → 1d? |  |  |
| 167 | **(ADM16) Asignar documentos a acciones** | 2010-06-28 → 2010-06-18 (-10d) | 2010-06-28 → 2010-06-18 (-10d) | 1d → 1d? | 3d → 0d |  |
| 168 | Creación/eliminación de asociaciones | 2010-06-28 → 2010-06-18 (-10d) | 2010-06-28 → 2010-06-18 (-10d) | 1d → 1d? | 3d → 0d |  |
| 169 | Cadicidad de asociaciones | 2010-06-28 → 2010-06-18 (-10d) | 2010-06-28 → 2010-06-18 (-10d) | 1d → 1d? | 3d → 0d | was named Caducidad de asociaciones |
| 170 | **(INT01) Direcciones de farmacias, CAP y otra informacion breve** | 2010-06-23 → 2010-06-15 (-8d) | 2010-06-24 → 2010-06-15 (-9d) | 2d → 1d? | 0d → 2d |  |
| 171 | Trabajo con listas de resultados | 2010-06-23 → 2010-06-15 (-8d) | 2010-06-24 → 2010-06-15 (-9d) | 2d → 1d? | 0d → 2d |  |
| 172 | **(SIS01) Trazabilidad y registro de uso** | 2010-06-15 → 2010-06-10 (-5d) | 2010-06-22 → 2010-06-16 (-6d) | 6d → 5d? | 7d → 2d |  |
| 173 | Control Acceso a Consultas | 2010-06-17 → 2010-06-11 (-6d) | 2010-06-18 → 2010-06-11 (-7d) | 2d → 1d? | 9d → 5d |  |
| 174 | Control Acceso a Encuestas | 2010-06-15 → 2010-06-10 (-5d) | 2010-06-16 → 2010-06-10 (-6d) | 2d → 1d? | 11d → 6d |  |
| 175 | Control General Acceso al Sistema | 2010-06-16 → 2010-06-11 (-5d) | 2010-06-17 → 2010-06-11 (-6d) | 2d → 1d? | 10d → 5d |  |
| 176 | Control Acceso a Campañas de Seguimiento | 2010-06-15 → 2010-06-16 (+1d) |  | 2d → 1d? | 11d → 2d |  |
| 177 | Control Acceso a Documentos | 2010-06-21 → 2010-06-14 (-7d) | 2010-06-22 → 2010-06-14 (-8d) | 2d → 1d? | 7d → 4d |  |
| 178 | Control Acceso a Recursos Internos | 2010-06-15 → 2010-06-10 (-5d) | 2010-06-16 → 2010-06-10 (-6d) | 2d → 1d? | 11d → 6d |  |
| 179 | Historial de Consultas | 2010-06-15 → 2010-06-10 (-5d) | 2010-06-15 → 2010-06-10 (-5d) | 1d → 1d? | 12d → 6d |  |
| 180 | **(ISC01) Transferir info, comunicacion a STARS** | 2010-06-15 → 2010-06-10 (-5d) | 2010-06-17 → 2010-06-10 (-7d) | 3d → 1d? | 10d → 6d |  |
| 181 | Recibir información del sistema de comunicaciones | 2010-06-15 → 2010-06-10 (-5d) | 2010-06-17 → 2010-06-10 (-7d) | 3d → 1d? | 10d → 6d |  |
| 182 | **(ISC02) Iniciar llamada desde STARS** | 2010-06-15 → 2010-06-10 (-5d) | 2010-06-17 → 2010-06-10 (-7d) | 3d → 1d? | 10d → 6d |  |
| 183 | Lanzamiento de petición de comunicación | 2010-06-15 → 2010-06-10 (-5d) | 2010-06-17 → 2010-06-10 (-7d) | 3d → 1d? | 10d → 6d |  |
| 184 | **(ISC03) Informacion encuesta** | 2010-06-09 → 2010-06-04 (-5d) | 2010-06-09 → 2010-06-04 (-5d) | 1d → 1d? | 16d → 10d |  |
| 185 | Activación actividad de encuesta | 2010-06-09 → 2010-06-04 (-5d) | 2010-06-09 → 2010-06-04 (-5d) | 1d → 1d? | 16d → 10d |  |
| 186 | ABM Consultas | 2010-06-17 → 2010-06-11 (-6d) | 2010-06-17 → 2010-06-11 (-6d) | 1d → 1d? | 10d → 5d |  |
| 187 | ABM Usuarios | 2010-05-13 → 2010-06-11 (+29d) | 2010-05-13 → 2010-06-11 (+29d) | 1d → 1d? | 32d → 4d |  |
| 188 | Proteccion de Acceso | 2010-05-14 → 2010-06-14 (+31d) | 2010-05-18 → 2010-06-14 (+27d) | 3d → 1d? | 32d → 4d |  |
| 189 | ABM Fichas / Guias / Recursos | 2010-06-23 → 2010-06-15 (-8d) | 2010-06-25 → 2010-06-15 (-10d) | 3d → 1d? | 4d → 3d |  |
| 190 | ABM Cuestionarios | 2010-06-09 → 2010-06-04 (-5d) | 2010-06-09 → 2010-06-04 (-5d) | 1d → 1d? | 16d → 10d |  |
| 191 | Interfaz General | 2010-06-15 → 2010-06-10 (-5d) | 2010-06-28 → 2010-06-10 (-18d) | 10d → 1d? | 3d → 6d |  |
| 192 | Interfaz Para Usuario Avanzado | 2010-06-11 → 2010-06-04 (-7d) | 2010-06-17 → 2010-06-04 (-13d) | 5d → 1d? |  |  |
| 193 | Interfaz de Listados para ADM02 | 2010-06-15 → 2010-06-07 (-8d) | 2010-06-21 → 2010-06-07 (-14d) | 5d → 1d? | 8d → 9d |  |
| 194 | Interfaz Mantenimiento Usuarios y Perfiles | 2010-06-16 → 2010-06-11 (-5d) | 2010-06-22 → 2010-06-11 (-11d) | 5d → 1d? | 7d → 5d |  |
| 195 | Interfaz Direcciones INT01 | 2010-06-25 → 2010-06-16 (-9d) | 2010-07-01 → 2010-06-16 (-15d) | 5d → 1d? | 0d → 2d |  |
| 196 | ABM Enfermedades / Centros Salud | 2010-06-25 → 2010-06-16 (-9d) | 2010-06-28 → 2010-06-16 (-12d) | 2d → 1d? | 3d → 2d |  |
| 197 | Listado de Usuarios y Perfiles | 2010-06-16 → 2010-06-11 (-5d) | 2010-06-16 → 2010-06-11 (-5d) | 1d → 1d? | 11d → 5d |  |
| 198 | Interface con sistema de comunicaciones (ISC01, ISC02, ISC03) | 2010-06-15 → 2010-06-10 (-5d) | 2010-06-21 → 2010-06-10 (-11d) | 5d → 1d? | 8d → 6d |  |
| 200 | **Tareas IT Sobre Nuestra Empresa** |  | 2010-05-17 → 2010-05-12 (-5d) | 8d → 5d | -27d → 0d |  |
| 202 | **Infraestructura** |  | 2010-05-17 → 2010-05-12 (-5d) | 8d → 5d | none → 0d |  |

## Version 3 (saved 2010-09-07, file Casos Uso v5 Final.mpp)

Note of the change: Agrego la infra interna. Acomodo un poco el doc. Cambio valores de costos en los progs. Modificaciones Menores

Last finish 2010-06-18 → 2010-11-15 (+150d).

Added:

| ID | Task | Duration | Start | Finish | Predecessors | Constraint | Resources |
| --- | --- | --- | --- | --- | --- | --- | --- |
| 6 | Testing Id y Aut | 1d | 2010-06-17 | 2010-06-17 | 5, 4 |  | Tester |
| 12 | Testing Registros | 2d | 2010-07-07 | 2010-07-08 | 11, 9, 8, 10 | start no earlier than 2010-07-07 | Tester |
| 18 | Testing Servicio Atencion | 1d | 2010-09-01 | 2010-09-01 | 14, 15, 16, 17 | start no earlier than 2010-09-01 | Tester |
| 25 | Testing Agenda | 2d | 2010-08-03 | 2010-08-04 | 20, 21, 22, 23, 24 | start no earlier than 2010-08-03 | Tester |
| 27 | Rellamada | 2d | 2010-08-16 | 2010-08-17 |  | start no earlier than 2010-08-16 | Prog SSr 1 |
| 28 | Testing Rellamada | 1d | 2010-08-27 | 2010-08-27 | 27 | start no earlier than 2010-08-27 | Tester |
| 36 | Testing Consulta | 3d | 2010-06-23 | 2010-06-25 | 30, 33, 34, 35 |  | Tester |
| 38 | Consejo Salud | 2d | 2010-09-07 | 2010-09-08 |  | start no earlier than 2010-09-07 | Prog SSr 1 |
| 39 | Testing Consejo Salud | 1d | 2010-09-09 | 2010-09-09 | 38 | start no earlier than 2010-08-27 | Tester |
| 42 | Testing USR06 | 1d | 2010-08-12 | 2010-08-12 | 41 | start no earlier than 2010-08-12 | Tester |
| 45 | Testing USR07 | 1d | 2010-08-26 | 2010-08-26 | 44 | start no earlier than 2010-08-26 | Tester |
| 51 | Testing | 1d | 2010-09-03 | 2010-09-03 | 47, 48, 49, 50 | start no earlier than 2010-09-02 | Tester |
| 56 | Testing | 2d | 2010-08-30 | 2010-08-31 | 53, 54, 55 | start no earlier than 2010-08-30 | Tester |
| 59 | Testing | 1d | 2010-09-16 | 2010-09-16 | 58 | start no earlier than 2010-09-13 | Tester |
| 66 | Testing | 2d | 2010-09-06 | 2010-09-07 | 61, 63, 62, 65 | start no earlier than 2010-09-06 | Tester |
| 71 | Testing | 2d | 2010-07-30 | 2010-08-02 | 68, 69, 70 | start no earlier than 2010-07-30 | Tester |
| 77 | Testing | 1d | 2010-08-09 | 2010-08-09 | 74, 75, 76 | start no earlier than 2010-08-02 | Tester |
| 84 | Testing | 2d | 2010-08-20 | 2010-08-23 | 70, 80, 81, 82, 83 | start no earlier than 2010-08-20 | Tester |
| 89 | Testing | 1d | 2010-08-10 | 2010-08-10 | 86, 87, 88 | start no earlier than 2010-08-10 | Tester |
| 93 | Testing | 1d | 2010-07-12 | 2010-07-12 | 91, 92 | start no earlier than 2010-07-12 | Tester |
| 99 | Testing | 2d | 2010-08-13 | 2010-08-16 | 95, 96, 98 | start no earlier than 2010-08-13 | Tester |
| 116 | Testing | 2d | 2010-08-24 | 2010-08-25 | 102, 101, 103, 106, 109, 113 | start no earlier than 2010-08-24 | Tester |
| 125 | Testing | 1d | 2010-09-13 | 2010-09-13 | 118, 119 | start no earlier than 2010-08-23 | Tester |
| 153 | Testing ADM 3 al 9 | 3d | 2010-08-17 | 2010-08-19 |  | start no earlier than 2010-08-17 | Tester |
| 157 | Testing Creacion Formularios Enc y Seg | 1d | 2010-07-06 | 2010-07-06 | 155, 156 | start no earlier than 2010-07-06 | Tester |
| 168 | Testing Mantenimiento Usuarios | 1d | 2010-07-13 | 2010-07-13 | 159, 160, 164 | start no earlier than 2010-07-13 | Tester |
| 175 | Testing Listados Proactivas | 2d | 2010-10-04 | 2010-10-05 | 170, 171, 172, 173, 174 | start no earlier than 2010-10-04 | Tester |
| 180 | Testing Listado Docs | 1d | 2010-09-24 | 2010-09-24 | 177, 178, 179 | start no earlier than 2010-09-10 | Tester |
| 190 | Testing Listado Consultas | 3d | 2010-10-08 | 2010-10-12 | 182, 183, 184, 185, 186, 187, 188, 189 | start no earlier than 2010-09-20 | Tester |
| 193 | Módulo de envío de datos a CatSalut | 0d? | 2010-07-23 | 2010-07-23 |  | must start on 2010-07-23 |  |
| 197 | Testing TSI | 2d | 2010-09-17 | 2010-09-20 | 192 | start no earlier than 2010-09-17 | Tester |
| 201 | Testing Asignacion Docs a Acciones | 1d | 2010-09-22 | 2010-09-22 | 199, 200 | start no earlier than 2010-09-22 | Tester |
| 204 | Testing Dirs | 1d | 2010-09-14 | 2010-09-14 | 203 | start no earlier than 2010-09-09 | Tester |
| 213 | Testing Trazabilidad / Registro | 2d | 2010-08-05 | 2010-08-06 | 206, 207, 208, 209, 210, 211, 212 | start no earlier than 2010-08-05 | Tester |
| 218 | Testing Inicio Llamada STARS | 1d | 2010-08-11 | 2010-08-11 | 217 | start no earlier than 2010-08-11 | Tester |
| 234 | Testing ABMs Varios | 4d | 2010-09-27 | 2010-09-30 | 221, 222, 224, 225, 231 | start no earlier than 2010-09-27 | Tester |
| 235 | Testing Interfaces Varias | 3d | 2010-10-13 | 2010-10-15 | 226, 227, 228, 229, 230, 233 | start no earlier than 2010-10-13 | Tester |
| 243 | Instalacion de Ambiente Virtual para Desarrollo | 7d | 2010-05-24 | 2010-06-01 |  | start no earlier than 2010-05-24 | IT 1 |
| 247 | Configuracion Red Interna | 2d | 2010-06-02 | 2010-06-03 |  | start no earlier than 2010-05-24 | IT 1 |
| 250 | **Configuracion del Ambiente de Produccion** | 25d | 2010-09-13 | 2010-10-15 |  |  |  |
| 251 | Instalar y Configurar Load Balancer | 3d | 2010-09-27 | 2010-09-29 |  | start no earlier than 2010-09-27 | IT 1 |
| 252 | Instalar y Configurar APP Server | 3d | 2010-09-20 | 2010-09-22 |  | start no earlier than 2010-09-20 | IT 1 |
| 253 | Instalar y Configurar DB Server | 4d | 2010-09-13 | 2010-09-16 |  | start no earlier than 2010-09-13 | IT 1 |
| 254 | Instalar y Configurar Web Server | 3d | 2010-10-04 | 2010-10-06 |  | start no earlier than 2010-10-04 | IT 1 |
| 255 | Configuracion Total del Entorno | 5d | 2010-10-11 | 2010-10-15 | 251, 252, 253, 254 | start no earlier than 2010-10-11 | IT 1 |
| 257 | Puesta en Marcha | 10d | 2010-10-18 | 2010-10-29 | 250, 235 | start no earlier than 2010-10-18 | IT 1; Arquitecto / Lider; Programador Sr 1; Programador Sr 2 |
| 258 | Testeo Final en Produccion | 9d | 2010-10-18 | 2010-10-28 | 270 |  | Tester |
| 260 | **Web Server (Consultas Externas del Cliente)** | 22d | 2010-07-14 | 2010-08-12 | 7, 30 |  |  |
| 261 | Interfaz Web Server | 4d | 2010-08-09 | 2010-08-12 |  | start no earlier than 2010-08-09 | Programador Jr 2 |
| 262 | Modulo Chat | 3d | 2010-08-02 | 2010-08-04 |  | start no earlier than 2010-08-02 | Prog SSr 1 |
| 263 | Busquedas y Listados del Web Server | 2d | 2010-08-05 | 2010-08-06 |  | start no earlier than 2010-08-05 | Prog SSr 1 |
| 264 | Test Web Server | 2d | 2010-07-14 | 2010-07-15 |  | start no earlier than 2010-07-14 | Tester |
| 266 | **Capacitacion del Personal Para el Uso de la APP** | 11d | 2010-11-01 | 2010-11-15 | 257, 258 |  |  |
| 267 | Capcitacion Usuario Operador | 5d | 2010-11-01 | 2010-11-05 |  | start no earlier than 2010-11-01 | Arquitecto / Lider; Programador Sr 1; Programador Sr 2 |
| 268 | Capacitacion Usuario Administrador | 5d | 2010-11-09 | 2010-11-15 |  | start no earlier than 2010-11-09 | Arquitecto / Lider; Programador Sr 1; Programador Sr 2 |
| 270 | Retoques, Desarrollos Finales, Ultimas Pruebas | 10d | 2010-10-04 | 2010-10-15 |  | start no earlier than 2010-10-04 | Programador Jr 1; Prog SSr 1; Programador Jr 2; Programador Sr 1; Programador Sr 2 |
| 271 | Mantenimiento de la Infra | 10d | 2010-06-18 A | 2010-08-20 |  | start no earlier than 2010-06-18 | IT 1 |

Changed:

| ID | Task | Start | Finish | Duration | Total float | Other |
| --- | --- | --- | --- | --- | --- | --- |
| 1 | Integracion con el Sistema STARS (Lectura Datos) | 2010-06-03 → 2010-06-07 (+4d) | 2010-06-09 → 2010-06-11 (+2d) |  | 0d → 18d | resources none → Programador Sr 1; Programador Sr 2 |
| 2 | Modulo Seguridad que Oculta Info Llamado | 2010-06-10 → 2010-06-14 (+4d) | 2010-06-14 → 2010-06-16 (+2d) |  | 4d → 108d | resources none → Programador Sr 2; Programador Sr 1 |
| 3 | **(GEN01) Identificacion y Autenticacion** | 2010-06-10 → 2010-06-14 (+4d) | 2010-06-10 → 2010-06-17 (+7d) | 1d → 4d | 3d → 95d |  |
| 4 | Autenticacion | 2010-06-10 → 2010-06-14 (+4d) | 2010-06-10 → 2010-06-15 (+5d) | 1d → 2d | 3d → 96d | constraint none → start no earlier than 2010-06-10; resources none → Programador Jr 1 |
| 5 | Interfaz Inicio Sesion | 2010-06-10 → 2010-06-14 (+4d) | 2010-06-10 → 2010-06-16 (+6d) | 1d → 3d | 3d → 95d | constraint none → start no earlier than 2010-06-08; resources none → Prog SSr 1 |
| 7 | **(GEN02) Gestion General de Registros** | 2010-06-10 → 2010-06-15 (+5d) | 2010-06-11 → 2010-07-08 (+27d) | 2d → 18d | 5d → 88d |  |
| 8 | ABM Registro | 2010-06-10 → 2010-06-30 (+20d) | 2010-06-10 → 2010-07-01 (+21d) | 1d → 2d | 6d → 91d | constraint none → start no earlier than 2010-06-30; resources none → Programador Jr 2 |
| 9 | Buscar registro | 2010-06-10 → 2010-06-29 (+19d) | 2010-06-10 → 2010-06-29 (+19d) |  | 6d → 93d | constraint none → start no earlier than 2010-06-29; resources none → Programador Jr 2 |
| 10 | Copiar registro | 2010-06-10 → 2010-06-15 (+5d) | 2010-06-10 → 2010-06-15 (+5d) |  | 6d → 103d | constraint none → start no earlier than 2010-06-15; resources none → Programador Jr 2 |
| 11 | Interfaz ABM Registro | 2010-06-10 → 2010-06-29 (+19d) | 2010-06-11 → 2010-07-05 (+24d) | 2d → 4d | 5d → 89.5d | constraint none → start no earlier than 2010-06-29; resources none → Programador Sr 2 |
| 13 | **(USR01) Determinacion del servicio de atencion** | 2010-06-14 → 2010-08-17 (+64d) | 2010-06-14 → 2010-09-01 (+79d) | 1d? → 12d | 2d → 27d |  |
| 14 | Capturar la Comunicación???? | 2010-06-14 → 2010-08-17 (+64d) | 2010-06-14 → 2010-08-18 (+65d) | 1d? → 2d | 2d → 36d | constraint none → start no earlier than 2010-08-17; resources none → Programador Jr 1 |
| 15 | Determinar el tipo de servicio | 2010-06-14 → 2010-08-26 (+73d) | 2010-06-14 → 2010-08-26 (+73d) | 1d? → 1d | 2d → 30d | was named Determinar el tipod e servicio; constraint none → start no earlier than 2010-08-26; resources none → Programador Jr 1 |
| 16 | Lista de Espera | 2010-06-14 → 2010-08-23 (+70d) | 2010-06-14 → 2010-08-24 (+71d) | 1d? → 2d | 2d → 32d | constraint none → start no earlier than 2010-08-23; resources none → Programador Jr 1 |
| 17 | Determinar conjunto de operadores adecuados al tipo de solicitud | 2010-06-14 → 2010-08-30 (+77d) | 2010-06-14 → 2010-08-30 (+77d) | 1d? → 1d | 2d → 28d | constraint none → start no earlier than 2010-08-30; resources none → Programador Jr 2 |
| 19 | **(USR02) Agenda** | 2010-06-14 → 2010-07-14 (+30d) | 2010-06-14 → 2010-08-04 (+51d) | 1d? → 16d | 2d → 69d |  |
| 20 | Selección de una agenda | 2010-06-14 → 2010-07-29 (+45d) | 2010-06-14 → 2010-07-30 (+46d) | 1d? → 2d | 2d → 70d | constraint none → start no earlier than 2010-07-29; resources none → Programador Jr 1 |
| 21 | ABM citas sobre la agenda | 2010-06-14 → 2010-07-19 (+35d) | 2010-06-14 → 2010-07-20 (+36d) | 1d? → 2d | 2d → 78d | constraint none → start no earlier than 2010-07-19; resources none → Programador Jr 1 |
| 22 | Interfaz de la Agenda | 2010-06-14 → 2010-07-14 (+30d) | 2010-06-14 → 2010-07-16 (+32d) | 1d? → 3d | 2d → 80d | constraint none → start no earlier than 2010-07-14; resources none → Programador Jr 1 |
| 23 | Integracion con Stars - Llamada desde Agenda | 2010-06-14 → 2010-07-19 (+35d) | 2010-06-14 → 2010-07-26 (+42d) | 1d? → 6d | 2d → 74d | constraint none → start no earlier than 2010-07-19; resources none → Programador Sr 1 |
| 24 | Asignar pacientes a cita | 2010-06-14 → 2010-07-21 (+37d) | 2010-06-14 → 2010-07-21 (+37d) | 1d? → 1d | 2d → 77d | constraint none → start no earlier than 2010-07-21; resources none → Programador Jr 1 |
| 26 | **(USR03) Rellamada** | 2010-06-15 → 2010-08-16 (+62d) | 2010-06-15 → 2010-08-27 (+73d) | 1d? → 10d | 3d → 56d |  |
| 29 | **(USR04) Consulta** | 2010-06-10 → 2010-06-14 (+4d) | 2010-06-10 → 2010-06-22 (+12d) | 1d? → 7d | 0d → 15d |  |
| 30 | **Tratar Consulta** | 2010-06-10 → 2010-06-14 (+4d) | 2010-06-10 → 2010-06-16 (+6d) | 1d? → 3d | 0d → 19d |  |
| 31 | Ajornar Consulta | 2010-06-10 → 2010-06-16 (+6d) | 2010-06-10 → 2010-06-16 (+6d) | 1d? → 1d | 0d → 19d | constraint none → start no earlier than 2010-06-16; resources none → Programador Jr 2 |
| 32 | Transferir consulta | 2010-06-10 → 2010-06-14 (+4d) | 2010-06-10 → 2010-06-14 (+4d) | 1d? → 1d | 0d → 21d | constraint none → start no earlier than 2010-06-14; resources none → Programador Jr 2 |
| 33 | Modulo Envio de Correo | 2010-06-10 → 2010-06-16 (+6d) | 2010-06-10 → 2010-06-18 (+8d) | 1d? → 3d | 0d → 17d | constraint none → start no earlier than 2010-06-16; resources none → Programador Jr 1 |
| 34 | Modulo Envio SMS | 2010-06-10 → 2010-06-17 (+7d) | 2010-06-10 → 2010-06-22 (+12d) | 1d? → 4d | 0d → 15d | constraint none → start no earlier than 2010-06-17; resources none → Programador Sr 1 |
| 35 | Inclusion en Campaña de Seguimiento | 2010-06-10 → 2010-06-21 (+11d) | 2010-06-10 → 2010-06-21 (+11d) | 1d? → 1d | 0d → 16d | constraint none → start no earlier than 2010-06-21; resources none → Programador Jr 2 |
| 37 | **(USR05) Consejo Salud** | 2010-06-14 → 2010-09-07 (+85d) | 2010-06-14 → 2010-09-09 (+87d) | 1d? → 3d | 4d → 47d |  |
| 40 | **(USR06) Gestionar Consulta pendiente** | 2010-06-11 → 2010-08-09 (+59d) | 2010-06-11 → 2010-08-12 (+62d) | 1d? → 4d | 2d → 38d |  |
| 41 | Priorizacion de la Lista de Consultas | 2010-06-11 → 2010-08-09 (+59d) | 2010-06-11 → 2010-08-10 (+60d) | 1d? → 2d | 2d → 39d | constraint none → start no earlier than 2010-08-09; resources none → Programador Jr 1 |
| 43 | **(USR07) Programacion de cita previa** | 2010-06-14 → 2010-08-18 (+65d) | 2010-06-14 → 2010-08-26 (+73d) | 1d? → 7d | 4d → 57d |  |
| 44 | Realizar Citación (Interface con Sistema de citación AP) | 2010-06-14 → 2010-08-18 (+65d) | 2010-06-14 → 2010-08-20 (+67d) | 1d? → 3d | 4d → 60d | constraint none → start no earlier than 2010-08-18; resources none → Prog SSr 1 |
| 46 | **(USR08) Gestiones sobre la TSI** | 2010-06-14 → 2010-08-18 (+65d) | 2010-06-14 → 2010-09-03 (+81d) | 1d? → 13d | 3d → -31d |  |
| 47 | Verificacion Documentacion Necesaria | 2010-06-14 → 2010-08-25 (+72d) | 2010-06-14 → 2010-08-25 (+72d) | 1d? → 1d | 3d → -25d | constraint none → start no earlier than 2010-08-25; resources none → Programador Jr 1 |
| 48 | Enviar Gestion (Interface con sistema RCA) | 2010-06-14 → 2010-09-01 (+79d) | 2010-06-14 → 2010-09-02 (+80d) | 1d? → 2d | 3d → -31d | constraint none → start no earlier than 2010-09-01; resources none → Programador Jr 1 |
| 49 | Cierre automatico de la consulta por paso de tiempo | 2010-06-14 → 2010-08-19 (+66d) | 2010-06-14 → 2010-08-20 (+67d) | 1d? → 2d | 3d → -22d | constraint none → start no earlier than 2010-08-19; resources none → Programador Jr 1 |
| 50 | Guardar LOG gestion TSI | 2010-06-14 → 2010-08-18 (+65d) | 2010-06-14 → 2010-08-18 (+65d) | 1d? → 1d | 3d → -20d | was named Guardar LOG gestion TSI?????; constraint none → start no earlier than 2010-08-18; resources none → Programador Jr 2 |
| 52 | **(USR09) Servicio de traduccion** | 2010-06-14 → 2010-08-11 (+58d) | 2010-06-14 → 2010-08-31 (+78d) | 1d? → 15d | 4d → 54d |  |
| 53 | Contactar Servicio Externo de Traduccion | 2010-06-14 → 2010-08-23 (+70d) | 2010-06-14 → 2010-08-26 (+73d) | 1d? → 4d | 4d → 55d | constraint none → start no earlier than 2010-08-23; resources none → Prog SSr 1 |
| 54 | Enlace Comunicacion Multiconferencia | 2010-06-14 → 2010-08-11 (+58d) | 2010-06-14 → 2010-08-16 (+63d) | 1d? → 4d | 4d → 63d | constraint none → start no earlier than 2010-08-10; resources none → Programador Sr 2 |
| 55 | Modulo monitorización de servicio | 2010-06-14 → 2010-08-17 (+64d) | 2010-06-14 → 2010-08-20 (+67d) | 1d? → 4d | 4d → 59d | constraint none → start no earlier than 2010-08-17; resources none → Programador Sr 2 |
| 57 | **(USR10) Informacion Sanitaria General** | 2010-06-16 → 2010-09-15 (+91d) | 2010-06-16 → 2010-09-16 (+92d) | 1d? → 2d | 2d → 42d |  |
| 58 | Guardar Informacion Ciudadano | 2010-06-16 → 2010-09-15 (+91d) | 2010-06-16 → 2010-09-15 (+91d) | 1d? → 1d | 2d → 42d | constraint none → start no earlier than 2010-09-07; resources none → Programador Jr 2 |
| 60 | **(USR11) Seguimiento de Patologias** | 2010-06-15 → 2010-08-13 (+59d) | 2010-06-15 → 2010-09-07 (+84d) | 1d? → 18d | 2d → 49d |  |
| 61 | Buscar Campañas Abiertas | 2010-06-15 → 2010-08-16 (+62d) | 2010-06-15 → 2010-08-17 (+63d) | 1d? → 2d | 2d → 62d | constraint none → start no earlier than 2010-08-16; resources none → Programador Jr 2 |
| 62 | **Gestionar Seguimiento** | 2010-06-15 → 2010-08-13 (+59d) | 2010-06-15 → 2010-08-25 (+71d) | 1d? → 9d | 2d → 56d |  |
| 63 | Visualizar Historial Pacientes | 2010-06-15 → 2010-08-13 (+59d) | 2010-06-15 → 2010-08-13 (+59d) | 1d? → 1d | 2d → 64d | constraint none → start no earlier than 2010-08-13; resources none → Prog SSr 1 |
| 64 | Llamada al Paciente | 2010-06-15 → 2010-08-24 (+70d) | 2010-06-15 → 2010-08-25 (+71d) | 1d? → 2d | 2d → 56d | constraint none → start no earlier than 2010-08-24; resources none → Programador Jr 2 |
| 65 | Desligar paciente de campaña | 2010-06-15 → 2010-08-27 (+73d) | 2010-06-15 → 2010-08-27 (+73d) | 1d? → 1d | 2d → 54d | constraint none → start no earlier than 2010-08-27; resources none → Prog SSr 1 |
| 67 | **(USR12) Encuestas** | 2010-06-04 → 2010-07-07 (+33d) | 2010-06-04 → 2010-08-02 (+59d) | 1d? → 19d | 9d → 64d |  |
| 68 | Interfaz de Encuestas | 2010-06-04 → 2010-07-26 (+52d) | 2010-06-04 → 2010-07-28 (+54d) | 1d? → 3d | 9d → 76d | constraint none → start no earlier than 2010-07-26; resources none → Programador Jr 2 |
| 69 | Contacto con Encuestado | 2010-06-04 → 2010-07-09 (+35d) | 2010-06-04 → 2010-07-12 (+38d) | 1d? → 2d | 9d → 88d | constraint none → start no earlier than 2010-07-09; resources none → Programador Sr 2 |
| 70 | ABM Formulario De Encuesta | 2010-06-04 → 2010-07-07 (+33d) | 2010-06-04 → 2010-07-08 (+34d) | 1d? → 2d | 9d → 64d | constraint none → start no earlier than 2010-07-06; resources none → Programador Jr 2 |
| 72 | **(USR13) Buscar Consultas** | 2010-06-14 → 2010-07-22 (+38d) | 2010-06-14 → 2010-08-09 (+56d) | 1d? → 13d | 3d → 67d |  |
| 73 | **Operativo de Busqueda** | 2010-06-14 → 2010-07-22 (+38d) | 2010-06-14 → 2010-08-09 (+56d) | 1d? → 13d | 3d → 67d |  |
| 74 | Buscar según distintos criterios | 2010-06-14 → 2010-08-04 (+51d) | 2010-06-14 → 2010-08-06 (+53d) | 1d? → 3d | 3d → 67d | constraint none → start no earlier than 2010-08-04; resources none → Programador Jr 2 |
| 75 | Filtrar resultados de la busqueda según permisos del usuario | 2010-06-14 → 2010-07-30 (+46d) | 2010-06-14 → 2010-07-30 (+46d) | 1d? → 1d | 3d → 72d | constraint none → start no earlier than 2010-07-30; resources none → Programador Jr 2 |
| 76 | Acotar resultados si los mismos sobrepasan el parametro configurable "n" | 2010-06-14 → 2010-07-22 (+38d) | 2010-06-14 → 2010-07-22 (+38d) | 1d? → 1d | 3d → 78d | constraint none → start no earlier than 2010-07-22; resources none → Programador Jr 2 |
| 78 | **(USR14) Hacer Uso de Documentos** | 2010-06-11 → 2010-07-26 (+45d) | 2010-06-11 → 2010-08-23 (+73d) | 1d? → 21d | 0d → 34d |  |
| 79 | Creación y uso de Guias Interrogatorio | 2010-06-11 → 2010-08-11 (+61d) | 2010-06-11 → 2010-08-12 (+62d) | 1d? → 2d | 0d → 41d | constraint none → start no earlier than 2010-08-11; resources none → Programador Jr 1 |
| 80 | Creación y uso Fichas Tematicas | 2010-06-11 → 2010-08-13 (+63d) | 2010-06-11 → 2010-08-16 (+66d) | 1d? → 2d | 0d → 37d | constraint none → start no earlier than 2010-08-13; resources none → Programador Jr 1 |
| 81 | Creación y uso de Recursos | 2010-06-11 → 2010-07-26 (+45d) | 2010-06-11 → 2010-07-27 (+46d) | 1d? → 2d | 0d → 51d | constraint none → start no earlier than 2010-07-26; resources none → Programador Jr 1 |
| 82 | Búsqueda y selección de documentos | 2010-06-11 → 2010-08-02 (+52d) | 2010-06-11 → 2010-08-03 (+53d) | 1d? → 2d | 0d → 46d | constraint none → start no earlier than 2010-08-02; resources none → Programador Jr 1 |
| 83 | Apertura documentos | 2010-06-11 → 2010-08-04 (+54d) | 2010-06-11 → 2010-08-05 (+55d) | 1d? → 2d | 0d → 44d | constraint none → start no earlier than 2010-08-04; resources none → Programador Jr 1 |
| 85 | **(USR15) Cerrar consulta y dar respuesta al ciudadano** | 2010-06-11 → 2010-07-05 (+24d) | 2010-06-11 → 2010-08-10 (+60d) | 1d? → 27d | 3d → -16d |  |
| 86 | Clasificar Finalizacion de Consulta | 2010-06-11 → 2010-07-05 (+24d) | 2010-06-11 → 2010-07-06 (+25d) | 1d? → 2d | 3d → 8d | constraint none → start no earlier than 2010-07-05; resources none → Programador Jr 2 |
| 87 | Adición de motivo de cierre a la consulta | 2010-06-11 → 2010-07-23 (+42d) | 2010-06-11 → 2010-07-23 (+42d) | 1d? → 1d | 3d → -5d | constraint none → start no earlier than 2010-07-23; resources none → Programador Jr 2 |
| 88 | Creación de clasificaciones ad-hoc | 2010-06-11 → 2010-07-29 (+48d) | 2010-06-11 → 2010-07-29 (+48d) | 1d? → 1d | 3d → -9d | constraint none → start no earlier than 2010-07-29; resources none → Programador Jr 2 |

| ID | Task | Start | Finish | Duration | Total float | Other |
| --- | --- | --- | --- | --- | --- | --- |
| 90 | **(USR16) Visualizar Consulta** | 2010-06-11 → 2010-07-02 (+21d) | 2010-06-11 → 2010-07-12 (+31d) | 1d? → 7d | 2d → 78d |  |
| 91 | Mostrar datos generales de la consulta | 2010-06-11 → 2010-07-06 (+25d) | 2010-06-11 → 2010-07-07 (+26d) | 1d? → 2d | 2d → 80d | constraint none → start no earlier than 2010-06-30; resources none → Programador Jr 1 |
| 92 | Mostrar datos según el documento elegido | 2010-06-11 → 2010-07-02 (+21d) | 2010-06-11 → 2010-07-05 (+24d) | 1d? → 2d | 2d → 82d | constraint none → start no earlier than 2010-07-02; resources none → Programador Jr 1 |
| 94 | **(USR17) Crear/Transferir Consulta** | 2010-06-11 → 2010-06-25 (+14d) | 2010-06-11 → 2010-08-16 (+66d) | 1d? → 37d | 2d → -20d |  |
| 95 | Crear Consulta | 2010-06-11 → 2010-06-28 (+17d) | 2010-06-11 → 2010-06-29 (+18d) | 1d? → 2d | 2d → 12d | constraint none → start no earlier than 2010-06-28; resources none → Programador Jr 1 |
| 96 | Copiar consulta | 2010-06-11 → 2010-06-25 (+14d) | 2010-06-11 → 2010-06-28 (+17d) | 1d? → 2d | 2d → 13d | constraint none → start no earlier than 2010-06-25; resources none → Programador Jr 2 |
| 97 | **Transferir Consulta** | 2010-06-11 → 2010-08-06 (+56d) | 2010-06-11 → 2010-08-06 (+56d) | 1d? → 1d | 2d → -16d |  |
| 98 | Localizar a otro operador del mismo perfil | 2010-06-11 → 2010-08-06 (+56d) | 2010-06-11 → 2010-08-06 (+56d) | 1d? → 1d | 2d → -16d | constraint none → start no earlier than 2010-08-06; resources none → Programador Jr 1 |
| 100 | **(ADM01) Mantenimiento del Entorno, clasif y prioridades** | 2010-06-03 → 2010-06-07 (+4d) | 2010-06-03 → 2010-08-25 (+83d) | 1d? → 58d | 9d → -24d |  |
| 101 | Módulo de edición de parametros grales de la aplicación | 2010-06-03 → 2010-08-05 (+63d) | 2010-06-03 → 2010-08-10 (+68d) | 1d? → 4d | 9d → -15d | constraint none → start no earlier than 2010-08-05; resources none → Programador Sr 1 |
| 102 | Módulo edición listas de clasificaciones (Códigos internos) | 2010-06-03 → 2010-08-16 (+74d) | 2010-06-03 → 2010-08-18 (+76d) | 1d? → 3d | 9d → -21d | constraint none → start no earlier than 2010-08-16; resources none → Programador Sr 1 |
| 103 | **Módulo mantenimiento de la lista de espera** | 2010-06-03 → 2010-06-09 (+6d) | 2010-06-03 → 2010-06-10 (+7d) | 1d? → 2d | 9d → 28d |  |
| 104 | ABM de la lista de espera | 2010-06-03 → 2010-06-09 (+6d) | 2010-06-03 → 2010-06-10 (+7d) | 1d? → 2d | 9d → 28d | constraint none → start no earlier than 2010-06-09; resources none → Programador Jr 1 |
| 105 | Módulo de gestión de prioridades sobre la lista de espera | 2010-06-03 → 2010-06-09 (+6d) | 2010-06-03 → 2010-06-10 (+7d) | 1d? → 2d | 9d → 28d | constraint none → start no earlier than 2010-06-09; resources none → Prog SSr 1 |
| 106 | **Módulo mantenimiento de lineas de servicio** | 2010-06-03 → 2010-06-07 (+4d) | 2010-06-03 → 2010-06-08 (+5d) | 1d? → 2d | 9d → 30d |  |
| 107 | ABM lineas de servicio | 2010-06-03 → 2010-06-07 (+4d) | 2010-06-03 → 2010-06-08 (+5d) | 1d? → 2d | 9d → 30d | resources none → Programador Jr 2 |
| 108 | ABM servicios para una linea seleccionada | 2010-06-03 → 2010-06-07 (+4d) | 2010-06-03 → 2010-06-08 (+5d) | 1d? → 2d | 9d → 30d | constraint none → start no earlier than 2010-06-07; resources none → Programador Jr 1 |
| 109 | **Módulo mantenimiento agendas** | 2010-06-03 → 2010-06-09 (+6d) | 2010-06-03 → 2010-07-01 (+28d) | 1d? → 17d | 9d → 13d |  |
| 110 | Asignar operadores a agenda | 2010-06-03 → 2010-06-11 (+8d) | 2010-06-03 → 2010-06-11 (+8d) | 1d? → 1d | 9d → 27d | constraint none → start no earlier than 2010-06-11; resources none → Programador Jr 2 |
| 111 | ABM de usuarios de la agenda | 2010-06-03 → 2010-06-30 (+27d) | 2010-06-03 → 2010-07-01 (+28d) | 1d? → 2d | 9d → 13d | constraint none → start no earlier than 2010-06-30; resources none → Programador Jr 1 |
| 112 | ABM citas de la agenda | 2010-06-03 → 2010-06-09 (+6d) | 2010-06-03 → 2010-06-10 (+7d) | 1d? → 2d | 9d → 28d | constraint none → start no earlier than 2010-06-09; resources none → Programador Jr 2 |
| 113 | **Módulo mantenimiento BBDD** | 2010-06-03 → 2010-08-11 (+69d) | 2010-06-03 → 2010-08-13 (+71d) | 1d? → 3d | 9d → -18d |  |
| 114 | Módulo comprobación de formato de archivo | 2010-06-03 → 2010-08-11 (+69d) | 2010-06-03 → 2010-08-11 (+69d) | 1d? → 1d | 9d → -16d | constraint none → start no earlier than 2010-08-11; resources none → Programador Sr 1 |
| 115 | Módulo actualización de BBDD | 2010-06-03 → 2010-08-12 (+70d) | 2010-06-03 → 2010-08-13 (+71d) | 1d? → 2d | 9d → -18d | constraint none → start no earlier than 2010-08-12; resources none → Programador Sr 1 |
| 117 | **(ADM02) Extraccion de estadisticas y listados** | 2010-06-04 → 2010-08-27 (+84d) | 2010-06-04 → 2010-09-13 (+101d) | 1d? → 12d | 9d → 20d |  |
| 118 | Listados De Administración | 2010-06-04 → 2010-09-06 (+94d) | 2010-06-04 → 2010-09-07 (+95d) | 1d? → 2d | 9d → 23d | constraint none → start no earlier than 2010-09-06; resources none → Programador Sr 1 |
| 119 | **Listados Comunes** | 2010-06-04 → 2010-08-27 (+84d) | 2010-06-04 → 2010-09-10 (+98d) | 1d? → 11d | 9d → 20d |  |
| 120 | Detalle de estado de finalización consulta/acción | 2010-06-04 → 2010-09-02 (+90d) | 2010-06-04 → 2010-09-02 (+90d) | 1d? → 1d | 9d → 26d | constraint none → start no earlier than 2010-09-02; resources none → Programador Jr 2 |
| 121 | Listado de clasificaciones | 2010-06-04 → 2010-09-01 (+89d) | 2010-06-04 → 2010-09-01 (+89d) | 1d? → 1d | 9d → 27d | constraint none → start no earlier than 2010-09-01; resources none → Prog SSr 1 |
| 122 | Listados de incidencias en las comunicaciones | 2010-06-04 → 2010-09-03 (+91d) | 2010-06-04 → 2010-09-03 (+91d) | 1d? → 1d | 9d → 25d | constraint none → start no earlier than 2010-09-03; resources none → Programador Jr 2 |
| 123 | Ratios por usuario | 2010-06-04 → 2010-09-09 (+97d) | 2010-06-04 → 2010-09-10 (+98d) | 1d? → 2d | 9d → 20d | constraint none → start no earlier than 2010-09-09; resources none → Prog SSr 1 |
| 124 | Finales de servicio | 2010-06-04 → 2010-08-27 (+84d) | 2010-06-04 → 2010-08-27 (+84d) | 1d? → 1d | 9d → 30d | constraint none → start no earlier than 2010-08-27; resources none → Programador Jr 1 |
| 126 | **(ADM03) Mantenimiento de documentos** | 2010-06-16 → 2010-09-01 (+77d) | 2010-06-17 → 2010-09-15 (+90d) | 2d? → 11d | 0d → 41d |  |
| 127 | Creación y edición de documentos | 2010-06-17 → 2010-09-13 (+88d) | 2010-06-17 → 2010-09-14 (+89d) | 1d? → 2d | 0d → 42d | constraint none → start no earlier than 2010-09-13; resources none → Programador Jr 2 |
| 128 | Borrado de documentos | 2010-06-16 → 2010-09-03 (+79d) | 2010-06-16 → 2010-09-03 (+79d) | 1d? → 1d | 1d → 49d | constraint none → start no earlier than 2010-09-03; resources none → Programador Jr 1 |
| 129 | Clasificación de documentos | 2010-06-16 → 2010-09-01 (+77d) | 2010-06-16 → 2010-09-01 (+77d) | 1d? → 1d | 1d → 51d | constraint none → start no earlier than 2010-08-31; resources none → Programador Jr 2 |
| 130 | Búsqueda de documentos | 2010-06-16 → 2010-09-14 (+90d) | 2010-06-16 → 2010-09-15 (+91d) | 1d? → 2d | 1d → 41d | constraint none → start no earlier than 2010-09-14; resources none → Programador Jr 1 |
| 131 | (ADM04) Mantenimiento de Recursos | 2010-06-14 → 2010-08-24 (+71d) | 2010-06-14 → 2010-08-26 (+73d) | 1d? → 3d | 0d → 49d | constraint none → start no earlier than 2010-08-02; resources none → Programador Sr 2 |
| 132 | (ADM05) Mantenimiento de guias de interrogatorio | 2010-06-16 → 2010-09-02 (+78d) | 2010-06-16 → 2010-09-06 (+82d) | 1d? → 3d | 0d → 46d | constraint none → start no earlier than 2010-09-02; resources none → Prog SSr 1 |
| 133 | (ADM06) Mantenimiento de Fichas tematicas | 2010-06-16 → 2010-09-08 (+84d) | 2010-06-16 → 2010-09-10 (+86d) | 1d? → 3d | 0d → 42d | constraint none → start no earlier than 2010-09-08; resources none → Programador Sr 1 |
| 134 | **(ADM07) Mantenimiento de relaciones sobre guias de interrogatorio y fichas tematicas** | 2010-06-15 → 2010-08-30 (+76d) | 2010-06-15 → 2010-08-31 (+77d) | 1d? → 2d | 0d → 47d |  |
| 135 | Adición de documentos a fichas temáticas | 2010-06-15 → 2010-08-31 (+77d) | 2010-06-15 → 2010-08-31 (+77d) | 1d? → 1d | 0d → 47d | constraint none → start no earlier than 2010-08-31; resources none → Programador Jr 2 |
| 136 | Adición de documentos a guias de interrogatorio | 2010-06-15 → 2010-08-30 (+76d) | 2010-06-15 → 2010-08-30 (+76d) | 1d? → 1d | 0d → 48d | constraint none → start no earlier than 2010-08-30; resources none → Prog SSr 1 |
| 137 | **(ADM08) Mantenimiento de encuestas** | 2010-06-04 → 2010-07-09 (+35d) | 2010-06-04 → 2010-07-23 (+49d) | 1d? → 11d | 10d → 81d |  |
| 138 | **Mantenimiento Indice de Encuestas** | 2010-06-04 → 2010-07-14 (+40d) | 2010-06-04 → 2010-07-20 (+46d) | 1d? → 5d | 10d → 84d |  |
| 139 | Mantener Ediciones | 2010-06-04 → 2010-07-19 (+45d) | 2010-06-04 → 2010-07-20 (+46d) | 1d? → 2d | 10d → 84d | constraint none → start no earlier than 2010-07-19; resources none → Programador Jr 2 |
| 140 | Cierre de ediciones | 2010-06-04 → 2010-07-14 (+40d) | 2010-06-04 → 2010-07-14 (+40d) | 1d? → 1d | 10d → 88d | constraint none → start no earlier than 2010-07-14; resources none → Programador Jr 2 |
| 141 | Asignación de formulario a encuesta | 2010-06-04 → 2010-07-22 (+48d) | 2010-06-04 → 2010-07-22 (+48d) | 1d? → 1d | 10d → 82d | constraint none → start no earlier than 2010-07-22; resources none → Programador Jr 1 |
| 142 | Asignación de operadores a encuesta | 2010-06-04 → 2010-07-09 (+35d) | 2010-06-04 → 2010-07-09 (+35d) | 1d? → 1d | 10d → 91d | constraint none → start no earlier than 2010-07-09; resources none → Programador Jr 2 |
| 143 | **Asignación lista de encuestados** | 2010-06-04 → 2010-07-12 (+38d) | 2010-06-04 → 2010-07-23 (+49d) | 1d? → 10d | 10d → 81d |  |
| 144 | Alta, baja de encuestados | 2010-06-04 → 2010-07-12 (+38d) | 2010-06-04 → 2010-07-13 (+39d) | 1d? → 2d | 10d → 89d | constraint none → start no earlier than 2010-07-12; resources none → Programador Jr 2 |
| 145 | Asignación automática en base a un archivo de texto | 2010-06-04 → 2010-07-23 (+49d) | 2010-06-04 → 2010-07-23 (+49d) | 1d? → 1d | 10d → 81d | constraint none → start no earlier than 2010-07-23; resources none → Programador Jr 1 |
| 146 | Publicar Encuestas | 2010-06-04 → 2010-07-15 (+41d) | 2010-06-04 → 2010-07-16 (+42d) | 1d? → 2d | 10d → 86d | constraint none → start no earlier than 2010-07-15; resources none → Programador Jr 2 |
| 147 | **(ADM09) Mantenimiento de seguimiento de patologias** | 2010-06-04 → 2010-08-26 (+83d) | 2010-06-04 → 2010-09-01 (+89d) | 1d? → 5d | 9d → 48d |  |
| 148 | Mantenimiento Indice de campañas de seguimiento | 2010-06-04 → 2010-08-30 (+87d) | 2010-06-04 → 2010-09-01 (+89d) | 1d? → 3d | 9d → 48d | constraint none → start no earlier than 2010-08-30; resources none → Programador Sr 2 |
| 149 | Asignación de formulario a campaña de seguimiento | 2010-06-04 → 2010-08-30 (+87d) | 2010-06-04 → 2010-08-30 (+87d) | 1d? → 1d | 9d → 50d | constraint none → start no earlier than 2010-08-30; resources none → Programador Jr 1 |
| 150 | Asignación de operadores a campaña de seguimiento | 2010-06-04 → 2010-08-31 (+88d) | 2010-06-04 → 2010-08-31 (+88d) | 1d? → 1d | 9d → 49d | constraint none → start no earlier than 2010-08-31; resources none → Programador Jr 1 |
| 151 | Asignación de listas de pacientes | 2010-06-04 → 2010-08-31 (+88d) | 2010-06-04 → 2010-08-31 (+88d) | 1d? → 1d | 9d → 49d | constraint none → start no earlier than 2010-08-31; resources none → Prog SSr 1 |
| 152 | Activación/ Desactivación de campañas | 2010-06-04 → 2010-08-26 (+83d) | 2010-06-04 → 2010-08-27 (+84d) | 1d? → 2d | 9d → 51d | constraint none → start no earlier than 2010-08-17; resources none → Programador Jr 2 |
| 154 | **(ADM10) Creacion de formularios de encuesta y seguimiento** | 2010-06-03 → 2010-06-07 (+4d) | 2010-06-03 → 2010-07-06 (+33d) | 1d? → 22d | 9d → 64d |  |
| 155 | Mantener Indice de Encuesta | 2010-06-03 → 2010-07-01 (+28d) | 2010-06-03 → 2010-07-05 (+32d) | 1d? → 3d | 9d → 64d | constraint none → start no earlier than 2010-07-01; resources none → Programador Sr 1 |
| 156 | Crear y Editar Encuestas | 2010-06-03 → 2010-06-07 (+4d) | 2010-06-03 → 2010-06-08 (+5d) | 1d? → 2d | 9d → 83d | resources none → Prog SSr 1 |
| 158 | **(ADM11) Mantenimiento de usuarios, perfiles y permisos** | 2010-06-10 → 2010-06-17 (+7d) | 2010-06-10 → 2010-07-09 (+29d) | 1d? → 17d | 5d → 65d |  |
| 159 | Mantenimiento Opciones Funcionales | 2010-06-10 → 2010-06-17 (+7d) | 2010-06-10 → 2010-06-18 (+8d) | 1d? → 2d | 5d → 80d | constraint none → start no earlier than 2010-06-17; resources none → Programador Sr 2 |
| 160 | **Mantener Perfiles Trabajo** | 2010-06-10 → 2010-06-17 (+7d) | 2010-06-10 → 2010-07-02 (+22d) | 1d? → 12d | 5d → 70d |  |
| 161 | Alta, modificación de perfiles | 2010-06-10 → 2010-06-22 (+12d) | 2010-06-10 → 2010-06-23 (+13d) | 1d? → 2d | 5d → 77d | constraint none → start no earlier than 2010-06-22; resources none → Programador Jr 1 |
| 162 | ABM de opciones funcionales a perfil | 2010-06-10 → 2010-06-17 (+7d) | 2010-06-10 → 2010-06-18 (+8d) | 1d? → 2d | 5d → 80d | constraint none → start no earlier than 2010-06-17; resources none → Programador Jr 2 |
| 163 | Adición de responsabilidades a opciones funcionales | 2010-06-10 → 2010-07-02 (+22d) | 2010-06-10 → 2010-07-02 (+22d) | 1d? → 1d | 5d → 70d | constraint none → start no earlier than 2010-07-02; resources none → Programador Jr 2 |
| 164 | **Mantener Usuarios** | 2010-06-10 → 2010-06-21 (+11d) | 2010-06-10 → 2010-07-09 (+29d) | 1d? → 15d | 5d → 65d |  |
| 165 | Creación/gestion de usuarios | 2010-06-10 → 2010-06-21 (+11d) | 2010-06-10 → 2010-06-21 (+11d) | 1d? → 1d | 5d → 79d | constraint none → start no earlier than 2010-06-21; resources none → Programador Jr 1 |

| ID | Task | Start | Finish | Duration | Total float | Predecessors | Other |
| --- | --- | --- | --- | --- | --- | --- | --- |
| 166 | Asiganción de perfil a usuario | 2010-06-10 → 2010-06-22 (+12d) | 2010-06-10 → 2010-06-22 (+12d) | 1d? → 1d | 5d → 78d |  | constraint none → start no earlier than 2010-06-22; resources none → Programador Jr 2 |
| 167 | Asignación de agendas a usuario | 2010-06-10 → 2010-07-08 (+28d) | 2010-06-10 → 2010-07-09 (+29d) | 1d? → 2d | 5d → 65d |  | constraint none → start no earlier than 2010-07-08; resources none → Programador Jr 1 |
| 169 | **(ADM12) Listado de acciones proactivas** | 2010-06-07 → 2010-09-14 (+99d) | 2010-06-07 → 2010-10-05 (+120d) | 1d? → 16d | 9d → 29d |  |  |
| 170 | Módulo de elaboraciónde informes de estado de campaña de seguimiento | 2010-06-07 → 2010-09-14 (+99d) | 2010-06-07 → 2010-09-16 (+101d) | 1d? → 3d | 9d → 40d |  | constraint none → start no earlier than 2010-09-13; resources none → Programador Sr 1 |
| 171 | Módulo de elaboración de informes de estado de encuesta | 2010-06-07 → 2010-09-22 (+107d) | 2010-06-07 → 2010-09-24 (+109d) | 1d? → 3d | 9d → 34d |  | constraint none → start no earlier than 2010-09-22; resources none → Programador Sr 2 |
| 172 | Módulo de elaboración de informes de ediciones de encuestas | 2010-06-07 → 2010-09-17 (+102d) | 2010-06-07 → 2010-09-21 (+106d) | 1d? → 3d | 9d → 37d |  | constraint none → start no earlier than 2010-09-17; resources none → Programador Sr 1 |
| 173 | Módulo de elaboración de listados de campañas de seguimiento | 2010-06-07 → 2010-09-27 (+112d) | 2010-06-07 → 2010-09-29 (+114d) | 1d? → 3d | 9d → 31d |  | constraint none → start no earlier than 2010-09-27; resources none → Programador Sr 2 |
| 174 | Módulo de elaboración de listados de información de encuestas | 2010-06-07 → 2010-09-22 (+107d) | 2010-06-07 → 2010-09-24 (+109d) | 1d? → 3d | 9d → 34d |  | constraint none → start no earlier than 2010-09-22; resources none → Programador Sr 1 |
| 176 | **(ADM13) Listados de documentos** | 2010-06-18 → 2010-09-16 (+90d) | 2010-06-18 → 2010-09-24 (+98d) | 1d? → 7d | 0d → 36d |  |  |
| 177 | Elaboración de listado de configuración | 2010-06-18 → 2010-09-23 (+97d) | 2010-06-18 → 2010-09-23 (+97d) | 1d? → 1d | 0d → 36d |  | constraint none → start no earlier than 2010-09-23; resources none → Programador Jr 1 |
| 178 | Elaboración de listado de uso | 2010-06-18 → 2010-09-16 (+90d) | 2010-06-18 → 2010-09-16 (+90d) | 1d? → 1d | 0d → 41d |  | constraint none → start no earlier than 2010-09-06; resources none → Programador Jr 2 |
| 179 | Elaboración de listado de asociaciones | 2010-06-18 → 2010-09-17 (+91d) | 2010-06-18 → 2010-09-17 (+91d) | 1d? → 1d | 0d → 40d |  | constraint none → start no earlier than 2010-09-17; resources none → Programador Jr 2 |
| 181 | **(ADM14) Listado sobre consultas** | 2010-06-11 → 2010-09-14 (+95d) | 2010-06-11 → 2010-10-12 (+123d) | 1d? → 21d | 5d → 24d |  |  |
| 182 | Módulo de obtención de listados de consulta por ciudadano | 2010-06-11 → 2010-09-14 (+95d) | 2010-06-11 → 2010-09-16 (+97d) | 1d? → 3d | 5d → 39d |  | constraint none → start no earlier than 2010-09-13; resources none → Prog SSr 1 |
| 183 | Módulo de obtención de listados de consultas con cierre principal | 2010-06-11 → 2010-09-30 (+111d) | 2010-06-11 → 2010-10-04 (+115d) | 1d? → 3d | 5d → 27d |  | constraint none → start no earlier than 2010-09-30; resources none → Programador Sr 2 |
| 184 | Módulo de obtención de listados de consulta con cierre secundario | 2010-06-11 → 2010-09-30 (+111d) | 2010-06-11 → 2010-10-04 (+115d) | 1d? → 3d | 5d → 27d |  | constraint none → start no earlier than 2010-09-30; resources none → Programador Sr 1 |
| 185 | Módulo de obtención de listados de consulta por motivo de cierre | 2010-06-11 → 2010-09-17 (+98d) | 2010-06-11 → 2010-09-21 (+102d) | 1d? → 3d | 5d → 36d |  | constraint none → start no earlier than 2010-09-17; resources none → Prog SSr 1 |
| 186 | Módulo de obtención de listado de resumen de consultas por servicio | 2010-06-11 → 2010-09-14 (+95d) | 2010-06-11 → 2010-09-16 (+97d) | 1d? → 3d | 5d → 39d |  | constraint none → start no earlier than 2010-09-13; resources none → Programador Sr 2 |
| 187 | Módulo de obtención de listado de consultas por área geográfica | 2010-06-11 → 2010-10-05 (+116d) | 2010-06-11 → 2010-10-07 (+118d) | 1d? → 3d | 5d → 24d |  | constraint none → start no earlier than 2010-10-05; resources none → Programador Sr 2 |
| 188 | Módulo de obtención de listado de consultas por usuario | 2010-06-11 → 2010-09-27 (+108d) | 2010-06-11 → 2010-09-29 (+110d) | 1d? → 3d | 5d → 30d |  | constraint none → start no earlier than 2010-09-27; resources none → Programador Sr 1 |
| 189 | Módulo de obtención de listado de consultas pendientes | 2010-06-11 → 2010-09-17 (+98d) | 2010-06-11 → 2010-09-21 (+102d) | 1d? → 3d | 5d → 36d |  | constraint none → start no earlier than 2010-09-17; resources none → Programador Sr 2 |
| 191 | **(ADM15) Mantener Asignaciones TSI** | 2010-06-15 → 2010-07-23 (+38d) | 2010-06-15 → 2010-09-20 (+97d) | 1d? → 42d? | 3d → 0d |  |  |
| 192 | **Módulo de envío de datos a CatSalut** | 2010-06-15 → 2010-07-23 (+38d) | 2010-06-15 → 2010-09-10 (+87d) | 1d? → 36d? | 3d → 0d |  |  |
| 194 | Recolección de datos de operaciones TSI pendientes | 2010-06-15 → 2010-09-06 (+83d) | 2010-06-15 → 2010-09-08 (+85d) | 1d? → 3d | 3d → 46d |  | constraint none → start no earlier than 2010-08-19; resources none → Programador Jr 2 |
| 195 | Migración de los datos a archivo TXT | 2010-06-15 → 2010-09-09 (+86d) | 2010-06-15 → 2010-09-10 (+87d) | 1d? → 2d | 3d → 44d |  | constraint none → start no earlier than 2010-09-09; resources none → Programador Jr 2 |
| 196 | Interface de comunicación con CatSalut | 2010-06-15 → 2010-09-06 (+83d) | 2010-06-15 → 2010-09-10 (+87d) | 1d? → 5d | 3d → 44d |  | constraint none → start no earlier than 2010-08-02; resources none → Programador Sr 2 |
| 198 | **(ADM16) Asignar documentos a acciones** | 2010-06-18 → 2010-09-16 (+90d) | 2010-06-18 → 2010-09-22 (+96d) | 1d? → 5d | 0d → 38d |  |  |
| 199 | Creación/eliminación de asociaciones | 2010-06-18 → 2010-09-20 (+94d) | 2010-06-18 → 2010-09-20 (+94d) | 1d? → 1d | 0d → 39d |  | constraint none → start no earlier than 2010-09-20; resources none → Programador Jr 2 |
| 200 | Caducidad de asociaciones | 2010-06-18 → 2010-09-16 (+90d) | 2010-06-18 → 2010-09-16 (+90d) | 1d? → 1d | 0d → 41d |  | was named Cadicidad de asociaciones; constraint none → start no earlier than 2010-09-16; resources none → Programador Jr 1 |
| 202 | **(INT01) Direcciones de farmacias, CAP y otra informacion breve** | 2010-06-15 → 2010-09-10 (+87d) | 2010-06-15 → 2010-09-14 (+91d) | 1d? → 3d | 2d → 21d |  |  |
| 203 | Trabajo con listas de resultados | 2010-06-15 → 2010-09-10 (+87d) | 2010-06-15 → 2010-09-13 (+90d) | 1d? → 2d | 2d → 21d |  | constraint none → start no earlier than 2010-09-10; resources none → Programador Jr 1 |
| 205 | **(SIS01) Trazabilidad y registro de uso** | 2010-06-10 → 2010-06-21 (+11d) | 2010-06-16 → 2010-08-06 (+51d) | 5d? → 34.5d | 2d → 71d |  |  |
| 206 | Control Acceso a Consultas | 2010-06-11 → 2010-06-23 (+12d) | 2010-06-11 → 2010-06-25 (+14d) | 1d? → 3d | 5d → 99d | 29 → none | constraint none → start no earlier than 2010-06-23; resources none → Programador Sr 1 |
| 207 | Control Acceso a Encuestas | 2010-06-10 → 2010-07-06 (+26d) | 2010-06-10 → 2010-07-08 (+28d) | 1d? → 3d | 6d → 90d | 67 → none | constraint none → start no earlier than 2010-07-06; resources none → Programador Sr 2 |
| 208 | Control General Acceso al Sistema | 2010-06-11 → 2010-06-28 (+17d) | 2010-06-11 → 2010-06-30 (+19d) | 1d? → 3d | 5d → 96d | 158 → none | constraint none → start no earlier than 2010-06-28; resources none → Programador Sr 1 |
| 209 | Control Acceso a Campañas de Seguimiento | 2010-06-16 → 2010-06-21 (+5d) | 2010-06-16 → 2010-06-24 (+8d) | 1d? → 3d | 2d → 100.5d | 60 → none | constraint none → start no earlier than 2010-06-21; resources none → Programador Sr 2 |
| 210 | Control Acceso a Documentos | 2010-06-14 → 2010-07-13 (+29d) | 2010-06-14 → 2010-07-15 (+31d) | 1d? → 3d | 4d → 85d | 78 → none | constraint none → start no earlier than 2010-07-13; resources none → Programador Sr 2 |
| 211 | Control Acceso a Recursos Internos | 2010-06-10 → 2010-06-24 (+14d) | 2010-06-10 → 2010-06-29 (+19d) | 1d? → 3d | 6d → 97.5d |  | constraint none → start no earlier than 2010-06-24; resources none → Programador Sr 2 |
| 212 | Historial de Consultas | 2010-06-10 → 2010-07-27 (+47d) | 2010-06-10 → 2010-07-30 (+50d) | 1d? → 4d | 6d → 74d |  | constraint none → start no earlier than 2010-07-27; resources none → Prog SSr 1 |
| 214 | **(ISC01) Transferir info, comunicacion a STARS** | 2010-06-10 → 2010-06-17 (+7d) | 2010-06-10 → 2010-06-25 (+15d) | 1d? → 7d | 6d → 101d |  |  |
| 215 | Recibir información del sistema de comunicaciones | 2010-06-10 → 2010-06-17 (+7d) | 2010-06-10 → 2010-06-25 (+15d) | 1d? → 7d | 6d → 101d |  | constraint none → start no earlier than 2010-06-17; resources none → Prog SSr 1 |
| 216 | **(ISC02) Iniciar llamada desde STARS** | 2010-06-10 → 2010-07-27 (+47d) | 2010-06-10 → 2010-08-11 (+62d) | 1d? → 12d | 6d → 68d |  |  |
| 217 | Lanzamiento de petición de comunicación | 2010-06-10 → 2010-07-27 (+47d) | 2010-06-10 → 2010-08-04 (+55d) | 1d? → 7d | 6d → 72d |  | constraint none → start no earlier than 2010-07-27; resources none → Programador Sr 1 |
| 219 | **(ISC03) Informacion encuesta** | 2010-06-04 → 2010-07-21 (+47d) | 2010-06-04 → 2010-07-21 (+47d) | 1d? → 1d | 10d → 83d |  |  |
| 220 | Activación actividad de encuesta | 2010-06-04 → 2010-07-21 (+47d) | 2010-06-04 → 2010-07-21 (+47d) | 1d? → 1d | 10d → 83d |  | constraint none → start no earlier than 2010-07-21; resources none → Programador Jr 2 |
| 221 | ABM Consultas | 2010-06-11 → 2010-06-23 (+12d) | 2010-06-11 → 2010-06-24 (+13d) | 1d? → 2d | 5d → 98d |  | constraint none → start no earlier than 2010-06-22; resources none → Programador Jr 2 |
| 222 | ABM Usuarios | 2010-06-11 → 2010-06-24 (+13d) | 2010-06-11 → 2010-06-25 (+14d) | 1d? → 2d | 4d → 97d |  | constraint none → start no earlier than 2010-06-24; resources none → Programador Jr 1 |
| 223 | Proteccion de Acceso | 2010-06-14 → 2010-07-16 (+32d) | 2010-06-14 → 2010-07-20 (+36d) | 1d? → 3d | 4d → 84d |  | constraint none → start no earlier than 2010-07-16; resources none → Programador Sr 2 |
| 224 | ABM Fichas / Guias / Recursos | 2010-06-15 → 2010-09-06 (+83d) | 2010-06-15 → 2010-09-09 (+86d) | 1d? → 4d | 3d → 43d |  | constraint none → start no earlier than 2010-09-06; resources none → Programador Jr 1 |
| 225 | ABM Cuestionarios | 2010-06-04 → 2010-07-12 (+38d) | 2010-06-04 → 2010-07-13 (+39d) | 1d? → 2d | 10d → 85d |  | constraint none → start no earlier than 2010-07-12; resources none → Programador Jr 1 |
| 226 | Interfaz General | 2010-06-10 → 2010-06-28 (+18d) | 2010-06-10 → 2010-07-23 (+43d) | 1d? → 20d | 6d → 63d |  | constraint none → start no earlier than 2010-06-28; resources none → Prog SSr 1 |
| 227 | Interfaz Para Usuario Avanzado | 2010-06-04 → 2010-08-26 (+83d) | 2010-06-04 → 2010-09-03 (+91d) | 1d? → 7d | 10d → 33d |  | constraint none → start no earlier than 2010-08-18; resources none → Programador Sr 1 |
| 228 | Interfaz de Listados para ADM02 | 2010-06-07 → 2010-09-21 (+106d) | 2010-06-07 → 2010-09-29 (+114d) | 1d? → 7d | 9d → 15d |  | constraint none → start no earlier than 2010-09-21; resources none → Programador Jr 2 |
| 229 | Interfaz Mantenimiento Usuarios y Perfiles | 2010-06-11 → 2010-07-21 (+40d) | 2010-06-11 → 2010-07-30 (+49d) | 1d? → 8d | 5d → 58d |  | constraint none → start no earlier than 2010-07-21; resources none → Programador Sr 2 |
| 230 | Interfaz Direcciones INT01 | 2010-06-16 → 2010-09-22 (+98d) | 2010-06-16 → 2010-09-28 (+104d) | 1d? → 5d | 2d → 16d |  | constraint none → start no earlier than 2010-09-22; resources none → Prog SSr 1 |
| 231 | ABM Enfermedades / Centros Salud | 2010-06-16 → 2010-09-20 (+96d) | 2010-06-16 → 2010-09-22 (+98d) | 1d? → 3d | 2d → 34d |  | constraint none → start no earlier than 2010-09-20; resources none → Programador Jr 1 |
| 232 | Listado de Usuarios y Perfiles | 2010-06-11 → 2010-07-28 (+47d) | 2010-06-11 → 2010-07-28 (+47d) | 1d? → 1d | 5d → 78d |  | constraint none → start no earlier than 2010-07-28; resources none → Programador Jr 1 |
| 233 | Interface con sistema de comunicaciones (ISC01, ISC02, ISC03) | 2010-06-10 → 2010-07-06 (+26d) | 2010-06-10 → 2010-07-16 (+36d) | 1d? → 9d | 6d → 68d |  | constraint none → start no earlier than 2010-07-06; resources none → Programador Sr 1 |
| 237 | Arquitectura General / Configuracion Ambientes / Framework | 2010-05-13 → 2010-05-17 (+4d) | 2010-06-02 → 2010-06-04 (+2d) |  | 0d → 18d | 238 → 242 | was named Arquitectura General / Configuracion Ambientes; resources none → Arquitecto / Lider |
| 238 | **Tareas IT Sobre Nuestra Empresa** |  | 2010-05-12 → 2010-11-15 (+187d) | 5d → 138d |  |  |  |
| 239 | Compra Equipos Necesarios |  | 2010-05-10 → 2010-05-07 (-3d) | 3d → 2d | 2d → 134d |  | constraint none → start no earlier than 2010-05-06; resources none → Programador Jr 1; Programador Jr 2 |
| 240 | **Infraestructura** |  | 2010-05-12 → 2010-06-01 (+20d) | 5d → 19d | 0d → 21d |  |  |
| 241 | Preparacion de Ambientes en servidores |  | 2010-05-06 → 2010-05-10 (+4d) | 1d → 3d | 4d → 132d |  | constraint none → start no earlier than 2010-05-06; resources none → IT 1 |
| 242 | Instalacion y Configuracion de Servidor DEV | 2010-05-06 → 2010-05-11 (+5d) | 2010-05-10 → 2010-05-14 (+4d) | 3d → 4d | 2d → 18d |  | constraint none → start no earlier than 2010-05-11; resources none → IT 1 |
| 244 | Instalacion y Configuracion de Servidores de Usos Multiples | 2010-05-06 → 2010-05-17 (+11d) | 2010-05-12 → 2010-05-21 (+9d) |  | 0d → 123d |  | constraint none → start no earlier than 2010-05-17; resources none → IT 1 |
| 245 | **Redes** | 2010-05-06 → 2010-06-02 (+27d) | 2010-05-10 → 2010-06-08 (+29d) | 3d → 5d | 2d → 114d | none → 240 |  |
| 246 | Configuracion del FW | 2010-05-06 → 2010-06-04 (+29d) | 2010-05-10 → 2010-06-08 (+29d) |  | 2d → 114d |  | constraint none → start no earlier than 2010-06-04; resources none → IT 1 |
| 248 | Instalacion de pcs nuevos usuarios | 2010-05-06 → 2010-05-10 (+4d) | 2010-05-12 → 2010-05-11 (-1d) | 5d → 2d | 0d → 134d | none → 239 | constraint none → start no earlier than 2010-05-07; resources none → Programador Jr 1; Programador Jr 2 |

## Version 4 (saved 2010-09-18, file Casos Uso v5 Final.mpp)

Note of the change: CAMBIOS EN LAS FECHAS

Last finish stays 2010-11-15.

Added:

| ID | Task | Duration | Start | Finish | Predecessors | Constraint | Resources |
| --- | --- | --- | --- | --- | --- | --- | --- |
| 238 | Incepcion de la Arquitectura | 5d | 2010-06-07 | 2010-06-11 |  | start no earlier than 2010-06-07 | Arquitecto / Lider |
| 255 | Configurar Clusters | 3d | 2010-09-29 | 2010-10-01 |  | start no earlier than 2010-09-29 | IT 1 |
| 256 | Configurar RAID en NAS | 2d | 2010-10-04 | 2010-10-05 |  | start no earlier than 2010-10-04 | IT 1 |
| 257 | Configurar Esquema Replicado de Backups Web Site y firewall | 3d | 2010-10-06 | 2010-10-08 | 256 |  | IT 1 |

Removed: 251 Instalar y Configurar Load Balancer

Changed:

| ID | Task | Start | Finish | Duration | Total float | Predecessors | Other |
| --- | --- | --- | --- | --- | --- | --- | --- |
| 13 | **(USR01) Determinacion del servicio de atencion** |  | 2010-09-01 → 2010-08-31 (-1d) | 12d → 11d | 27d → 28d |  |  |
| 18 | Testing Servicio Atencion | 2010-09-01 → 2010-08-31 (-1d) | 2010-09-01 → 2010-08-31 (-1d) |  | 27d → 28d |  | constraint start no earlier than 2010-09-01 → start no earlier than 2010-08-31 |
| 26 | **(USR03) Rellamada** |  | 2010-08-27 → 2010-08-26 (-1d) | 10d → 9d | 56d → 57d |  |  |
| 28 | Testing Rellamada | 2010-08-27 → 2010-08-26 (-1d) | 2010-08-27 → 2010-08-26 (-1d) |  | 56d → 57d |  | constraint start no earlier than 2010-08-27 → start no earlier than 2010-08-26 |
| 43 | **(USR07) Programacion de cita previa** |  | 2010-08-26 → 2010-08-23 (-3d) | 7d → 4d | 57d → 60d |  |  |
| 45 | Testing USR07 | 2010-08-26 → 2010-08-23 (-3d) | 2010-08-26 → 2010-08-23 (-3d) |  | 57d → 60d |  | constraint start no earlier than 2010-08-26 → start no earlier than 2010-08-23 |
| 52 | **(USR09) Servicio de traduccion** |  | 2010-08-31 → 2010-08-30 (-1d) | 15d → 14d | 54d → 55d |  |  |
| 56 | Testing | 2010-08-30 → 2010-08-27 (-3d) | 2010-08-31 → 2010-08-30 (-1d) |  | 54d → 55d |  | constraint start no earlier than 2010-08-30 → start no earlier than 2010-08-27 |
| 68 | Interfaz de Encuestas | 2010-07-26 → 2010-07-27 (+1d) | 2010-07-28 → 2010-07-29 (+1d) |  | 76d → 75d |  | constraint start no earlier than 2010-07-26 → start no earlier than 2010-07-27 |
| 72 | **(USR13) Buscar Consultas** | 2010-07-22 → 2010-07-23 (+1d) |  | 13d → 12d |  |  |  |
| 73 | **Operativo de Busqueda** | 2010-07-22 → 2010-07-23 (+1d) |  | 13d → 12d |  |  |  |
| 75 | Filtrar resultados de la busqueda según permisos del usuario | 2010-07-30 → 2010-07-26 (-4d) | 2010-07-30 → 2010-07-26 (-4d) |  | 72d → 76d |  | constraint start no earlier than 2010-07-30 → start no earlier than 2010-07-26; resources Programador Jr 2 → Prog SSr 1 |
| 76 | Acotar resultados si los mismos sobrepasan el parametro configurable "n" | 2010-07-22 → 2010-07-23 (+1d) | 2010-07-22 → 2010-07-23 (+1d) |  | 78d → 77d |  | constraint start no earlier than 2010-07-22 → start no earlier than 2010-07-23 |
| 78 | **(USR14) Hacer Uso de Documentos** |  | 2010-08-23 → 2010-08-20 (-3d) | 21d → 20d | 34d → 35d |  |  |
| 84 | Testing | 2010-08-20 → 2010-08-19 (-1d) | 2010-08-23 → 2010-08-20 (-3d) |  | 34d → 35d |  | constraint start no earlier than 2010-08-20 → start no earlier than 2010-08-19 |
| 87 | Adición de motivo de cierre a la consulta | 2010-07-23 → 2010-07-26 (+3d) | 2010-07-23 → 2010-07-26 (+3d) |  | -5d → 69d |  | constraint start no earlier than 2010-07-23 → start no earlier than 2010-07-26 |
| 88 | Creación de clasificaciones ad-hoc | 2010-07-29 → 2010-07-30 (+1d) | 2010-07-29 → 2010-07-30 (+1d) |  | -9d → 65d |  | constraint start no earlier than 2010-07-29 → start no earlier than 2010-07-30 |
| 94 | **(USR17) Crear/Transferir Consulta** |  | 2010-08-16 → 2010-07-14 (-33d) | 37d → 14d | -20d → 59d |  |  |
| 97 | **Transferir Consulta** | 2010-08-06 → 2010-07-12 (-25d) | 2010-08-06 → 2010-07-12 (-25d) |  | -16d → 59d |  |  |
| 98 | Localizar a otro operador del mismo perfil | 2010-08-06 → 2010-07-12 (-25d) | 2010-08-06 → 2010-07-12 (-25d) |  | -16d → 59d |  | constraint start no earlier than 2010-08-06 → start no earlier than 2010-07-12; resources Programador Jr 1 → Programador Jr 2 |
| 99 | Testing USR17 | 2010-08-13 → 2010-07-13 (-31d) | 2010-08-16 → 2010-07-14 (-33d) |  | -20d → 59d |  | was named Testing; constraint start no earlier than 2010-08-13 → start no earlier than 2010-07-13 |
| 131 | (ADM04) Mantenimiento de Recursos | 2010-08-24 → 2010-08-23 (-1d) | 2010-08-26 → 2010-08-25 (-1d) |  | 49d → 50d |  |  |
| 138 | **Mantenimiento Indice de Encuestas** | 2010-07-14 → 2010-07-19 (+5d) | 2010-07-20 → 2010-07-21 (+1d) | 5d → 3d | 84d → 83d |  |  |
| 140 | Cierre de ediciones | 2010-07-14 → 2010-07-21 (+7d) | 2010-07-14 → 2010-07-21 (+7d) |  | 88d → 83d |  | constraint start no earlier than 2010-07-14 → start no earlier than 2010-07-21 |
| 143 | **Asignación lista de encuestados** | 2010-07-12 → 2010-07-13 (+1d) |  | 10d → 9d |  |  |  |
| 144 | Alta, baja de encuestados | 2010-07-12 → 2010-07-13 (+1d) | 2010-07-13 → 2010-07-14 (+1d) |  | 89d → 88d |  | constraint start no earlier than 2010-07-12 → start no earlier than 2010-07-13 |
| 153 | Testing ADM 3 al 9 | 2010-08-17 → 2010-08-16 (-1d) | 2010-08-19 → 2010-08-18 (-1d) |  | 62d → 63d |  | constraint start no earlier than 2010-08-17 → start no earlier than 2010-08-16 |
| 168 | Testing Mantenimiento Usuarios | 2010-07-13 → 2010-07-15 (+2d) | 2010-07-13 → 2010-07-15 (+2d) |  | 89d → 87d |  | constraint start no earlier than 2010-07-13 → start no earlier than 2010-07-15 |
| 176 | **(ADM13) Listados de documentos** |  | 2010-09-24 → 2010-09-27 (+3d) | 7d → 8d | 36d → 35d |  |  |
| 177 | Elaboración de listado de configuración | 2010-09-23 → 2010-09-24 (+1d) | 2010-09-23 → 2010-09-24 (+1d) |  | 36d → 35d |  | constraint start no earlier than 2010-09-23 → start no earlier than 2010-09-24 |
| 180 | Testing Listado Docs | 2010-09-24 → 2010-09-27 (+3d) | 2010-09-24 → 2010-09-27 (+3d) |  | 36d → 35d |  |  |
| 191 | **(ADM15) Mantener Asignaciones TSI** | 2010-07-23 → 2010-09-06 (+45d) | 2010-09-20 → 2010-09-22 (+2d) | 42d? → 13d | 0d → 38d |  |  |
| 192 | **Módulo de envío de datos a CatSalut** | 2010-07-23 → 2010-09-06 (+45d) | 2010-09-10 → 2010-09-20 (+10d) | 36d? → 11d | 0d → 38d |  |  |
| 193 | Módulo de envío de datos a CatSalut | 2010-07-23 → 2010-09-17 (+56d) | 2010-07-23 → 2010-09-20 (+59d) | 0d? → 2d | -31d → 38d |  | constraint must start on 2010-07-23 → start no earlier than 2010-09-17; resources none → Programador Jr 1 |
| 196 | Interface de comunicación con CatSalut |  |  |  |  |  | constraint start no earlier than 2010-08-02 → start no earlier than 2010-09-02 |
| 197 | Testing TSI | 2010-09-17 → 2010-09-21 (+4d) | 2010-09-20 → 2010-09-22 (+2d) |  | 40d → 38d |  |  |
| 198 | **(ADM16) Asignar documentos a acciones** |  | 2010-09-22 → 2010-09-23 (+1d) | 5d → 6d | 38d → 37d |  |  |
| 201 | Testing Asignacion Docs a Acciones | 2010-09-22 → 2010-09-23 (+1d) | 2010-09-22 → 2010-09-23 (+1d) |  | 38d → 37d |  | constraint start no earlier than 2010-09-22 → start no earlier than 2010-09-23 |
| 219 | **(ISC03) Informacion encuesta** | 2010-07-21 → 2010-07-22 (+1d) | 2010-07-21 → 2010-07-22 (+1d) |  | 83d → 82d |  |  |
| 220 | Activación actividad de encuesta | 2010-07-21 → 2010-07-22 (+1d) | 2010-07-21 → 2010-07-22 (+1d) |  | 83d → 82d |  | constraint start no earlier than 2010-07-21 → start no earlier than 2010-07-22 |
| 231 | ABM Enfermedades / Centros Salud | 2010-09-20 → 2010-09-21 (+1d) | 2010-09-22 → 2010-09-23 (+1d) |  | 34d → 33d |  | constraint start no earlier than 2010-09-20 → start no earlier than 2010-09-21 |
| 234 | Testing ABMs Varios | 2010-09-27 → 2010-09-28 (+1d) | 2010-09-30 → 2010-10-01 (+1d) |  | 32d → 31d |  | constraint start no earlier than 2010-09-27 → start no earlier than 2010-09-28 |
| 254 | Instalar y Configurar Web Server | 2010-10-04 → 2010-09-24 (-10d) | 2010-10-06 → 2010-09-28 (-8d) |  | 8d → 14d |  | constraint start no earlier than 2010-10-04 → start no earlier than 2010-09-24 |
| 258 | Configuracion Total del Entorno |  |  |  |  | Instalar y Configurar Load Balancer, 252, 253, 254 → 252, 253, 254, 255, 257 |  |
| 263 | **Web Server (Consultas Externas del Cliente)** | 2010-07-14 → 2010-07-16 (+2d) |  | 22d → 20d |  |  |  |
| 267 | Test Web Server | 2010-07-14 → 2010-07-16 (+2d) | 2010-07-15 → 2010-07-19 (+4d) |  | 87d → 85d |  | constraint start no earlier than 2010-07-14 → start no earlier than 2010-07-16 |

## Version 5 (saved 2010-09-18, file Casos Uso v5 Final.mpp)

Note of the change: cambio un par de tareas q estaba como subtareas de IT

Last finish stays 2010-11-15.

Changed:

| ID | Task | Finish | Duration | Total float | Predecessors |
| --- | --- | --- | --- | --- | --- |
| 239 | **Tareas IT Sobre Nuestra Empresa** | 2010-11-15 → 2010-06-08 (-160d) | 138d → 24d | 0d → 76d |  |
| 251 | **Configuracion del Ambiente de Produccion** | 2010-10-15 → 2010-10-29 (+14d) | 25d → 35d | 6d → 11d |  |
| 260 | Puesta en Marcha |  |  |  | 251, 235 → 235 |
| 274 | Mantenimiento de la Infra | 2010-08-20 → 2010-08-16 (-4d) |  | 61d → 65d |  |
